# AP Automation Phase 1

How a schedule from MS Project changed from version to version. A marks actual dates.

## Version 1 (saved 2020-04-15, file APA-ProjectPlan-ForthDraft.mpp)

Note of the change: Merge branch 'main' of https://github.com/tsfszd/docs

| ID | WBS | Task | Duration | Start | Finish | Predecessors | Complete | Total float |
| --- | --- | --- | --- | --- | --- | --- | --- | --- |
| 1 | 1 | **Analysis/Software Requirements** | 5d | 2020-01-15 | 2020-01-21 |  |  | 75.5d |
| 2 |  | Document Review | 16h | 2020-01-15 | 2020-01-16 |  |  | 98.05d |
| 3 |  | Understanding of Existing App & Prototype App | 16h | 2020-01-17 | 2020-01-20 | 2 |  | 98.05d |
| 4 |  | Infrastructure Requirement Understanding | 8h | 2020-01-21 | 2020-01-21 | 3 |  | 98.05d |
| 5 | 2 | **Design** | 16d | 2020-01-22 A | 2020-02-13 |  | 52% | 65.5d |
| 6 |  | Document Review | 16h | 2020-01-22 | 2020-01-23 | 4 |  | 98.05d |
| 7 |  | Review preliminary software specifications | 16h | 2020-01-24 | 2020-01-27 | 6 |  | 98.05d |
| 8 |  | DB Design Review | 16h | 2020-01-28 | 2020-01-29 | 4, 7 |  | 98.05d |
| 9 |  | Architecture Design Preliminary | 16h | 2020-01-30 A | 2020-01-31 A | 8 | 100% |  |
| 10 |  | R&D on Technologies need to be used in project | 16h | 2020-01-30 A | 2020-01-31 | 9SS | 50% | 73.5d |
| 11 |  | Code Structure Setup | 16h | 2020-02-03 A | 2020-02-04 A | 10 | 100% |  |
| 12 |  | UI Components Structure Setup | 24h | 2020-02-03 A | 2020-02-06 A | 10 | 100% |  |
| 13 |  | Design complete | 16h | 2020-02-07 | 2020-02-10 | 12 |  | 2.4d |
| 14 |  | ProjectPlan Creation | 24h | 2020-02-11 A | 2020-02-13 | 13 | 80% | 65.5d |
| 15 | 3 | **Development Sprints** | 71.5d | 2020-02-06 A | 2020-05-18 |  | 72% | 0d |
| 16 | 3.1 | **Detailed Design Implementation** | 12.67d | 2020-02-06 A | 2020-02-24 A |  | 100% |  |
| 17 |  | Projects Structure Creation & ORM Model Creation | 16h | 2020-02-06 A | 2020-02-07 A | 11 | 100% |  |
| 18 |  | DataAccessLayer Implementation | 24h | 2020-02-10 A | 2020-02-12 A | 17 | 100% |  |
| 19 |  | BusinessLogicLayer and Service Structure Implementation | 24h | 2020-02-13 A | 2020-02-17 A | 18 | 100% |  |
| 20 |  | Unit Test Structure Creation | 16h | 2020-02-18 A | 2020-02-19 A | 19 | 100% |  |
| 21 |  | Infrastructure & Integration Services Creation (like Message Queue) | 53.36h | 2020-02-14 A | 2020-02-24 A | 14 | 100% |  |
| 22 | 3.2 | **Code Copy from Existing Apps** | 11d | 2020-02-07 A | 2020-02-21 A | 10 | 100% |  |
| 23 |  | UI Structure Creation from Nexelus App | 24h | 2020-02-07 A | 2020-02-11 A | 12 | 100% |  |
| 24 |  | Copying the usable code for UI & Logic from Demo App of APAutomation | 48h | 2020-02-12 A | 2020-02-19 A | 23 | 100% |  |
| 25 |  | Release 0 - Demo | 16h | 2020-02-20 A | 2020-02-21 A | 24 | 100% |  |
| 26 | 3.3 | **Company Registration** | 6d | 2020-02-24 A | 2020-03-02 A | 22 | 100% |  |
| 27 |  | Company Setup | 24h | 2020-02-24 A | 2020-02-26 A |  | 100% |  |
| 28 |  | Users, Roles and Groups | 40h | 2020-02-24 A | 2020-03-02 A | 21 | 100% |  |
| 29 |  | Login Screen | 24h | 2020-02-27 A | 2020-03-02 A | 27SS | 100% |  |
| 30 | 3.4 | **Release 0 & Testing** | 17d | 2020-03-03 A | 2020-03-26 A | 26 | 100% |  |
| 31 |  | Deployment on on-prem env for Release 1 and Demo | 96h | 2020-03-03 A | 2020-03-18 A |  | 100% |  |
| 32 |  | Test Cycle 1 | 40h | 2020-03-19 A | 2020-03-26 A | 31 | 100% |  |
| 33 |  | Debug Cycle 1 | 40h | 2020-03-19 A | 2020-03-26 A | 32SS | 100% |  |
| 34 | 3.5 | **Core Business Functions** | 39.5d | 2020-03-19 A | 2020-05-14 |  | 49% | 0d |
| 35 |  | Document Listing UI Creation | 80h | 2020-03-19 A | 2020-04-02 A | 31 | 100% |  |
| 36 |  | ERP Integration | 40h | 2020-04-01 A | 2020-04-07 A | 35 | 100% |  |
| 37 |  | Textract Integration | 40h | 2020-03-27 A | 2020-04-02 A | 30 | 100% |  |
| 38 |  | Multenancy at backend | 24h | 2020-04-03 A | 2020-04-07 A | 37 | 100% |  |
| 39 |  | Manage Invoice Models | 40h | 2020-04-03 A | 2020-04-09 | 35 | 90% | 2.5d |
| 40 |  | Model Scanner Process | 48h | 2020-04-08 | 2020-04-15 | 38 |  | 8.75d |
| 41 |  | Manage Invoice | 32h | 2020-04-10 | 2020-04-15 | 39 |  | 2.5d |
| 42 |  | View Document | 32h | 2020-04-16 | 2020-04-21 | 40 |  | 9.75d |
| 43 |  | Invoice Creation | 32h | 2020-04-16 | 2020-04-21 | 41 |  | 2.5d |
| 44 |  | Invoice Approval, Review Workflow | 24h | 2020-04-22 | 2020-04-24 | 43 |  | 2.5d |
| 45 |  | Invoice Mapping - Model Creation | 60h | 2020-04-27 A | 2020-05-06 | 44 | 60% | 0d |
| 46 |  | Invoice Posting | 24h | 2020-04-27 | 2020-04-29 | 36, 44 |  | 8d |
| 47 |  | Testing | 32h | 2020-05-06 | 2020-05-12 | 45 |  | 0d |
| 48 |  | Bug Fixing | 16h | 2020-05-12 | 2020-05-14 | 47 |  | 0d |
| 49 |  | Release 1 & Testing | 16h | 2020-05-14 | 2020-05-18 | 34 |  | 0d |

## Version 2 (saved 2020-06-02, file APA-ProjectPlan-6thDraft.mpp)

Note of the change: Merge branch 'main' of https://github.com/tsfszd/docs

Last finish 2020-05-18 → 2020-07-21 (+64d). Complete tasks 21 → 30.

Added:

| ID | Task | Duration | Start | Finish | Predecessors | Resources |
| --- | --- | --- | --- | --- | --- | --- |
| 48 | **Development for Beta Release 1** | 37d | 2020-06-01 | 2020-07-21 | 47 |  |
| 49 | PDF View and Multipage Model Setup UI | 56h | 2020-06-01 | 2020-06-09 | 47 | Zeeshan Akhtar |
| 50 | Enhancement in Model Scanner for Multipage | 56h | 2020-06-01 | 2020-06-09 | 47 | Faisal Ahmed Farooqui |
| 51 | Build For QA with Multipage Support | 16h | 2020-06-10 | 2020-06-11 | 50 | Faisal Ahmed Farooqui |
| 52 | QA for multipage implementation | 16h | 2020-06-12 | 2020-06-15 | 51 | Tao Lin |
| 53 | User Management Screen for Root Account | 56h | 2020-06-10 | 2020-06-18 | 49 | Zeeshan Akhtar |
| 54 | Login with Multitenancy support | 48h | 2020-06-12 | 2020-06-19 | 51 | Faisal Ahmed Farooqui |
| 55 | Build For QA with Login Functionality and multitenancy support | 16h | 2020-06-22 | 2020-06-23 | 54 | Faisal Ahmed Farooqui |
| 56 | QA for Login with Multitenancy Functionality | 16h | 2020-06-24 | 2020-06-25 | 55 | Tao Lin |
| 57 | UI for Vendors, Currencies Mapping, Payment Terms Mappings | 16h | 2020-06-19 | 2020-06-22 | 53 | Zeeshan Akhtar |
| 60 | Build For QA | 16h | 2020-07-01 | 2020-07-02 | 59 | Faisal Ahmed Farooqui |
| 61 | QA for all product features | 32h | 2020-07-03 | 2020-07-08 | 60 | Tao Lin |
| 62 | Bug Fixing | 32h | 2020-06-29 | 2020-07-02 | 58 | Zeeshan Akhtar |
| 63 | Beta Release for single client | 24h | 2020-07-03 | 2020-07-07 | 60, 62FF | Faisal Ahmed Farooqui |
| 64 | Login with SSO (Single Sign On) | 80h | 2020-07-08 | 2020-07-21 | 63 | Faisal Ahmed Farooqui |

Changed:

| ID | Task | Start | Finish | Duration | Complete | Total float | Predecessors | Other |
| --- | --- | --- | --- | --- | --- | --- | --- | --- |
| 15 | **Development Sprints** |  | 2020-05-18 → 2020-07-21 (+64d) | 71.5d → 118d | 72% → 66% |  |  |  |
| 34 | **Core Business Functions** |  | 2020-05-14 A |  | 49% → 100% | 0d → none |  |  |
| 39 | Manage Invoice Models |  | 2020-04-09 A |  | 90% → 100% | 2.5d → none |  |  |
| 40 | Model Scanner Process | 2020-04-08 A | 2020-04-15 A |  | 0% → 100% | 8.75d → none |  |  |
| 41 | Manage Invoice | 2020-04-10 A | 2020-04-15 A |  | 0% → 100% | 2.5d → none |  |  |
| 42 | View Document | 2020-04-16 A | 2020-04-21 A |  | 0% → 100% | 9.75d → none |  |  |
| 43 | Invoice Creation | 2020-04-16 A | 2020-04-21 A |  | 0% → 100% | 2.5d → none |  |  |
| 44 | Invoice Mapping - Model Creation |  | 2020-05-06 A |  | 60% → 100% | 0d → none | 58 → none |  |
| 45 | Testing | 2020-05-06 A | 2020-05-12 A |  | 0% → 100% | 0d → none |  |  |
| 46 | Bug Fixing | 2020-05-12 A | 2020-05-14 A |  | 0% → 100% | 0d → none |  |  |
| 47 | Demo Release 1 & Testing | 2020-05-14 A | 2020-05-18 → 2020-05-31 A (+13d) | 16h → 92h | 0% → 100% | 0d → none |  | was named Release 1 & Testing; constraint none → finish no earlier than 2020-05-31 |
| 58 | Invoice Approval, Review Workflow | 2020-04-22 → 2020-06-23 (+62d) | 2020-04-24 → 2020-06-26 (+63d) | 24h → 32h |  | 2.5d → 3d | 43 → 57 |  |
| 59 | Invoice Posting | 2020-04-27 → 2020-06-24 (+58d) | 2020-04-29 → 2020-06-30 (+62d) | 24h → 40h |  | 8d → 0d | 36, 58 → 55 | resources Tao Lin → Faisal Ahmed Farooqui |

## Version 3 (saved 2020-06-26, file APA-ProjectPlan-7thDraft.mpp)

Note of the change: Merge branch 'main' of https://github.com/tsfszd/docs

Last finish 2020-07-21 → 2020-08-25 (+35d). Complete tasks 30 → 34.

Added:

| ID | Task | Duration | Start | Finish | Predecessors | Resources |
| --- | --- | --- | --- | --- | --- | --- |
| 59 | Dashboard | 24h | 2020-07-03 | 2020-07-08 | 57 | Zeeshan Akhtar |
| 60 | IO Data Synchronization | 24h | 2020-07-03 | 2020-07-08 | 58 | Tao Lin; Faisal Ahmed Farooqui |
| 65 | **Development for Beta Release 2 (Production ready)** | 23.5d | 2020-07-17 | 2020-08-20 | 48 |  |
| 66 | Invoice Notification Email Alert | 16h | 2020-07-17 | 2020-07-21 | 48 | Faisal Ahmed Farooqui |
| 68 | Logging & Error Alerts through email | 16h | 2020-07-21 | 2020-07-23 | 66 | Faisal Ahmed Farooqui |
| 69 | SSO | 48h | 2020-07-23 | 2020-07-31 | 68 | Faisal Ahmed Farooqui |
| 70 | Model Test Functionality | 48h | 2020-07-21 | 2020-07-29 | 67 | Zeeshan Akhtar |
| 71 | Build Release for QA | 16h | 2020-07-31 | 2020-08-04 | 70, 69 | Faisal Ahmed Farooqui |
| 72 | QA | 16h | 2020-08-04 | 2020-08-06 | 71 | Tao Lin |
| 74 | Build Release for QA | 8h | 2020-08-10 | 2020-08-11 | 73 | Faisal Ahmed Farooqui; Zeeshan Akhtar |
| 75 | QA | 16h | 2020-08-11 | 2020-08-13 | 74 | Tao Lin |
| 76 | Bug Fixing only important issues | 24h | 2020-08-13 | 2020-08-18 | 75 | Faisal Ahmed Farooqui; Zeeshan Akhtar |
| 77 | Build for UAT & Beta 2 | 16h | 2020-08-18 | 2020-08-20 | 76 | Faisal Ahmed Farooqui; Zeeshan Akhtar |
| 78 | Deployment & Integration for Production | 24h | 2020-08-20 | 2020-08-25 | 65 | Faisal Ahmed Farooqui |

Changed:

| ID | Task | Start | Finish | Duration | Complete | Total float | Predecessors | Other |
| --- | --- | --- | --- | --- | --- | --- | --- | --- |
| 15 | **Development Sprints** |  | 2020-07-21 → 2020-08-25 (+35d) | 118d → 142.3d | 66% → 70% |  |  |  |
| 47 | Demo Release 1 & Testing |  | 2020-05-31 A → 2020-05-29 A (-2d) |  |  |  |  |  |
| 48 | **Development for Beta Release 1** | 2020-06-01 A | 2020-07-21 → 2020-07-17 (-4d) | 37d → 34.8d | 0% → 44% |  |  |  |
| 49 | PDF View and Multipage Model Setup UI | 2020-06-01 A | 2020-06-09 A |  | 0% → 100% | 4d → none |  |  |
| 50 | Enhancement in Model Scanner for Multipage | 2020-06-01 A | 2020-06-09 A |  | 0% → 100% | 0d → none |  |  |
| 51 | Build For QA with Multipage Support | 2020-06-10 A | 2020-06-11 A |  | 0% → 100% | 0d → none |  |  |
| 52 | QA for multipage implementation | 2020-06-12 A | 2020-06-15 A |  | 0% → 100% | 26d → none |  |  |
| 53 | User Management Screen for Root Account | 2020-06-10 A | 2020-06-18 → 2020-06-29 (+11d) |  | 0% → 60% | 3d → 0d |  |  |
| 54 | Login with Multitenancy support | 2020-06-12 A | 2020-06-19 → 2020-06-24 (+5d) |  | 0% → 60% | 0d → 0.4d |  |  |
| 55 | Build For QA with Login Functionality and multitenancy support | 2020-06-22 → 2020-06-24 (+2d) | 2020-06-23 → 2020-06-26 (+3d) |  |  | 0d → 0.4d |  |  |
| 56 | QA for Login with Multitenancy Functionality | 2020-06-24 → 2020-06-26 (+2d) | 2020-06-25 → 2020-06-30 (+5d) |  |  | 18d → 0.4d |  |  |
| 57 | Invoice Approval, Review Workflow | 2020-06-23 → 2020-06-29 (+6d) | 2020-06-26 → 2020-07-03 (+7d) |  |  | 3d → 0d | 67 → 55, 53 |  |
| 58 | Invoice Posting | 2020-06-24 → 2020-06-30 (+6d) | 2020-06-30 → 2020-07-03 (+3d) | 40h → 24h |  | 0d → 0.4d | 55 → 56 | resources Faisal Ahmed Farooqui → Tao Lin; Faisal Ahmed Farooqui |
| 61 | Build For QA | 2020-07-01 → 2020-07-08 (+7d) | 2020-07-02 → 2020-07-10 (+8d) |  |  |  | 58 → 59, 60 | resources Faisal Ahmed Farooqui → Faisal Ahmed Farooqui; Zeeshan Akhtar |
| 62 | QA for all product features | 2020-07-03 → 2020-07-10 (+7d) | 2020-07-08 → 2020-07-15 (+7d) | 32h → 24h |  | 9d → 2d |  |  |
| 63 | Bug Fixing | 2020-06-29 → 2020-07-10 (+11d) | 2020-07-02 → 2020-07-15 (+13d) | 32h → 24h |  | 3d → 0d | 57 → 61 | resources Zeeshan Akhtar → Zeeshan Akhtar; Faisal Ahmed Farooqui |
| 64 | Beta Release for single client | 2020-07-03 → 2020-07-15 (+12d) | 2020-07-07 → 2020-07-17 (+10d) | 24h → 16h |  |  | 61, 63FF → 63, 61 |  |
| 67 | UI for Vendors, Currencies Mapping, Payment Terms Mappings | 2020-06-19 → 2020-07-17 (+28d) | 2020-06-22 → 2020-07-21 (+29d) |  |  | 3d → 2d | 53 → 48 |  |
| 73 | Bug Fixing | 2020-07-08 → 2020-08-06 (+29d) | 2020-07-21 → 2020-08-10 (+20d) | 80h → 12h |  |  | 64 → 72 | was named Login with SSO (Single Sign On); resources Faisal Ahmed Farooqui → Faisal Ahmed Farooqui; Zeeshan Akhtar |

## Version 4 (saved 2020-07-09, file APA-ProjectPlan-8thDraft.mpp)

Note of the change: Merge branch 'main' of https://github.com/tsfszd/docs

Last finish 2020-08-25 → 2020-09-03 (+9d).

Changed:

| ID | Task | Start | Finish | Duration | Complete | Total float | Predecessors | Other |
| --- | --- | --- | --- | --- | --- | --- | --- | --- |
| 15 | **Development Sprints** |  | 2020-08-25 → 2020-09-03 (+9d) | 142.3d → 149.65d | 70% → 73% |  |  |  |
| 48 | **Development for Beta Release 1** |  | 2020-07-17 → 2020-07-29 (+12d) | 34.8d → 42.15d | 44% → 56% |  |  |  |
| 53 | User Management Screen for Root Account |  | 2020-06-29 → 2020-07-08 (+9d) |  | 60% → 95% |  |  |  |
| 54 | Login & Authorization with Multitenancy support |  |  |  | 60% → 90% | 0.4d → 7.95d |  | was named Login with Multitenancy support |
| 57 | Invoice Approval, Review Workflow | 2020-06-29 A | 2020-07-03 → 2020-07-10 (+7d) |  | 0% → 40% | 0d → 0.6d |  |  |
| 58 | Invoice Posting | 2020-06-30 A | 2020-07-03 → 2020-07-15 (+12d) |  | 0% → 25% | 0.4d → 0d | 56 → 57 |  |
| 59 | Dashboard | 2020-07-03 → 2020-07-10 (+7d) | 2020-07-08 → 2020-07-15 (+7d) |  |  | 0d → 2.4d |  |  |
| 60 | IO Data Synchronization | 2020-07-03 → 2020-07-15 (+12d) | 2020-07-08 → 2020-07-20 (+12d) |  |  | 0.4d → 0d |  |  |
| 61 | Build For QA | 2020-07-08 → 2020-07-20 (+12d) | 2020-07-10 → 2020-07-22 (+12d) |  |  |  |  |  |
| 62 | QA for all product features | 2020-07-10 → 2020-07-22 (+12d) | 2020-07-15 → 2020-07-27 (+12d) |  |  |  |  |  |
| 63 | Bug Fixing | 2020-07-10 → 2020-07-22 (+12d) | 2020-07-15 → 2020-07-27 (+12d) |  |  |  |  |  |
| 64 | Beta Release for single client | 2020-07-15 → 2020-07-27 (+12d) | 2020-07-17 → 2020-07-29 (+12d) |  |  |  |  |  |
| 65 | **Development for Beta Release 2 (Production ready)** | 2020-07-17 → 2020-07-29 (+12d) | 2020-08-20 → 2020-08-31 (+11d) |  |  |  |  |  |
| 66 | Invoice Notification Email Alert | 2020-07-17 → 2020-07-29 (+12d) | 2020-07-21 → 2020-07-31 (+10d) |  |  |  |  |  |
| 67 | UI for Vendors, Currencies Mapping, Payment Terms Mappings | 2020-07-17 → 2020-07-29 (+12d) | 2020-07-21 → 2020-07-31 (+10d) |  |  |  |  |  |
| 68 | Logging & Error Alerts through email | 2020-07-21 → 2020-07-31 (+10d) | 2020-07-23 → 2020-08-04 (+12d) |  |  |  |  |  |
| 69 | SSO | 2020-07-23 → 2020-08-04 (+12d) | 2020-07-31 → 2020-08-12 (+12d) |  |  |  |  |  |
| 70 | Model Test Functionality | 2020-07-21 → 2020-07-31 (+10d) | 2020-07-29 → 2020-08-10 (+12d) |  |  |  |  |  |
| 71 | Build Release for QA | 2020-07-31 → 2020-08-12 (+12d) | 2020-08-04 → 2020-08-14 (+10d) |  |  |  |  |  |
| 72 | QA | 2020-08-04 → 2020-08-14 (+10d) | 2020-08-06 → 2020-08-18 (+12d) |  |  |  |  |  |
| 73 | Bug Fixing | 2020-08-06 → 2020-08-18 (+12d) | 2020-08-10 → 2020-08-19 (+9d) |  |  |  |  |  |
| 74 | Build Release for QA | 2020-08-10 → 2020-08-19 (+9d) | 2020-08-11 → 2020-08-20 (+9d) |  |  |  |  |  |
| 75 | QA | 2020-08-11 → 2020-08-20 (+9d) | 2020-08-13 → 2020-08-24 (+11d) |  |  |  |  |  |
| 76 | Bug Fixing only important issues | 2020-08-13 → 2020-08-24 (+11d) | 2020-08-18 → 2020-08-27 (+9d) |  |  |  |  |  |
| 77 | Build for UAT & Beta 2 | 2020-08-18 → 2020-08-27 (+9d) | 2020-08-20 → 2020-08-31 (+11d) |  |  |  |  |  |
| 78 | Deployment & Integration for Production | 2020-08-20 → 2020-08-31 (+11d) | 2020-08-25 → 2020-09-03 (+9d) |  |  |  |  |  |
