# AP Automation Phase 1

How a schedule from MS Project changed from version to version. A marks actual dates.

## Version 1 (saved 2020-02-11, file APA-ProjectPlan-FirstDraft.mpp)

Note of the change: Merge branch 'main' of https://github.com/tsfszd/docs

| ID | WBS | Task | Duration | Start | Finish | Predecessors | Total float |
| --- | --- | --- | --- | --- | --- | --- | --- |
| 1 | 1 | **Analysis/Software Requirements** | 5d | 2020-01-15 | 2020-01-21 |  | 0d |
| 2 |  | Document Review | 2d | 2020-01-15 | 2020-01-16 |  | 0d |
| 3 |  | Understanding of Existing App & Prototype App | 2d | 2020-01-17 | 2020-01-20 | 2 | 0d |
| 4 |  | Infrastructure Requirement Understanding | 1d | 2020-01-21 | 2020-01-21 | 3 | 0d |
| 5 | 2 | **Design** | 14d | 2020-01-22 | 2020-02-11 |  | 0d |
| 6 |  | Document Review | 2d | 2020-01-22 | 2020-01-23 | 4 | 0d |
| 7 |  | Review preliminary software specifications | 2d | 2020-01-24 | 2020-01-27 | 6 | 0d |
| 8 |  | DB Design Review | 2d | 2020-01-28 | 2020-01-29 | 4, 7 | 0d |
| 9 |  | Architecture Design Preliminary | 2d | 2020-01-30 | 2020-01-31 | 8 | 0d |
| 10 |  | R&D on Technologies need to be used in project | 2d | 2020-02-03 | 2020-02-04 | 9 | 0d |
| 11 |  | Code Structure Setup | 2d | 2020-02-06 | 2020-02-07 | 10 | 105d |
| 12 |  | UI Components Structure Setup | 3d | 2020-02-06 | 2020-02-10 | 10 | 3d |
| 13 |  | Design complete | 1d | 2020-02-11 | 2020-02-11 | 12 | 69d |
| 14 | 3 | **Development Sprints** | 76d | 2020-02-06 | 2020-05-22 |  | 0d |
| 15 | 3.1 | **Detailed Design Implementation** | 14d | 2020-02-06 | 2020-02-25 | 10 | 0d |
| 16 |  | Projects Structure Creation & ORM Model Creation | 2d | 2020-02-06 | 2020-02-07 |  | 0d |
| 17 |  | DataAccessLayer Implementation | 3d | 2020-02-10 | 2020-02-12 | 16 | 0d |
| 18 |  | BusinessLogicLayer and Service Structure Implementation | 3d | 2020-02-13 | 2020-02-17 | 17 | 0d |
| 19 |  | Unit Test Structure Creation | 2d | 2020-02-18 | 2020-02-19 | 18 | 0d |
| 20 |  | Infrastructure & Integration Services Creation (like Message Queue) | 4d | 2020-02-20 | 2020-02-25 | 19 | 0d |
| 21 | 3.2 | **Code Copy from Existing Apps** | 9d | 2020-02-11 | 2020-02-21 | 10 | 2d |
| 22 |  | UI Structure Creation from Nexelus App | 3d | 2020-02-11 | 2020-02-13 | 12 | 2d |
| 23 |  | Copying the usable code for UI & Logic from Demo App of APAutomation | 5d | 2020-02-14 | 2020-02-20 | 22 | 2d |
| 24 |  | Release 0 - Demo | 1d | 2020-02-21 | 2020-02-21 | 23 | 2d |
| 25 | 3.3 | **Company Registration** | 10d | 2020-02-26 | 2020-03-10 | 15 | 0d |
| 26 |  | Company Sertup | 3d | 2020-02-26 | 2020-02-28 |  | 0d |
| 27 |  | Users, Roles and Groups | 4d | 2020-03-02 | 2020-03-05 | 26 | 0d |
| 28 |  | Login Screen | 3d | 2020-03-06 | 2020-03-10 | 27 | 0d |
| 29 | 3.4 | **Release 0 & Testing** | 12d | 2020-03-11 | 2020-03-27 | 25 | 0d |
| 30 |  | Deployment on on-prem env for Release 1 and Demo | 2d | 2020-03-11 | 2020-03-12 |  | 0d |
| 31 |  | Test Cycle 1 | 5d | 2020-03-13 | 2020-03-19 | 30 | 0d |
| 32 |  | Debug Cycle 1 | 5d | 2020-03-20 | 2020-03-27 | 31 | 0d |
| 33 | 3.5 | **Document Status Management** | 13d | 2020-03-30 | 2020-04-15 | 29 | 0d |
| 34 |  | Document Listing UI Creation | 3d | 2020-03-30 | 2020-04-01 |  | 0d |
| 35 |  | Invoice Creation | 5d | 2020-04-02 | 2020-04-08 | 34 | 0d |
| 36 |  | Invoice Approval, Review Workflow | 3d | 2020-04-09 | 2020-04-13 | 35 | 0d |
| 37 |  | Unit Test Creation for Document Listing Logic | 2d | 2020-04-14 | 2020-04-15 | 36 | 0d |
| 38 | 3.6 | **Release 1 & Testing** | 12d | 2020-04-16 | 2020-05-01 | 37 | 0d |
| 39 |  | Deployment on on-prem env for Release 1 and Demo | 2d | 2020-04-16 | 2020-04-17 |  | 0d |
| 40 |  | Test Cycle 1 | 5d | 2020-04-20 | 2020-04-24 | 39 | 0d |
| 41 |  | Debug Cycle 1 | 5d | 2020-04-27 | 2020-05-01 | 40 | 0d |
| 42 | 3.7 | **Textract Service Integration** | 6d | 2020-02-24 | 2020-03-02 | 21 | 2d |
| 43 |  | Background Agent Service Creation | 3d | 2020-02-24 | 2020-02-26 |  | 2d |
| 44 |  | Integration with Message Queue | 3d | 2020-02-27 | 2020-03-02 | 43 | 2d |
| 45 | 3.8 | **Release 2 & Testing** | 11d | 2020-03-03 | 2020-03-17 | 44 | 2d |
| 46 |  | Deployment on cloud for Release 2 | 1d | 2020-03-03 | 2020-03-03 |  | 2d |
| 47 |  | Test Cycle 2 | 5d | 2020-03-04 | 2020-03-10 | 46 | 2d |
| 48 |  | Debug Cycle 2 | 5d | 2020-03-11 | 2020-03-17 | 47 | 2d |
| 49 | 3.9 | **Model Creation Functionality** | 14d | 2020-03-18 | 2020-04-07 | 45 | 2d |
| 50 |  | Backend logic creation for Document Field Mapping Functionality | 8d | 2020-03-18 | 2020-03-30 |  | 2d |
| 51 |  | UI Creation of Document Field Mapping Functionality | 4d | 2020-03-31 | 2020-04-03 | 50 | 2d |
| 52 |  | Unit Test Creation for Model Creation Functionality | 2d | 2020-04-06 | 2020-04-07 | 51 | 2d |
| 53 | 3.10 | **Release 3 & Testing** | 5d | 2020-04-08 | 2020-04-14 | 52 | 2d |
| 54 |  | Deployment on cloud for Release 3 | 2d | 2020-04-08 | 2020-04-09 |  | 2d |
| 55 |  | Test Cycle 3 | 3d | 2020-04-10 | 2020-04-14 | 54 | 2d |
| 56 |  | Debug Cycle 3 | 3d | 2020-04-10 | 2020-04-14 | 54 | 2d |
| 57 | 3.11 | **Model Search Functionality** | 9d | 2020-05-04 | 2020-05-14 | 38, 29 | 0d |
| 58 |  | Creation of Model Search Functionality | 4d | 2020-05-04 | 2020-05-07 | 38, 29 | 0d |
| 59 |  | Tolerance Optimization | 4d | 2020-05-08 | 2020-05-13 | 58 | 0d |
| 60 |  | Unit Test Creation for Model Search Functionality | 1d | 2020-05-14 | 2020-05-14 | 59 | 0d |
| 61 | 3.12 | **Release 4 & Testing** | 5d | 2020-05-15 | 2020-05-21 | 60 | 0d |
| 62 |  | Deployment on cloud for Release 4 | 2d | 2020-05-15 | 2020-05-18 |  | 0d |
| 63 |  | Test Cycle 4 | 3d | 2020-05-19 | 2020-05-21 | 62 | 0d |
| 64 |  | Debug Cycle 4 | 3d | 2020-05-19 | 2020-05-21 | 62 | 0d |
| 65 | 3.13 | **ERP Integration** | 45d | 2020-02-26 | 2020-04-29 | 15 | 41d |
| 66 |  | Creation of Generalized Adapter Interface for Data Push and Pull | 1d | 2020-02-26 | 2020-02-26 |  | 41d |
| 67 |  | Integration with Message Queue | 2d | 2020-02-27 | 2020-02-28 | 66 | 41d |
| 68 |  | Creation of Data Pull functionality for Nexelus Adapter | 2d | 2020-03-02 | 2020-03-03 | 67 | 41d |
| 69 |  | Creation of Data Push functionality for Nexelus Adapter | 2d | 2020-03-04 | 2020-03-05 | 68 | 41d |
| 70 |  | Vendor and Other Primary Data Fetching | 3d | 2020-03-06 | 2020-03-10 | 69 | 41d |

| ID | WBS | Task | Duration | Start | Finish | Predecessors | Total float |
| --- | --- | --- | --- | --- | --- | --- | --- |
| 71 |  | Data Cache Implementation | 2d | 2020-03-11 | 2020-03-12 | 70 | 79d |
| 72 |  | Unit Test Creation for Adapter Interface | 2d | 2020-03-13 | 2020-03-16 | 71 | 79d |
| 73 |  | Invoice Creation and Pushing into ERP System | 2d | 2020-04-16 | 2020-04-17 | 70, 33 | 16d |
| 74 | 3.13.9 | **Release 5 & Testing** | 8d | 2020-04-20 | 2020-04-29 | 73 | 16d |
| 75 |  | Deployment on cloud for Release 5 | 2d | 2020-04-20 | 2020-04-21 |  | 22d |
| 76 |  | Test Cycle 5 | 5d | 2020-04-20 | 2020-04-24 |  | 16d |
| 77 |  | Debug Cycle 5 | 3d | 2020-04-27 | 2020-04-29 | 76 | 16d |
| 78 | 3.14 | **Security, Login and Multi Tenant Functionality implementation** | 10d | 2020-04-15 | 2020-04-28 | 53 | 2d |
| 79 |  | Creation of Security Token Service | 2d | 2020-04-15 | 2020-04-16 |  | 2d |
| 80 |  | Login Creation | 3d | 2020-04-17 | 2020-04-21 | 79 | 2d |
| 81 |  | Automatic DB Creation, ERP System Integration, Primary Data Fetching | 5d | 2020-04-22 | 2020-04-28 | 80 | 2d |
| 82 | 3.15 | **Release 6 & Testing** | 15d | 2020-04-29 | 2020-05-19 | 78 | 2d |
| 83 |  | Deployment on cloud for Release 6 | 10d | 2020-04-29 | 2020-05-12 | 78 | 2d |
| 84 |  | Test Cycle 6 | 5d | 2020-05-13 | 2020-05-19 | 83 | 2d |
| 85 |  | Debug Cycle 6 | 5d | 2020-05-13 | 2020-05-19 | 83 | 2d |
| 86 |  | Development complete | 1d | 2020-05-22 | 2020-05-22 | 82, 74, 61 | 0d |
| 87 |  | Integration Testing | 5d | 2020-05-25 | 2020-05-29 | 86 | 24d |
| 88 | 5 | **Testing for Beta Release to Clients** | 2d | 2020-05-22 | 2020-05-25 | 82, 74, 61 | 23d |
| 89 |  | Fine tuning and small fixes | 2d | 2020-05-22 | 2020-05-25 |  | 23d |
| 90 |  | Integration testing complete | 0d | 2020-05-25 | 2020-05-25 | 89 | 23d |
| 91 | 6 | **Deployment** | 2d | 2020-06-01 | 2020-06-02 |  | 24d |
| 92 |  | Preparation for RTM environment for beta | 2d | 2020-06-01 | 2020-06-02 | 87 | 24d |
| 93 | 7 | **Pilot** | 122d | 2020-01-15 | 2020-07-06 |  | 0d |
| 94 |  | Identify test group | 1d | 2020-01-15 | 2020-01-15 |  | 113d |
| 95 |  | Develop software delivery mechanism | 1d | 2020-01-16 | 2020-01-16 | 94 | 113d |
| 96 |  | Install/deploy software | 1d | 2020-06-26 | 2020-06-26 | 90, 95, 123, 113 | 0d |
| 97 |  | Obtain user feedback | 1w | 2020-06-29 | 2020-07-03 | 96 | 0d |
| 98 |  | Evaluate testing information | 1d | 2020-07-06 | 2020-07-06 | 97 | 0d |
| 99 |  | Pilot complete | 0d | 2020-07-06 | 2020-07-06 | 98 | 0d |
| 100 | 8 | **Post Implementation Review** | 3d | 2020-01-15 | 2020-01-17 |  | 119d |
| 101 |  | Document lessons learned | 1d | 2020-01-15 | 2020-01-15 |  | 119d |
| 102 |  | Distribute to team members | 1d | 2020-01-16 | 2020-01-16 | 101 | 119d |
| 103 |  | Create software maintenance team | 1d | 2020-01-17 | 2020-01-17 | 102 | 119d |
| 104 |  | Post implementation review complete | 0d | 2020-01-17 | 2020-01-17 | 103 | 119d |
| 105 | 9 | **Training** | 96d | 2020-02-12 | 2020-06-25 |  | 0d |
| 106 |  | Develop training specifications for end users | 3d | 2020-02-12 | 2020-02-14 | 13 | 69d |
| 107 |  | Develop training specifications for helpdesk support staff | 3d | 2020-02-12 | 2020-02-14 | 13 | 69d |
| 108 |  | Identify training delivery methodology (computer based training, classroom, etc.) | 2d | 2020-02-12 | 2020-02-13 | 13 | 70d |
| 109 |  | Develop training materials | 3w | 2020-05-25 | 2020-06-12 | 106, 86, 107, 108 | 0d |
| 110 |  | Conduct training usability study | 4d | 2020-06-15 | 2020-06-18 | 109 | 0d |
| 111 |  | Finalize training materials | 3d | 2020-06-19 | 2020-06-23 | 110 | 0d |
| 112 |  | Develop training delivery mechanism | 2d | 2020-06-24 | 2020-06-25 | 111 | 0d |
| 113 |  | Training materials complete | 0d | 2020-06-25 | 2020-06-25 | 112 | 0d |
| 114 | 10 | **Documentation** | 21d | 2020-02-12 | 2020-03-11 |  | 75d |
| 115 |  | Develop Help specification | 1d | 2020-02-12 | 2020-02-12 | 13 | 75d |
| 116 |  | Develop Help system | 3w | 2020-02-13 | 2020-03-04 | 115 | 75d |
| 117 |  | Review Help documentation | 3d | 2020-03-05 | 2020-03-09 | 116 | 75d |
| 118 |  | Incorporate Help documentation feedback | 2d | 2020-03-10 | 2020-03-11 | 117 | 75d |
| 119 |  | Develop user manuals specifications | 2d | 2020-02-12 | 2020-02-13 | 13 | 75d |
| 120 |  | Develop user manuals | 3w | 2020-02-14 | 2020-03-05 | 119 | 75d |
| 121 |  | Review all user documentation | 2d | 2020-03-06 | 2020-03-09 | 120 | 75d |
| 122 |  | Incorporate user documentation feedback | 2d | 2020-03-10 | 2020-03-11 | 121 | 75d |
| 123 |  | Documentation complete | 0d | 2020-03-11 | 2020-03-11 | 122, 118 | 75d |
| 124 |  | Software development template complete | 0d | 2020-01-17 | 2020-01-17 | 104 | 116d |

## Version 2 (saved 2020-02-14, file APA-ProjectPlan-SecondDraft.mpp)

Note of the change: Reorganize Folder Structure

Last finish 2020-07-06 → 2020-05-20 (-47d).

Added:

| ID | Task | Duration | Start | Finish | Predecessors | Resources |
| --- | --- | --- | --- | --- | --- | --- |
| 14 | ProjectPlan Creation | 3d | 2020-02-11 | 2020-02-13 | 13 | Faisal Ahmed Farooqui |
| 94 | Phase 1 Complete | 0d | 2020-01-15 | 2020-01-15 |  | Faisal Ahmed Farooqui |

Removed: 93 Pilot; 94 Identify test group; 95 Develop software delivery mechanism; 96 Install/deploy software; 97 Obtain user feedback; 98 Evaluate testing information; 99 Pilot complete; 100 Post Implementation Review; 101 Document lessons learned; 102 Distribute to team members; 103 Create software maintenance team; 104 Post implementation review complete; 105 Training; 106 Develop training specifications for end users; 107 Develop training specifications for helpdesk support staff; 108 Identify training delivery methodology (computer based training, classroom, etc.); 109 Develop training materials; 110 Conduct training usability study; 111 Finalize training materials; 112 Develop training delivery mechanism; 113 Training materials complete; 114 Documentation; 115 Develop Help specification; 116 Develop Help system; 117 Review Help documentation; 118 Incorporate Help documentation feedback; 119 Develop user manuals specifications; 120 Develop user manuals; 121 Review all user documentation; 122 Incorporate user documentation feedback; 123 Documentation complete; 124 Software development template complete

Changed:

| ID | Task | Start | Finish | Duration | Total float | Predecessors | Other |
| --- | --- | --- | --- | --- | --- | --- | --- |
| 5 | **Design** |  | 2020-02-11 → 2020-02-13 (+2d) | 14d → 16d |  |  |  |
| 10 | R&D on Technologies need to be used in project | 2020-02-03 → 2020-01-30 (-4d) | 2020-02-04 → 2020-01-31 (-4d) |  |  | 9 → 9SS |  |
| 11 | Code Structure Setup | 2020-02-06 → 2020-02-03 (-3d) | 2020-02-07 → 2020-02-04 (-3d) |  | 105d → 24.8d |  | resources Faisal Ahmed Farooqui; Zeeshan Akhtar → Zeeshan Akhtar |
| 12 | UI Components Structure Setup | 2020-02-06 → 2020-02-03 (-3d) | 2020-02-10 → 2020-02-06 (-4d) |  | 3d → 0d |  |  |
| 13 | Design complete | 2020-02-11 → 2020-02-07 (-4d) | 2020-02-11 → 2020-02-10 (-1d) | 1d → 2d | 69d → 81d |  |  |
| 15 | **Development Sprints** |  | 2020-05-22 → 2020-05-01 (-21d) | 76d → 61d | 0d → 1d |  |  |
| 16 | **Detailed Design Implementation** |  | 2020-02-25 → 2020-02-24 (-1d) | 14d → 12.67d | 0d → 0.33d | 10 → none |  |
| 17 | Projects Structure Creation & ORM Model Creation |  |  |  | 0d → 24.8d | none → 11 | resources Zeeshan Akhtar; Faisal Ahmed Farooqui → Zeeshan Akhtar |
| 21 | Infrastructure & Integration Services Creation (like Message Queue) | 2020-02-20 → 2020-02-14 (-6d) | 2020-02-25 → 2020-02-24 (-1d) | 4d → 6.67d | 0d → 0.33d | 20 → 14 | resources Zeeshan Akhtar → Faisal Ahmed Farooqui [60%] |
| 22 | **Code Copy from Existing Apps** | 2020-02-11 → 2020-02-07 (-4d) |  | 9d → 11d | 2d → 0d |  | resources Hammad Khalil → none |
| 23 | UI Structure Creation from Nexelus App | 2020-02-11 → 2020-02-07 (-4d) | 2020-02-13 → 2020-02-11 (-2d) |  | 2d → 0d |  |  |
| 24 | Copying the usable code for UI & Logic from Demo App of APAutomation | 2020-02-14 → 2020-02-12 (-2d) | 2020-02-20 → 2020-02-19 (-1d) | 5d → 6d | 2d → 0d |  |  |
| 25 | Release 0 - Demo | 2020-02-21 → 2020-02-20 (-1d) |  | 1d → 2d | 2d → 0d |  |  |
| 26 | **Company Registration** | 2020-02-26 → 2020-02-24 (-2d) | 2020-03-10 → 2020-03-02 (-8d) | 10d → 6d |  | 16 → 22 |  |
| 27 | Company Setup | 2020-02-26 → 2020-02-24 (-2d) | 2020-02-28 → 2020-02-26 (-2d) |  |  |  | was named Company Sertup; resources Zeeshan Akhtar → Hammad Khalil |
| 28 | Users, Roles and Groups | 2020-03-02 → 2020-02-24 (-7d) | 2020-03-05 → 2020-03-02 (-3d) | 4d → 5d | 0d → 0.33d | 27 → 21 | resources Zeeshan Akhtar → Faisal Ahmed Farooqui [40%] |
| 29 | Login Screen | 2020-03-06 → 2020-02-27 (-8d) | 2020-03-10 → 2020-03-02 (-8d) |  |  | 28 → 27 | resources Zeeshan Akhtar → Hammad Khalil |
| 30 | **Release 0 & Testing** | 2020-03-11 → 2020-03-03 (-8d) | 2020-03-27 → 2020-03-11 (-16d) | 12d → 7d |  |  | resources Zeeshan Akhtar; Tester 1 → none |
| 31 | Deployment on on-prem env for Release 1 and Demo | 2020-03-11 → 2020-03-03 (-8d) | 2020-03-12 → 2020-03-04 (-8d) |  |  |  | resources Zeeshan Akhtar → Faisal Ahmed Farooqui [20%]; Hammad Khalil |
| 32 | Test Cycle 1 | 2020-03-13 → 2020-03-05 (-8d) | 2020-03-19 → 2020-03-11 (-8d) |  | 0d → 8.54d |  |  |
| 33 | Debug Cycle 1 | 2020-03-20 → 2020-03-05 (-15d) | 2020-03-27 → 2020-03-11 (-16d) |  | 0d → 8.54d | 32 → 32SS | resources Zeeshan Akhtar → Hammad Khalil |
| 34 | **Document Status Management** | 2020-03-30 → 2020-02-20 (-39d) | 2020-04-15 → 2020-03-18 (-28d) | 13d → 20d |  | 30 → none | resources Zeeshan Akhtar → none |
| 35 | Document Listing UI Creation | 2020-03-30 → 2020-03-05 (-25d) | 2020-04-01 → 2020-03-10 (-22d) | 3d → 4d |  | none → 31 | resources Zeeshan Akhtar → Faisal Ahmed Farooqui |
| 36 | Invoice Creation | 2020-04-02 → 2020-02-20 (-42d) | 2020-04-08 → 2020-02-27 (-41d) | 5d → 6d | 0d → 24.8d | 35 → 20 |  |
| 37 | Invoice Approval, Review Workflow | 2020-04-09 → 2020-03-11 (-29d) | 2020-04-13 → 2020-03-18 (-26d) | 3d → 6d |  | 36 → 35 | resources Zeeshan Akhtar → Faisal Ahmed Farooqui |
| 38 | Unit Test Creation for Document Listing Logic | 2020-04-14 → 2020-02-28 (-46d) | 2020-04-15 → 2020-02-28 (-47d) | 2d → 1d | 0d → 24.8d | 37 → 36 |  |
| 39 | **Release 1 & Testing** | 2020-04-16 → 2020-03-02 (-45d) | 2020-05-01 → 2020-03-10 (-52d) | 12d → 7d | 0d → 2.8d |  | resources Zeeshan Akhtar; Tester 1 → none |
| 40 | Deployment on on-prem env for Release 1 and Demo | 2020-04-16 → 2020-03-02 (-45d) | 2020-04-17 → 2020-03-03 (-45d) |  | 0d → 24.8d |  | resources Zeeshan Akhtar → Zeeshan Akhtar; Faisal Ahmed Farooqui [20%] |
| 41 | Test Cycle 1 | 2020-04-20 → 2020-03-04 (-47d) | 2020-04-24 → 2020-03-10 (-45d) |  | 0d → 24.8d |  |  |
| 42 | Debug Cycle 1 | 2020-04-27 → 2020-03-04 (-54d) | 2020-05-01 → 2020-03-10 (-52d) |  | 0d → 25.8d | 41 → 41SS |  |
| 43 | **Textract Service Integration** | 2020-02-24 → 2020-03-19 (+24d) | 2020-03-02 → 2020-04-01 (+30d) | 6d → 9d | 2d → 0d | 22 → 37 | resources Hammad Khalil → none |
| 44 | Background Agent Service Creation | 2020-02-24 → 2020-03-19 (+24d) | 2020-02-26 → 2020-03-26 (+29d) | 3d → 5d | 2d → 0d |  | resources Hammad Khalil → Faisal Ahmed Farooqui |
| 45 | Integration with Message Queue | 2020-02-27 → 2020-03-27 (+29d) | 2020-03-02 → 2020-04-01 (+30d) | 3d → 4d | 2d → 0d |  | resources Hammad Khalil → Faisal Ahmed Farooqui |
| 46 | **Release 2 & Testing** | 2020-03-03 → 2020-03-12 (+9d) | 2020-03-17 → 2020-03-24 (+7d) | 11d → 7.8d | 2d → 8.6d | 45 → 33 | resources Hammad Khalil; Tester 1 → none |
| 47 | Deployment on cloud for Release 2 | 2020-03-03 → 2020-03-12 (+9d) | 2020-03-03 → 2020-03-16 (+13d) | 1d → 2.8d | 2d → 8.54d |  |  |
| 48 | Test Cycle 2 | 2020-03-04 → 2020-03-16 (+12d) | 2020-03-10 → 2020-03-24 (+14d) |  | 2d → 8.54d |  |  |
| 49 | Debug Cycle 2 | 2020-03-11 → 2020-03-16 (+5d) | 2020-03-17 → 2020-03-24 (+7d) |  | 2d → 8.54d | 48 → 48SS |  |
| 50 | **Model Creation Functionality** | 2020-03-18 → 2020-03-24 (+6d) | 2020-04-07 → 2020-04-14 (+7d) | 14d → 14.6d | 2d → 8.6d |  | resources Hammad Khalil → none |
| 51 | Backend logic creation for Document Field Mapping Functionality | 2020-03-18 → 2020-03-24 (+6d) | 2020-03-30 → 2020-04-07 (+8d) | 8d → 9.6d | 2d → 8.54d |  |  |
| 52 | UI Creation of Document Field Mapping Functionality | 2020-03-31 → 2020-04-07 (+7d) | 2020-04-03 → 2020-04-13 (+10d) |  | 2d → 8.54d |  |  |
| 53 | Unit Test Creation for Model Creation Functionality | 2020-04-06 → 2020-04-13 (+7d) | 2020-04-07 → 2020-04-14 (+7d) | 2d → 1d | 2d → 8.54d |  |  |
| 54 | **Release 3 & Testing** | 2020-04-08 → 2020-04-14 (+6d) | 2020-04-14 → 2020-04-21 (+7d) |  | 2d → 8.6d |  |  |
| 55 | Deployment on cloud for Release 3 | 2020-04-08 → 2020-04-14 (+6d) | 2020-04-09 → 2020-04-16 (+7d) |  | 2d → 8.54d |  |  |
| 56 | Test Cycle 3 | 2020-04-10 → 2020-04-16 (+6d) | 2020-04-14 → 2020-04-21 (+7d) |  | 2d → 8.54d |  |  |
| 57 | Debug Cycle 3 | 2020-04-10 → 2020-04-16 (+6d) | 2020-04-14 → 2020-04-21 (+7d) |  | 2d → 8.54d | 55 → 56SS |  |
| 58 | **Model Search Functionality** | 2020-05-04 → 2020-03-11 (-54d) | 2020-05-14 → 2020-03-30 (-45d) | 9d → 12.2d | 0d → 2.8d | 39, 30 → 39 | resources Zeeshan Akhtar → none |
| 59 | Creation of Model Search Functionality | 2020-05-04 → 2020-03-11 (-54d) | 2020-05-07 → 2020-03-18 (-50d) | 4d → 5.6d | 0d → 24.8d | 39, 30 → 39 |  |
| 60 | Tolerance Optimization | 2020-05-08 → 2020-03-18 (-51d) | 2020-05-13 → 2020-03-27 (-47d) | 4d → 5.6d | 0d → 25.8d |  |  |
| 61 | Unit Test Creation for Model Search Functionality | 2020-05-14 → 2020-03-27 (-48d) | 2020-05-14 → 2020-03-30 (-45d) |  | 0d → 25.8d |  |  |
| 62 | **Release 4 & Testing** | 2020-05-15 → 2020-03-30 (-46d) | 2020-05-21 → 2020-04-06 (-45d) |  | 0d → 2.8d |  | resources Zeeshan Akhtar; Tester 1 → none |
| 63 | Deployment on cloud for Release 4 | 2020-05-15 → 2020-03-30 (-46d) | 2020-05-18 → 2020-04-01 (-47d) |  | 0d → 25.8d |  |  |
| 64 | Test Cycle 4 | 2020-05-19 → 2020-04-01 (-48d) | 2020-05-21 → 2020-04-06 (-45d) |  | 0d → 25.8d |  |  |
| 65 | Debug Cycle 4 | 2020-05-19 → 2020-04-01 (-48d) | 2020-05-21 → 2020-04-06 (-45d) |  | 0d → 25.8d | 63 → 64SS | resources Tester 1 → Zeeshan Akhtar |
| 66 | **ERP Integration** | 2020-02-26 → 2020-02-24 (-2d) | 2020-04-29 → 2020-04-28 (-1d) | 45d → 44.53d | 41d → 16.8d |  |  |
| 67 | Creation of Generalized Adapter Interface for Data Push and Pull | 2020-02-26 → 2020-02-24 (-2d) | 2020-02-26 → 2020-02-25 (-1d) |  | 41d → 46.33d |  | resources Tao Lin → Tao Lin; Faisal Ahmed Farooqui [10%] |
| 68 | Integration with Message Queue | 2020-02-27 → 2020-02-25 (-2d) | 2020-02-28 → 2020-02-27 (-1d) |  | 41d → 46.33d |  | resources Tao Lin → Tao Lin; Faisal Ahmed Farooqui [10%] |
| 69 | Creation of Data Pull functionality for Nexelus Adapter | 2020-03-02 → 2020-02-27 (-4d) | 2020-03-03 → 2020-03-02 (-1d) |  | 41d → 46.33d |  |  |
| 70 | Creation of Data Push functionality for Nexelus Adapter | 2020-03-04 → 2020-03-02 (-2d) | 2020-03-05 → 2020-03-04 (-1d) |  | 41d → 46.33d |  |  |
| 71 | Vendor and Other Primary Data Fetching | 2020-03-06 → 2020-04-06 (+31d) | 2020-03-10 → 2020-04-09 (+30d) |  | 41d → 25.8d | 70 → 70, 67, 62 |  |
| 72 | Data Cache Implementation | 2020-03-11 → 2020-04-09 (+29d) | 2020-03-12 → 2020-04-14 (+33d) | 2d → 3d | 79d → 24.8d |  | resources Tao Lin → Tao Lin; Faisal Ahmed Farooqui [10%] |
| 73 | Unit Test Creation for Adapter Interface | 2020-03-13 → 2020-04-14 (+32d) | 2020-03-16 → 2020-04-16 (+31d) |  | 79d → 24.8d |  | resources Tao Lin → Tao Lin; Faisal Ahmed Farooqui [10%] |
| 74 | Invoice Creation and Pushing into ERP System | 2020-04-16 → 2020-04-09 (-7d) | 2020-04-17 → 2020-04-14 (-3d) | 2d → 3d | 16d → 2.8d | 71, 34 → 71, 36, 62 |  |
| 75 | **Release 5 & Testing** | 2020-04-20 → 2020-04-14 (-6d) | 2020-04-29 → 2020-04-28 (-1d) | 8d → 10d | 16d → 2.8d |  | resources Zeeshan Akhtar; Tao Lin; Tester 1 → none |
| 76 | Deployment on cloud for Release 5 | 2020-04-20 → 2020-04-14 (-6d) | 2020-04-21 → 2020-04-16 (-5d) |  | 22d → 2.8d |  |  |
| 77 | Test Cycle 5 | 2020-04-20 → 2020-04-14 (-6d) |  | 5d → 8d | 16d → 4.8d |  |  |
| 78 | Debug Cycle 5 | 2020-04-27 → 2020-04-16 (-11d) | 2020-04-29 → 2020-04-28 (-1d) | 3d → 8d | 16d → 2.8d | 77 → 76 |  |
| 79 | **Security, Login and Multi Tenant Functionality implementation** | 2020-04-15 → 2020-04-02 (-13d) | 2020-04-28 → 2020-04-29 (+1d) | 10d → 19.4d | 2d → 0d | 54 → 43 | resources Hammad Khalil → none |
| 80 | Creation of Security Token Service | 2020-04-15 → 2020-04-02 (-13d) | 2020-04-16 → 2020-04-08 (-8d) | 2d → 5d | 2d → 0d |  | resources Hammad Khalil → Faisal Ahmed Farooqui [40%] |
| 81 | Login Creation | 2020-04-17 → 2020-04-21 (+4d) | 2020-04-21 → 2020-04-29 (+8d) | 3d → 6d | 2d → 8.54d | 80 → 54 |  |
| 82 | Automatic DB Creation, ERP System Integration, Primary Data Fetching | 2020-04-22 → 2020-04-09 (-13d) | 2020-04-28 → 2020-04-16 (-12d) | 5d → 6d | 2d → 0d | 81 → 80 | resources Hammad Khalil → Faisal Ahmed Farooqui [40%] |

| ID | Task | Start | Finish | Duration | Total float | Predecessors | Other |
| --- | --- | --- | --- | --- | --- | --- | --- |
| 83 | **Release 6 & Testing** | 2020-04-29 → 2020-04-17 (-12d) | 2020-05-19 → 2020-04-30 (-19d) | 15d → 10d | 2d → 0d | 79 → none | resources Hammad Khalil; Tester 1 → none |
| 84 | Deployment on cloud for Release 6 | 2020-04-29 → 2020-04-17 (-12d) | 2020-05-12 → 2020-04-20 (-22d) | 10d → 2d | 2d → 0d | 79 → 82 | resources Hammad Khalil → Faisal Ahmed Farooqui [40%] |
| 85 | Test Cycle 6 | 2020-05-13 → 2020-04-21 (-22d) | 2020-05-19 → 2020-04-30 (-19d) | 5d → 8d | 2d → 0d |  |  |
| 86 | Debug Cycle 6 | 2020-05-13 → 2020-04-21 (-22d) | 2020-05-19 → 2020-04-30 (-19d) | 5d → 8d | 2d → 0d |  | resources Hammad Khalil → Faisal Ahmed Farooqui [60%] |
| 87 | Development complete | 2020-05-22 → 2020-05-01 (-21d) | 2020-05-22 → 2020-05-01 (-21d) |  | 0d → 13d |  |  |
| 88 | Integration Testing | 2020-05-25 → 2020-04-29 (-26d) | 2020-05-29 → 2020-05-06 (-23d) |  | 24d → 16.94d | 87 → 81, 78 | resources none → Hammad Khalil; Zeeshan Akhtar |
| 89 | **Testing for Beta Release to Clients** | 2020-05-22 → 2020-05-01 (-21d) | 2020-05-25 → 2020-05-20 (-5d) | 2d → 14d | 23d → 0d |  | resources Tester 1 → none |
| 90 | Fine tuning and small fixes | 2020-05-22 → 2020-05-01 (-21d) | 2020-05-25 → 2020-05-11 (-14d) | 2d → 7d | 23d → 0d |  | resources Tester 1 → Tester 1; Zeeshan Akhtar; Faisal Ahmed Farooqui [40%]; Hammad Khalil |
| 91 | Integration testing complete | 2020-05-25 → 2020-05-12 (-13d) | 2020-05-25 → 2020-05-20 (-5d) | 0d → 7d | 23d → 0d |  | resources none → Tester 1; Zeeshan Akhtar; Faisal Ahmed Farooqui; Hammad Khalil |
| 92 | **Deployment** | 2020-06-01 → 2020-01-15 (-138d) | 2020-06-02 → 2020-05-08 (-25d) | 2d → 80.4d | 24d → 8.6d |  |  |
| 93 | Preparation for RTM environment for beta | 2020-06-01 → 2020-05-06 (-26d) | 2020-06-02 → 2020-05-08 (-25d) |  | 24d → 16.94d |  | resources Deployment Team → Faisal Ahmed Farooqui; Tao Lin |

## Version 3 (saved 2020-02-14, file APA-ProjectPlan.mpp)

Note of the change: Merge branch 'main' of https://github.com/tsfszd/docs

Last finish stays 2020-05-20.

Changed:

| ID | Task | Start | Duration | Total float |
| --- | --- | --- | --- | --- |
| 16 | **Detailed Design Implementation** |  | 12.67d → 13d | 0.33d → 0d |
| 21 | Infrastructure & Integration Services Creation (like Message Queue) |  | 6.67d → 7d | 0.33d → 0d |
| 28 | Users, Roles and Groups | 2020-02-24 → 2020-02-25 (+1d) |  | 0.33d → 0d |
| 66 | **ERP Integration** | 2020-02-24 → 2020-02-25 (+1d) | 44.53d → 44.2d |  |
| 67 | Creation of Generalized Adapter Interface for Data Push and Pull | 2020-02-24 → 2020-02-25 (+1d) |  | 46.33d → 24d |
| 68 | Integration with Message Queue | 2020-02-25 → 2020-02-26 (+1d) |  | 46.33d → 24d |
| 69 | Creation of Data Pull functionality for Nexelus Adapter | 2020-02-27 → 2020-02-28 (+1d) |  | 46.33d → 24d |
| 70 | Creation of Data Push functionality for Nexelus Adapter | 2020-03-02 → 2020-03-03 (+1d) |  | 46.33d → 24d |

## Version 4 (saved 2020-02-25, file APA-ProjectPlan-ThirdDraft.mpp)

Note of the change: Reorganize Folder Structure

Last finish 2020-05-20 → 2020-06-03 (+14d). Complete tasks 0 → 10.

Changed:

| ID | Task | Start | Finish | Duration | Complete | Total float | Predecessors | Other |
| --- | --- | --- | --- | --- | --- | --- | --- | --- |
| 2 | Document Review |  |  | 2d → 16h |  | 0d → 0.33d |  |  |
| 3 | Understanding of Existing App & Prototype App |  |  | 2d → 16h |  | 0d → 0.33d |  |  |
| 4 | Infrastructure Requirement Understanding |  |  | 1d → 8h |  | 0d → 0.33d |  |  |
| 5 | **Design** | 2020-01-22 A |  |  | 0% → 52% | 0d → 78d |  |  |
| 6 | Document Review |  |  | 2d → 16h |  | 0d → 0.33d |  |  |
| 7 | Review preliminary software specifications |  |  | 2d → 16h |  | 0d → 0.33d |  |  |
| 8 | DB Design Review |  |  | 2d → 16h |  | 0d → 0.33d |  |  |
| 9 | Architecture Design Preliminary | 2020-01-30 A | 2020-01-31 A | 2d → 16h | 0% → 100% | 0d → none |  |  |
| 10 | R&D on Technologies need to be used in project | 2020-01-30 A |  | 2d → 16h | 0% → 50% | 0d → 86d |  |  |
| 11 | Code Structure Setup | 2020-02-03 A | 2020-02-04 A | 2d → 16h | 0% → 100% | 24.8d → none |  |  |
| 12 | UI Components Structure Setup | 2020-02-03 A | 2020-02-06 A | 3d → 24h | 0% → 100% | 0d → none |  |  |
| 13 | Design complete |  |  | 2d → 16h |  | 0d → 2.4d |  |  |
| 14 | ProjectPlan Creation | 2020-02-11 A |  | 3d → 24h | 0% → 80% | 0d → 1.33d |  |  |
| 15 | **Development Sprints** | 2020-02-06 A | 2020-05-01 → 2020-05-15 (+14d) | 61d → 71d | 0% → 12% | 1d → 13d |  |  |
| 16 | **Detailed Design Implementation** | 2020-02-06 A |  | 13d → 12.67d | 0% → 68% | 0d → 0.33d |  |  |
| 17 | Projects Structure Creation & ORM Model Creation | 2020-02-06 A | 2020-02-07 A | 2d → 16h | 0% → 100% | 24.8d → none |  |  |
| 18 | DataAccessLayer Implementation | 2020-02-10 A | 2020-02-12 A | 3d → 24h | 0% → 100% | 24.8d → none |  |  |
| 19 | BusinessLogicLayer and Service Structure Implementation | 2020-02-13 A | 2020-02-17 A | 3d → 24h | 0% → 100% | 24.8d → none |  |  |
| 20 | Unit Test Structure Creation | 2020-02-18 A | 2020-02-19 A | 2d → 16h | 0% → 100% | 24.8d → none |  |  |
| 21 | Infrastructure & Integration Services Creation (like Message Queue) | 2020-02-14 A |  | 7d → 53.36h | 0% → 20% | 0d → 0.33d |  |  |
| 22 | **Code Copy from Existing Apps** | 2020-02-07 A | 2020-02-21 A |  | 0% → 100% | 0d → none |  |  |
| 23 | UI Structure Creation from Nexelus App | 2020-02-07 A | 2020-02-11 A | 3d → 24h | 0% → 100% | 0d → none |  |  |
| 24 | Copying the usable code for UI & Logic from Demo App of APAutomation | 2020-02-12 A | 2020-02-19 A | 6d → 48h | 0% → 100% | 0d → none |  |  |
| 25 | Release 0 - Demo | 2020-02-20 A | 2020-02-21 A | 2d → 16h | 0% → 100% | 0d → none |  |  |
| 26 | **Company Registration** | 2020-02-24 A |  |  | 0% → 22% |  |  |  |
| 27 | Company Setup | 2020-02-24 A |  | 3d → 24h | 0% → 40% | 0d → 3d |  | resources Hammad Khalil → Zeeshan Akhtar |
| 28 | Users, Roles and Groups | 2020-02-25 → 2020-02-24 (-1d) |  | 5d → 40h |  | 0d → 0.33d |  |  |
| 29 | Login Screen | 2020-02-27 A |  | 3d → 24h | 0% → 40% |  | 27 → 27SS |  |
| 30 | **Release 0 & Testing** | 2020-03-03 A | 2020-03-11 → 2020-03-26 (+15d) | 7d → 17d | 0% → 11% | 0d → 8.6d |  |  |
| 31 | Deployment on on-prem env for Release 1 and Demo | 2020-03-03 A | 2020-03-04 → 2020-03-18 (+14d) | 2d → 96h | 0% → 20% |  |  | resources Faisal Ahmed Farooqui [20%]; Hammad Khalil → Faisal Ahmed Farooqui [20%] |
| 32 | Test Cycle 1 | 2020-03-05 → 2020-03-19 (+14d) | 2020-03-11 → 2020-03-26 (+15d) | 5d → 40h |  |  |  |  |
| 33 | Debug Cycle 1 | 2020-03-05 → 2020-03-19 (+14d) | 2020-03-11 → 2020-03-26 (+15d) | 5d → 40h |  | 8.54d → 8.6d |  |  |
| 34 | **Document Status Management** | 2020-02-20 → 2020-02-27 (+7d) | 2020-03-18 → 2020-04-02 (+15d) | 20d → 25d |  |  |  |  |
| 35 | Document Listing UI Creation | 2020-03-05 → 2020-03-19 (+14d) | 2020-03-10 → 2020-03-25 (+15d) | 4d → 32h |  |  |  |  |
| 36 | Invoice Creation | 2020-02-20 → 2020-02-27 (+7d) | 2020-02-27 → 2020-03-05 (+7d) | 6d → 48h |  | 2.8d → 7.8d | 20 → 27 |  |
| 37 | Invoice Approval, Review Workflow | 2020-03-11 → 2020-03-26 (+15d) | 2020-03-18 → 2020-04-02 (+15d) | 6d → 48h |  |  |  |  |
| 38 | Unit Test Creation for Document Listing Logic | 2020-02-28 → 2020-03-06 (+7d) | 2020-02-28 → 2020-03-06 (+7d) | 1d → 8h |  | 2.8d → 7.8d |  |  |
| 39 | **Release 1 & Testing** | 2020-03-02 → 2020-03-09 (+7d) | 2020-03-10 → 2020-03-17 (+7d) |  |  | 2.8d → 7.8d |  |  |
| 40 | Deployment on on-prem env for Release 1 and Demo | 2020-03-02 → 2020-03-09 (+7d) | 2020-03-03 → 2020-03-10 (+7d) | 2d → 16h |  | 2.8d → 7.8d |  |  |
| 41 | Test Cycle 1 | 2020-03-04 → 2020-03-11 (+7d) | 2020-03-10 → 2020-03-17 (+7d) | 5d → 40h |  | 2.8d → 7.8d |  |  |
| 42 | Debug Cycle 1 | 2020-03-04 → 2020-03-11 (+7d) | 2020-03-10 → 2020-03-17 (+7d) | 5d → 40h |  | 25.8d → 7.8d |  |  |
| 43 | **Textract Service Integration** | 2020-03-19 → 2020-04-03 (+15d) | 2020-04-01 → 2020-04-15 (+14d) |  |  |  |  |  |
| 44 | Background Agent Service Creation | 2020-03-19 → 2020-04-03 (+15d) | 2020-03-26 → 2020-04-09 (+14d) | 5d → 40h |  |  |  |  |
| 45 | Integration with Message Queue | 2020-03-27 → 2020-04-10 (+14d) | 2020-04-01 → 2020-04-15 (+14d) | 4d → 32h |  |  |  |  |
| 46 | **Release 2 & Testing** | 2020-03-12 → 2020-03-27 (+15d) | 2020-03-24 → 2020-04-07 (+14d) |  |  |  |  |  |
| 47 | Deployment on cloud for Release 2 | 2020-03-12 → 2020-03-27 (+15d) | 2020-03-16 → 2020-03-31 (+15d) | 2.8d → 22.4h |  |  |  |  |
| 48 | Test Cycle 2 | 2020-03-16 → 2020-03-31 (+15d) | 2020-03-24 → 2020-04-07 (+14d) | 5d → 40h |  | 8.54d → 8.6d |  |  |
| 49 | Debug Cycle 2 | 2020-03-16 → 2020-03-31 (+15d) | 2020-03-24 → 2020-04-07 (+14d) | 5d → 40h |  | 8.54d → 8.6d |  |  |
| 50 | **Model Creation Functionality** | 2020-03-24 → 2020-04-07 (+14d) | 2020-04-14 → 2020-04-28 (+14d) |  |  |  |  |  |
| 51 | Backend logic creation for Document Field Mapping Functionality | 2020-03-24 → 2020-04-07 (+14d) | 2020-04-07 → 2020-04-21 (+14d) | 9.6d → 76.8h |  | 8.54d → 8.6d |  |  |
| 52 | UI Creation of Document Field Mapping Functionality | 2020-04-07 → 2020-04-21 (+14d) | 2020-04-13 → 2020-04-27 (+14d) | 4d → 32h |  | 8.54d → 8.6d |  |  |
| 53 | Unit Test Creation for Model Creation Functionality | 2020-04-13 → 2020-04-27 (+14d) | 2020-04-14 → 2020-04-28 (+14d) | 1d → 8h |  | 8.54d → 8.6d |  |  |
| 54 | **Release 3 & Testing** | 2020-04-14 → 2020-04-28 (+14d) | 2020-04-21 → 2020-05-05 (+14d) |  |  |  |  |  |
| 55 | Deployment on cloud for Release 3 | 2020-04-14 → 2020-04-28 (+14d) | 2020-04-16 → 2020-04-30 (+14d) | 2d → 16h |  | 8.54d → 8.6d |  |  |
| 56 | Test Cycle 3 | 2020-04-16 → 2020-04-30 (+14d) | 2020-04-21 → 2020-05-05 (+14d) | 3d → 24h |  | 8.54d → 8.6d |  |  |
| 57 | Debug Cycle 3 | 2020-04-16 → 2020-04-30 (+14d) | 2020-04-21 → 2020-05-05 (+14d) | 3d → 24h |  | 8.54d → 8.6d |  |  |
| 58 | **Model Search Functionality** | 2020-03-11 → 2020-03-18 (+7d) | 2020-03-30 → 2020-04-06 (+7d) |  |  | 2.8d → 7.8d |  |  |
| 59 | Creation of Model Search Functionality | 2020-03-11 → 2020-03-18 (+7d) | 2020-03-18 → 2020-03-26 (+8d) | 5.6d → 44.8h |  | 2.8d → 7.8d |  |  |
| 60 | Tolerance Optimization | 2020-03-18 → 2020-03-26 (+8d) | 2020-03-27 → 2020-04-03 (+7d) | 5.6d → 44.8h |  | 25.8d → 7.8d |  |  |
| 61 | Unit Test Creation for Model Search Functionality | 2020-03-27 → 2020-04-03 (+7d) | 2020-03-30 → 2020-04-06 (+7d) | 1d → 8h |  | 25.8d → 7.8d |  |  |
| 62 | **Release 4 & Testing** | 2020-03-30 → 2020-04-06 (+7d) | 2020-04-06 → 2020-04-13 (+7d) |  |  | 2.8d → 7.8d |  |  |
| 63 | Deployment on cloud for Release 4 | 2020-03-30 → 2020-04-06 (+7d) | 2020-04-01 → 2020-04-08 (+7d) | 2d → 16h |  | 25.8d → 7.8d |  |  |
| 64 | Test Cycle 4 | 2020-04-01 → 2020-04-08 (+7d) | 2020-04-06 → 2020-04-13 (+7d) | 3d → 24h |  | 25.8d → 7.8d |  |  |
| 65 | Debug Cycle 4 | 2020-04-01 → 2020-04-08 (+7d) | 2020-04-06 → 2020-04-13 (+7d) | 3d → 24h |  | 25.8d → 7.8d |  |  |
| 66 | **ERP Integration** | 2020-02-25 → 2020-02-24 (-1d) | 2020-04-28 → 2020-05-05 (+7d) | 44.2d → 49.53d |  | 16.8d → 21.8d |  |  |
| 67 | Creation of Generalized Adapter Interface for Data Push and Pull | 2020-02-25 → 2020-02-24 (-1d) |  | 1d → 8h |  | 24d → 24.33d |  |  |
| 68 | Integration with Message Queue | 2020-02-26 → 2020-02-25 (-1d) |  | 2d → 16h |  | 24d → 24.33d |  |  |
| 69 | Creation of Data Pull functionality for Nexelus Adapter | 2020-02-28 → 2020-02-27 (-1d) |  | 2d → 16h |  | 24d → 24.33d |  |  |
| 70 | Creation of Data Push functionality for Nexelus Adapter | 2020-03-03 → 2020-03-02 (-1d) |  | 2d → 16h |  | 24d → 24.33d |  |  |
| 71 | Vendor and Other Primary Data Fetching | 2020-04-06 → 2020-04-13 (+7d) | 2020-04-09 → 2020-04-16 (+7d) | 3d → 24h |  | 25.8d → 7.8d |  |  |

| ID | Task | Start | Finish | Duration | Total float |
| --- | --- | --- | --- | --- | --- |
| 72 | Data Cache Implementation | 2020-04-09 → 2020-04-16 (+7d) | 2020-04-14 → 2020-04-21 (+7d) | 3d → 24h | 24.8d → 29.8d |
| 73 | Unit Test Creation for Adapter Interface | 2020-04-14 → 2020-04-21 (+7d) | 2020-04-16 → 2020-04-23 (+7d) |  | 24.8d → 29.8d |
| 74 | Invoice Creation and Pushing into ERP System | 2020-04-09 → 2020-04-16 (+7d) | 2020-04-14 → 2020-04-21 (+7d) | 3d → 24h | 2.8d → 7.8d |
| 75 | **Release 5 & Testing** | 2020-04-14 → 2020-04-21 (+7d) | 2020-04-28 → 2020-05-05 (+7d) |  | 2.8d → 7.8d |
| 76 | Deployment on cloud for Release 5 | 2020-04-14 → 2020-04-21 (+7d) | 2020-04-16 → 2020-04-23 (+7d) | 2d → 16h | 2.8d → 7.8d |
| 77 | Test Cycle 5 | 2020-04-14 → 2020-04-21 (+7d) | 2020-04-24 → 2020-05-01 (+7d) | 8d → 64h | 4.8d → 9.8d |
| 78 | Debug Cycle 5 | 2020-04-16 → 2020-04-23 (+7d) | 2020-04-28 → 2020-05-05 (+7d) | 8d → 64h | 2.8d → 7.8d |
| 79 | **Security, Login and Multi Tenant Functionality implementation** | 2020-04-02 → 2020-04-16 (+14d) | 2020-04-29 → 2020-05-13 (+14d) |  |  |
| 80 | Creation of Security Token Service | 2020-04-02 → 2020-04-16 (+14d) | 2020-04-08 → 2020-04-22 (+14d) | 5d → 40h |  |
| 81 | Login Creation | 2020-04-21 → 2020-05-05 (+14d) | 2020-04-29 → 2020-05-13 (+14d) | 6d → 48h | 8.54d → 8.6d |
| 82 | Automatic DB Creation, ERP System Integration, Primary Data Fetching | 2020-04-09 → 2020-04-23 (+14d) | 2020-04-16 → 2020-04-30 (+14d) | 6d → 48h |  |
| 83 | **Release 6 & Testing** | 2020-04-17 → 2020-05-01 (+14d) | 2020-04-30 → 2020-05-14 (+14d) |  |  |
| 84 | Deployment on cloud for Release 6 | 2020-04-17 → 2020-05-01 (+14d) | 2020-04-20 → 2020-05-04 (+14d) | 2d → 16h |  |
| 85 | Test Cycle 6 | 2020-04-21 → 2020-05-05 (+14d) | 2020-04-30 → 2020-05-14 (+14d) | 8d → 64h |  |
| 86 | Debug Cycle 6 | 2020-04-21 → 2020-05-05 (+14d) | 2020-04-30 → 2020-05-14 (+14d) | 8d → 64h |  |
| 87 | Development complete | 2020-05-01 → 2020-05-15 (+14d) | 2020-05-01 → 2020-05-15 (+14d) | 1d → 8h |  |
| 88 | Integration Testing | 2020-04-29 → 2020-05-13 (+14d) | 2020-05-06 → 2020-05-20 (+14d) | 5d → 40h | 16.94d → 8.6d |
| 89 | **Testing for Beta Release to Clients** | 2020-05-01 → 2020-05-15 (+14d) | 2020-05-20 → 2020-06-03 (+14d) |  |  |
| 90 | Fine tuning and small fixes | 2020-05-01 → 2020-05-15 (+14d) | 2020-05-11 → 2020-05-25 (+14d) | 7d → 56h |  |
| 91 | Integration testing complete | 2020-05-12 → 2020-05-26 (+14d) | 2020-05-20 → 2020-06-03 (+14d) | 7d → 56h |  |
| 92 | **Deployment** |  | 2020-05-08 → 2020-05-22 (+14d) | 80.4d → 90.4d |  |
| 93 | Preparation for RTM environment for beta | 2020-05-06 → 2020-05-20 (+14d) | 2020-05-08 → 2020-05-22 (+14d) | 2d → 16h | 16.94d → 8.6d |
| 94 | Phase 1 Complete |  |  | 0d → 0h | 103.94d → 89d |
