# AP Automation Phase 3

How a schedule from MS Project changed from version to version. A marks actual dates.

## Version 1 (saved 2021-07-13, file APA-Phase3ProjectPlan-1stDraft.mpp)

Note of the change: Merge branch 'main' of https://github.com/tsfszd/docs

| ID | WBS | Task | Duration | Start | Finish | Predecessors | Complete | Total float | Constraint |
| --- | --- | --- | --- | --- | --- | --- | --- | --- | --- |
| 1 | 1 | **Development Sprints** | 30.33d | 2021-07-05 A | 2021-08-09 |  | 9% | 2d |  |
| 2 | 1.1 | **Development of Version V3 (New Feature Branch)** | 30.33d | 2021-07-05 A | 2021-08-09 |  | 9% | 2d |  |
| 3 | 1.1.1 | **Version 2.9.1** | 30.33d | 2021-07-05 A | 2021-08-09 |  | 9% | 2d |  |
| 4 | 1.1.1.1 | **Code Refactoring** | 8.33d | 2021-07-05 | 2021-07-13 |  |  | 9.33d |  |
| 5 |  | Lookups | 5h | 2021-07-05 | 2021-07-05 |  |  | 10d |  |
| 6 |  | Enumeration to be moved to Common | 4h | 2021-07-05 | 2021-07-06 | 5 |  | 10d |  |
| 7 |  | DTOs to be removed for enumerations type tables | 5h | 2021-07-06 | 2021-07-06 | 6 |  | 10d |  |
| 8 |  | Polymorphism to be implemented for file saving mechanism | 10h | 2021-07-06 | 2021-07-07 | 7 |  | 10d |  |
| 9 |  | API calls to be refactored in Javascript | 5h | 2021-07-08 | 2021-07-08 | 8 |  | 10d |  |
| 10 |  | lambda functions for common routines | 6h | 2021-07-08 | 2021-07-09 | 9 |  | 10d |  |
| 11 |  | login related refactoring | 5h | 2021-07-09 | 2021-07-09 | 10 |  | 10d |  |
| 12 |  | Distributed Transaction Management | 10h | 2021-07-12 | 2021-07-13 | 11 |  | 10d |  |
| 13 |  | Deployment Data Search Service (DSS) | 24h | 2021-07-05 A | 2021-07-08 A |  | 100% |  | start no earlier than 2021-07-05 |
| 14 |  | Performance Improvement of DSS | 24h | 2021-07-08 A | 2021-07-13 | 13 | 80% | 2d |  |
| 15 |  | Integration with Data Search Service | 16h | 2021-07-09 | 2021-07-13 |  |  | 10d | start no earlier than 2021-07-09 |
| 16 | 1.1.1.5 | **Business Logic for Invoice Routing** | 8d | 2021-07-13 | 2021-07-26 | 4 |  | 9.33d |  |
| 17 |  | SP creation | 8h | 2021-07-13 | 2021-07-14 |  |  | 10d |  |
| 18 |  | Business Logic and Decission making for invoice routing | 24h | 2021-07-14 | 2021-07-23 | 17 |  | 10d |  |
| 19 |  | UI chnages (if any) - Dashboard for descripent invoices | 8h | 2021-07-23 | 2021-07-26 | 18 |  | 10d |  |
| 20 |  | Test Case Creation | 40h | 2021-07-12 | 2021-07-19 |  |  | 12d | start no earlier than 2021-07-12 |
| 21 |  | Discussions And Management Activities | 24h | 2021-07-13 | 2021-07-16 | 15 |  | 10d |  |
| 22 |  | Build Release | 16h | 2021-07-16 | 2021-07-26 | 21 |  | 10d |  |
| 23 |  | Testing | 40h | 2021-07-19 | 2021-07-29 | 20 |  | 12d |  |
| 24 |  | Bug Fixing for Business Logic for Invoice Routing | 40h | 2021-07-26 | 2021-08-02 | 16 |  | 10d |  |
| 25 |  | Bug Fixing Data Search Service | 40h | 2021-07-13 | 2021-07-20 | 14 |  | 2d |  |
| 26 |  | Discussions And Management Activities | 32h | 2021-07-26 | 2021-07-30 | 22 |  | 10d |  |
| 27 |  | Build Release | 8h | 2021-07-30 | 2021-08-02 | 26 |  | 10d |  |
| 28 | 1.1.1.14 | **Data Analysis** | 9.33d | 2021-07-20 | 2021-08-03 | 25 |  | 2d |  |
| 29 |  | Gathering Data from DSS | 16h | 2021-07-20 | 2021-07-27 |  |  | 2d |  |
| 30 |  | Data Preparation | 16h | 2021-07-27 | 2021-07-29 | 29 |  | 2d |  |
| 31 |  | Exploratory Data Analysis - Data Visualization | 24h | 2021-07-29 | 2021-08-03 | 30 |  | 2d |  |
| 32 | 1.1.1.15 | **R&D on ML Algos** | 6d | 2021-08-03 | 2021-08-09 | 28 |  | 2d |  |
| 33 |  | Decission making on ICR - based on current R&D and Data Analysis in hand | 4h | 2021-08-03 | 2021-08-03 |  |  | 2d |  |
| 34 | 1.1.1.15.2 | **R&D on Existing ML Models to consider for our usage** | 5.33d | 2021-08-03 | 2021-08-09 | 33 |  | 2d |  |
| 35 |  | Finding most popular considerable ML Models | 8h | 2021-08-03 | 2021-08-04 |  |  | 2d |  |
| 36 |  | R&D on each seelcted Models (4 Models * 4 hrs each) | 16h | 2021-08-04 | 2021-08-06 | 35 |  | 2d |  |
| 37 |  | Decission making on Models for further development | 8h | 2021-08-06 | 2021-08-09 | 36 |  | 2d |  |
| 38 | 2 | **Development of Version V2.1 (Bug Fixing Branch)** | 26.67d | 2021-08-11 | 2021-09-08 | 2 |  | 0d |  |
| 39 | 2.1 | **Version 2.0.1** | 26.67d | 2021-08-11 | 2021-09-08 |  |  | 0d |  |
| 40 |  | Change Assessment on Client feedback for change request | 16h | 2021-08-11 | 2021-08-13 |  |  | 21.33d | start no earlier than 2021-08-11 |
| 41 |  | Bug Fixing | 40h | 2021-08-11 | 2021-08-18 |  |  | 0d | start no earlier than 2021-08-11 |
| 42 |  | Test Case Creation | 40h | 2021-08-18 | 2021-08-25 | 41 |  | 0d |  |
| 43 |  | Discussions And Management Activities | 16h | 2021-08-13 | 2021-08-17 | 40 |  | 21.33d |  |
| 44 |  | Build Release | 8h | 2021-08-18 | 2021-08-19 | 40, 41 |  | 17.33d | start no earlier than 2021-08-18 |
| 45 |  | Testing | 40h | 2021-08-25 | 2021-09-01 | 42 |  | 0d |  |
| 46 |  | Bug Fixing | 40h | 2021-08-18 | 2021-08-25 | 41 |  | 13.33d |  |
| 47 |  | Build Release | 8h | 2021-08-19 | 2021-08-20 | 44 |  | 17.33d |  |
| 48 |  | Testing | 40h | 2021-09-01 | 2021-09-08 | 45 |  | 0d | start no earlier than 2021-09-01 |

## Version 2 (saved 2021-07-16, file APA-Phase3ProjectPlan-2ndDraft.mpp)

Note of the change: Reorganize Folder Structure

Last finish 2021-09-08 → 2021-09-14 (+6d). Complete tasks 1 → 7.

Added:

| ID | Task | Duration | Start | Finish | Predecessors | Resources |
| --- | --- | --- | --- | --- | --- | --- |
| 4 | Bug Fixing in Previous Version | 30h | 2021-07-05 A | 2021-07-09 A |  | Zeeshan Akhtar |
| 16 | Discussions, Planning And Management Activities | 30h | 2021-07-05 A | 2021-07-09 A |  | Faisal Ahmed Farooqui |
| 30 | **Version 2.2.0** | 15.33d | 2021-08-24 | 2021-09-14 | 3 |  |
| 41 | Development on New Features (Need Discussion) | 30h | 2021-08-24 | 2021-08-31 | 26 | Zeeshan Akhtar |

Removed: 38 Development of Version V2.1 (Bug Fixing Branch); 39 Version 2.0.1; 40 Change Assessment on Client feedback for change request; 41 Bug Fixing; 42 Test Case Creation; 43 Discussions And Management Activities; 44 Build Release; 45 Testing; 46 Bug Fixing; 47 Build Release; 48 Testing

Changed:

| ID | Task | Start | Finish | Duration | Complete | Total float | Predecessors | Other |
| --- | --- | --- | --- | --- | --- | --- | --- | --- |
| 1 | **Development Sprints** |  | 2021-08-09 → 2021-09-14 (+36d) | 30.33d → 48d | 9% → 21% | 2d → 0d |  |  |
| 2 | **Development of Version V3 (New Feature Branch)** |  | 2021-08-09 → 2021-09-14 (+36d) | 30.33d → 48d | 9% → 21% | 2d → 0d |  |  |
| 3 | **Version 2.1.0** |  | 2021-08-09 → 2021-08-24 (+15d) | 30.33d → 32.67d | 9% → 27% | 2d → 0d |  | was named Version 2.9.1 |
| 5 | **Code Refactoring** | 2021-07-05 → 2021-07-13 A (+8d) | 2021-07-13 → 2021-07-29 (+16d) |  | 0% → 33% | 9.33d → 6.67d |  |  |
| 6 | Lookups | 2021-07-05 → 2021-07-13 A (+8d) | 2021-07-05 → 2021-07-13 A (+8d) |  | 0% → 100% | 10d → none | none → 4 |  |
| 7 | Enumeration to be moved to Common | 2021-07-05 → 2021-07-13 A (+8d) | 2021-07-06 → 2021-07-14 A (+8d) |  | 0% → 100% | 10d → none |  |  |
| 8 | DTOs to be removed for enumerations type tables | 2021-07-06 → 2021-07-14 A (+8d) | 2021-07-06 → 2021-07-15 A (+9d) |  | 0% → 100% | 10d → none |  |  |
| 9 | API calls to be refactored in Javascript | 2021-07-08 → 2021-07-15 A (+7d) | 2021-07-08 → 2021-07-16 (+8d) |  | 0% → 50% | 10d → 6.67d | 10 → 8 |  |
| 10 | Polymorphism to be implemented for file saving mechanism | 2021-07-06 → 2021-07-16 (+10d) | 2021-07-07 → 2021-07-19 (+12d) |  |  | 10d → 1.67d | 8 → 9 |  |
| 11 | lambda functions for common routines | 2021-07-08 → 2021-07-19 (+11d) | 2021-07-09 → 2021-07-26 (+17d) |  |  | 10d → 1.67d | 9 → 10 |  |
| 12 | login related refactoring | 2021-07-09 → 2021-07-26 (+17d) | 2021-07-09 → 2021-07-27 (+18d) |  |  | 10d → 1.67d |  |  |
| 13 | Distributed Transaction Management | 2021-07-12 → 2021-07-27 (+15d) | 2021-07-13 → 2021-07-29 (+16d) |  |  | 10d → 1.67d |  |  |
| 15 | Performance Improvement of DSS |  | 2021-07-13 A |  | 80% → 100% | 2d → none |  |  |
| 17 | Integration with Data Search Service | 2021-07-09 → 2021-07-13 A (+4d) | 2021-07-13 → 2021-07-16 (+3d) | 16h → 18h | 0% → 40% | 10d → 7d | none → 16, 15 | constraint start no earlier than 2021-07-09 → none; resources Faisal Ahmed Farooqui → Faisal Ahmed Farooqui; Shoaib Alauddin |
| 18 | **Business Logic for Invoice Routing** | 2021-07-13 → 2021-07-29 (+16d) | 2021-07-26 → 2021-08-06 (+11d) | 8d → 6.67d |  | 9.33d → 6.67d |  |  |
| 19 | SP creation | 2021-07-13 → 2021-07-29 (+16d) | 2021-07-14 → 2021-07-30 (+16d) |  |  | 10d → 6.67d |  |  |
| 20 | Business Logic and Decission making for invoice routing | 2021-07-14 → 2021-07-30 (+16d) | 2021-07-23 → 2021-08-05 (+13d) |  |  | 10d → 6.67d |  |  |
| 21 | UI chnages (if any) - Dashboard for descripent invoices | 2021-07-23 → 2021-08-05 (+13d) | 2021-07-26 → 2021-08-06 (+11d) |  |  | 10d → 6.67d |  |  |
| 22 | Test Case Creation |  | 2021-07-19 → 2021-07-29 (+10d) |  |  | 12d → 0d |  | resources Muhammad Naeem → Muhammad Naeem [60%] |
| 23 | Discussions And Management Activities | 2021-07-13 → 2021-07-16 (+3d) | 2021-07-16 → 2021-07-29 (+13d) | 24h → 30h |  | 10d → 7d |  |  |
| 24 | Build Release | 2021-07-16 → 2021-07-29 (+13d) | 2021-07-26 → 2021-08-03 (+8d) | 16h → 18h |  | 10d → 7d |  |  |
| 25 | Testing | 2021-07-19 → 2021-07-30 (+11d) | 2021-07-29 → 2021-08-24 (+26d) | 40h → 70h |  | 12d → 0d |  | resources Muhammad Naeem → Muhammad Naeem [50%] |
| 26 | Bug Fixing for Business Logic for Invoice Routing | 2021-07-26 → 2021-08-09 (+14d) | 2021-08-02 → 2021-08-13 (+11d) | 40h → 30h |  | 10d → 6.67d |  |  |
| 27 | Bug Fixing Data Search Service | 2021-07-13 → 2021-07-16 (+3d) | 2021-07-20 → 2021-08-02 (+13d) |  |  | 2d → 16.33d | 15 → 17 |  |
| 28 | Discussions And Management Activities | 2021-07-26 → 2021-08-03 (+8d) | 2021-07-30 → 2021-08-10 (+11d) | 32h → 30h |  | 10d → 7d |  |  |
| 29 | Build Release | 2021-07-30 → 2021-08-10 (+11d) | 2021-08-02 → 2021-08-13 (+11d) | 8h → 18h |  | 10d → 7d |  |  |
| 31 | **Data Analysis** | 2021-07-20 → 2021-08-24 (+35d) | 2021-08-03 → 2021-09-06 (+34d) |  |  | 2d → 0d |  |  |
| 32 | Gathering Data from DSS | 2021-07-20 → 2021-08-24 (+35d) | 2021-07-27 → 2021-08-27 (+31d) |  |  | 2d → 0d |  |  |
| 33 | Data Preparation | 2021-07-27 → 2021-08-27 (+31d) | 2021-07-29 → 2021-08-31 (+33d) |  |  | 2d → 0d |  |  |
| 34 | Exploratory Data Analysis - Data Visualization | 2021-07-29 → 2021-09-01 (+34d) | 2021-08-03 → 2021-09-06 (+34d) |  |  | 2d → 0d |  |  |
| 35 | **R&D on ML Algos** | 2021-08-03 → 2021-09-07 (+35d) | 2021-08-09 → 2021-09-14 (+36d) |  |  | 2d → 0d |  |  |
| 36 | Decission making on ICR - based on current R&D and Data Analysis in hand | 2021-08-03 → 2021-09-07 (+35d) | 2021-08-03 → 2021-09-07 (+35d) |  |  | 2d → 0d |  |  |
| 37 | **R&D on Existing ML Models to consider for our usage** | 2021-08-03 → 2021-09-07 (+35d) | 2021-08-09 → 2021-09-14 (+36d) |  |  | 2d → 0d |  |  |
| 38 | Finding most popular considerable ML Models | 2021-08-03 → 2021-09-07 (+35d) | 2021-08-04 → 2021-09-08 (+35d) |  |  | 2d → 0d |  |  |
| 39 | R&D on each seelcted Models (4 Models * 4 hrs each) | 2021-08-04 → 2021-09-09 (+36d) | 2021-08-06 → 2021-09-13 (+38d) |  |  | 2d → 0d |  |  |
| 40 | Decission making on Models for further development | 2021-08-06 → 2021-09-13 (+38d) | 2021-08-09 → 2021-09-14 (+36d) |  |  | 2d → 0d |  |  |

## Version 3 (saved 2021-07-16, file APA-Phase3ProjectPlan-3rdDraft.mpp)

Note of the change: Reorganize Folder Structure

Last finish 2021-09-14 → 2021-08-30 (-15d). Complete tasks 7 → 9.

Added:

| ID | Task | Duration | Start | Finish | Predecessors | Resources |
| --- | --- | --- | --- | --- | --- | --- |
| 2 | **V2 Related Activities** | 12d | 2021-07-05 A | 2021-07-26 |  |  |
| 3 | Expense Report | 18h | 2021-07-05 A | 2021-07-07 A |  | Muhammad Naeem |
| 4 | Testing V2 | 12h | 2021-07-08 A | 2021-07-09 A | 3 | Muhammad Naeem |
| 5 | Distributed Load Testing R&D | 24h | 2021-07-12 A | 2021-07-15 | 4 | Muhammad Naeem |
| 7 | Load Testing | 18h | 2021-07-16 | 2021-07-26 | 5 | Muhammad Naeem |
| 23 | Requirement Analysys from QA perspective | 24h | 2021-07-27 | 2021-07-30 | 7 | Muhammad Naeem; Faisal Ahmed Farooqui |
| 28 | Test Plan Creation | 18h | 2021-08-02 | 2021-08-04 | 23, 22 | Muhammad Naeem; Faisal Ahmed Farooqui |
| 30 | Detailed Test Case Writing | 18h | 2021-08-09 | 2021-08-11 | 29 | Muhammad Naeem |
| 34 | Sanity Test Execution | 12h | 2021-08-16 | 2021-08-17 | 33 | Muhammad Naeem |
| 35 | Functional Test Execution | 36h | 2021-08-18 | 2021-08-25 | 34 | Muhammad Naeem |

Changed:

| ID | Task | Start | Finish | Duration | Complete | Total float | Predecessors | Other |
| --- | --- | --- | --- | --- | --- | --- | --- | --- |
| 1 | **Development Sprints** |  | 2021-09-14 → 2021-08-30 (-15d) | 48d → 37d | 21% → 24% |  |  |  |
| 6 | Bug Fixing V2 |  |  |  |  |  |  | was named Bug Fixing in Previous Version |
| 8 | **Development of Version V3 (New Feature Branch)** |  | 2021-09-14 → 2021-08-30 (-15d) | 48d → 37d | 21% → 14% |  |  |  |
| 9 | **Version 2.1.0** |  | 2021-08-24 → 2021-08-26 (+2d) | 32.67d → 35d | 27% → 18% | 0d → 2d |  |  |
| 19 | Deployment Data Search Service (DSS) |  | 2021-07-08 A → 2021-07-07 A (-1d) | 24h → 18h |  |  |  |  |
| 20 | Performance Improvement of DSS |  | 2021-07-13 A → 2021-07-12 A (-1d) | 24h → 18h |  |  |  |  |
| 21 | Discussions, Planning And Management Activities |  | 2021-07-09 A → 2021-07-08 A (-1d) | 30h → 24h |  |  |  |  |
| 24 | **Business Logic for Invoice Routing** |  |  |  |  | 6.67d → 7d | 10 → none |  |
| 25 | SP creation |  |  |  |  | 6.67d → 3d | none → 10 |  |
| 29 | Test Case Creation | 2021-07-12 → 2021-08-05 (+24d) | 2021-07-29 → 2021-08-06 (+8d) | 40h → 12h |  | 0d → 3d | none → 28 | constraint start no earlier than 2021-07-12 → none; resources Muhammad Naeem [60%] → Muhammad Naeem |
| 31 | Discussions And Management Activities | 2021-07-16 → 2021-08-05 (+20d) | 2021-07-29 → 2021-08-11 (+13d) |  |  | 7d → 0d | 22 → 28 |  |
| 32 | Build Release | 2021-07-29 → 2021-08-12 (+14d) | 2021-08-03 → 2021-08-17 (+14d) | 18h → 24h |  | 7d → 0d |  |  |
| 33 | Smoke Test Execution | 2021-07-30 → 2021-08-12 (+13d) | 2021-08-24 → 2021-08-13 (-11d) | 70h → 12h |  | 0d → 3d | 29 → 30 | was named Testing; resources Muhammad Naeem [50%] → Muhammad Naeem |
| 36 | Bug Fixing for Business Logic for Invoice Routing |  | 2021-08-13 → 2021-08-17 (+4d) | 30h → 42h |  | 6.67d → 3d |  |  |
| 37 | Bug Fixing Data Search Service |  | 2021-08-02 → 2021-07-29 (-4d) | 40h → 30h |  | 16.33d → 1.67d |  |  |
| 38 | Discussions And Management Activities | 2021-08-03 → 2021-08-18 (+15d) | 2021-08-10 → 2021-08-23 (+13d) | 30h → 24h |  | 7d → 0d | 32 → 32, 37 | resources Faisal Ahmed Farooqui → Faisal Ahmed Farooqui [166.7%] |
| 39 | Build Release | 2021-08-10 → 2021-08-24 (+14d) | 2021-08-13 → 2021-08-26 (+13d) |  |  | 7d → 0d |  | resources Faisal Ahmed Farooqui → Faisal Ahmed Farooqui; Zeeshan Akhtar |
| 40 | **Version 2.2.0** | 2021-08-24 → 2021-07-29 (-26d) | 2021-09-14 → 2021-08-30 (-15d) | 15.33d → 22.33d |  |  | 9 → none |  |
| 41 | **Data Analysis** | 2021-08-24 → 2021-07-29 (-26d) | 2021-09-06 → 2021-08-12 (-25d) | 9.33d → 10d |  | 0d → 5.67d | 37 → none |  |
| 42 | Gathering Data from DSS | 2021-08-24 → 2021-07-29 (-26d) | 2021-08-27 → 2021-08-03 (-24d) | 16h → 18h |  | 0d → 1.67d | none → 37 |  |
| 43 | Data Preparation | 2021-08-27 → 2021-08-03 (-24d) | 2021-08-31 → 2021-08-06 (-25d) | 16h → 18h |  | 0d → 1.67d |  |  |
| 44 | Exploratory Data Analysis - Data Visualization | 2021-09-01 → 2021-08-06 (-26d) | 2021-09-06 → 2021-08-12 (-25d) |  |  | 0d → 1.67d |  |  |
| 45 | **R&D on ML Algos** | 2021-09-07 → 2021-08-12 (-26d) | 2021-09-14 → 2021-08-23 (-22d) | 6d → 6.67d |  | 0d → 5.67d |  |  |
| 46 | Decission making on ICR - based on current R&D and Data Analysis in hand | 2021-09-07 → 2021-08-12 (-26d) | 2021-09-07 → 2021-08-13 (-25d) | 4h → 6h |  | 0d → 1.67d |  |  |
| 47 | **R&D on Existing ML Models to consider for our usage** | 2021-09-07 → 2021-08-13 (-25d) | 2021-09-14 → 2021-08-23 (-22d) | 5.33d → 5.67d |  | 0d → 5.67d |  |  |
| 48 | Finding most popular considerable ML Models | 2021-09-07 → 2021-08-13 (-25d) | 2021-09-08 → 2021-08-17 (-22d) | 8h → 12h |  | 0d → 1.67d |  |  |
| 49 | R&D on each seelcted Models (4 Models * 4 hrs each) | 2021-09-09 → 2021-08-17 (-23d) | 2021-09-13 → 2021-08-20 (-24d) |  |  | 0d → 1.67d |  |  |
| 50 | Decission making on Models for further development | 2021-09-13 → 2021-08-20 (-24d) | 2021-09-14 → 2021-08-23 (-22d) | 8h → 6h |  | 0d → 1.67d |  |  |
| 51 | Development on New Features (Need Discussion) | 2021-08-24 → 2021-08-27 (+3d) | 2021-08-31 → 2021-08-30 (-1d) | 30h → 12h |  | 10.33d → 0d | 36 → 36, 39 |  |
