# AP Automation Phase 3

How a schedule from MS Project changed from version to version. A marks actual dates.

## Version 1 (saved 2021-08-03, file APA-Phase3ProjectPlan-4thDraft.mpp)

Note of the change: Reorganize Folder Structure

| ID | WBS | Task | Duration | Start | Finish | Predecessors | Complete | Total float | Constraint |
| --- | --- | --- | --- | --- | --- | --- | --- | --- | --- |
| 1 | 1 | **Development Sprints** | 76d? | 2021-07-05 A | 2021-10-22 |  | 16% | 0d |  |
| 2 | 1.1 | **V2 Related Activities** | 19d | 2021-07-05 A | 2021-08-04 |  | 91% | 0d |  |
| 3 |  | Testing V2 | 12h | 2021-07-08 A | 2021-07-09 A |  | 100% |  | start no earlier than 2021-07-08 |
| 4 |  | Distributed Load Testing R&D | 36h | 2021-07-12 A | 2021-07-19 A | 3 | 100% |  |  |
| 5 |  | Bug Fixing V2 | 18h | 2021-07-05 A | 2021-07-07 A |  | 100% |  |  |
| 6 |  | Load Testing | 36h | 2021-07-26 A | 2021-08-02 A | 4 | 100% |  |  |
| 7 |  | Creation of Media, Production and System Setup Load Tests& Report Creation | 12h | 2021-08-03 | 2021-08-04 | 6 |  | 0d |  |
| 8 |  | R&D on DLT Infrastructure and Implementation | 18h | 2021-07-12 A | 2021-07-14 A | 5 | 100% |  |  |
| 9 | 1.2 | **Development of Version V3 (New Feature Branch)** | 76d? | 2021-07-05 A | 2021-10-22 |  | 10% | 0d |  |
| 10 | 1.2.1 | **Version 2.1.0** | 65d? | 2021-07-05 A | 2021-10-07 |  | 14% | 11d |  |
| 11 | 1.2.1.1 | **Code Refactoring** | 21d | 2021-07-12 A | 2021-08-13 |  | 47% | 0d |  |
| 12 |  | Lookups | 11h | 2021-07-12 A | 2021-07-13 A | 5 | 100% |  |  |
| 13 |  | Enumeration to be moved to Common | 6h | 2021-07-13 A | 2021-07-14 A | 12 | 100% |  |  |
| 14 |  | DTOs to be removed for enumerations type tables | 6h | 2021-07-14 A | 2021-07-15 A | 13 | 100% |  |  |
| 15 |  | API calls to be refactored in Javascript | 12h | 2021-07-15 A | 2021-07-19 A | 14 | 100% |  |  |
| 16 |  | JavaScript component reorganization and restructuring | 28h | 2021-07-26 A | 2021-07-30 | 15 | 64% | 0d |  |
| 17 |  | Polymorphism to be implemented for file saving mechanism | 10h | 2021-08-02 | 2021-08-03 | 16 |  | 0d |  |
| 18 |  | lambda functions for common routines | 8h | 2021-08-03 | 2021-08-05 | 17 |  | 0d |  |
| 19 |  | login related refactoring | 17h | 2021-08-06 | 2021-08-10 | 18 |  | 0d |  |
| 20 |  | Distributed Transaction Management | 14h | 2021-08-10 | 2021-08-13 | 19 |  | 0d |  |
| 21 |  | Deployment Data Search Service (DSS) | 20h | 2021-07-05 A | 2021-07-07 A |  | 100% |  | start no earlier than 2021-07-05 |
| 22 |  | Performance Improvement of DSS | 20h | 2021-07-08 A | 2021-07-12 A | 21 | 100% |  |  |
| 23 |  | DSS Requirement Analysis for ML Data Requirement | 24h | 2021-07-14 A | 2021-07-26 A | 8 | 100% |  |  |
| 24 |  | DLT Infrastructure Deployment | 24h | 2021-07-27 A | 2021-07-30 A | 23 | 100% |  |  |
| 25 |  | Integration with APA | 20h | 2021-07-13 A | 2021-07-16 A | 22 | 100% |  |  |
| 26 |  | Requirement Understanding | 18h | 2021-08-05 | 2021-08-09 | 7 |  | 0d |  |
| 27 |  | ModelScanner Lambda Updates | 12h | 2021-08-02 | 2021-08-03 | 24 |  | 2d |  |
| 28 |  | DSS Integration Logic in APA | 24h | 2021-08-04 | 2021-08-09 | 27 |  | 2d |  |
| 29 | 1.2.1.10 | **Business Logic for Invoice Routing** | 8d | 2021-08-16 | 2021-08-25 |  |  | 0d |  |
| 30 |  | SP creation | 12h | 2021-08-16 | 2021-08-17 | 11 |  | 0d |  |
| 31 |  | Business Logic and Decission making for invoice routing | 24h | 2021-08-18 | 2021-08-23 | 30 |  | 0d |  |
| 32 |  | UI chnages (if any) - Dashboard for descripent invoices | 12h | 2021-08-24 | 2021-08-25 | 31 |  | 0d |  |
| 33 |  | ERD and data storage design for ML | 30h | 2021-07-19 | 2021-07-29 | 25 |  | 1d |  |
| 34 |  | R&D On ML Models and Existing researches on similar problems | 60h | 2021-08-03 | 2021-08-16 | 33 |  | 1d |  |
| 35 |  | Test Plan Creation | 24h | 2021-08-10 | 2021-08-13 | 26, 25 |  | 0d |  |
| 36 |  | Test Case Creation | 12h | 2021-08-16 | 2021-08-17 | 35 |  | 0d |  |
| 37 |  | Detailed Test Case Writing | 18h | 2021-08-18 | 2021-08-20 | 36 |  | 0d |  |
| 38 |  | Discussions And Management Activities for Development & QA | 18h | 2021-08-10 | 2021-08-12 | 28 |  | 2d |  |
| 39 |  | Build Release | 24h | 2021-08-13 | 2021-08-18 | 38 |  | 2d |  |
| 40 |  | Smoke Test Execution | 12h | 2021-08-23 | 2021-08-24 | 37 |  | 0d |  |
| 41 |  | Sanity Test Execution | 18h | 2021-08-25 | 2021-08-27 | 40 |  | 0d |  |
| 42 |  | Functional Test Execution | 36h | 2021-08-30 | 2021-09-06 | 41 |  | 0d |  |
| 43 |  | Bug Fixing for Business Logic for Invoice Routing | 24h | 2021-08-26 | 2021-08-31 | 29 |  | 0d |  |
| 44 |  | Bug Fixing Data Search Service | 24h | 2021-08-17 | 2021-08-20 | 34 |  | 1d |  |
| 45 |  | Bug Fixing Related Discussions And Management Activities | 24h | 2021-08-19 | 2021-08-24 | 39 |  | 2d |  |
| 46 |  | Results and Data Analysis of DSS for ML Models | 24h | 2021-08-25 | 2021-08-30 | 45 |  | 2d |  |
| 47 |  | Development Finalization | 24h | 2021-09-01 | 2021-09-06 | 43 |  | 0d |  |
| 48 |  | Build Release | 6h? | 2021-09-07 | 2021-09-07 | 47 |  | 33d |  |
| 49 | 1.2.1.27 | **New Features on Core APA Version 2.1.0** | 28d? | 2021-08-31 | 2021-10-07 |  |  | 2d |  |
| 50 | 1.2.1.27.1 | **AP Cash Information Integration** | 17d? | 2021-08-31 | 2021-09-22 |  |  | 2d |  |
| 51 |  | Requirement Analysis | 18h | 2021-08-31 | 2021-09-02 | 46 |  | 2d |  |
| 52 |  | Analysis on Design related Change | 12h | 2021-09-07 | 2021-09-08 | 47 |  | 0d |  |
| 53 |  | Requirement Understanding | 12h | 2021-09-07 | 2021-09-08 | 42 |  | 0d |  |
| 54 |  | ERD Updates | 12h | 2021-09-09 | 2021-09-10 | 52 |  | 0d |  |
| 55 |  | Changes in Data Sync Functionality | 12h | 2021-09-13 | 2021-09-14 | 54 |  | 0d |  |
| 56 |  | Test Plan Creation | 12h | 2021-09-09 | 2021-09-10 | 53 |  | 0d |  |
| 57 |  | Test Case Creation | 18h | 2021-09-13 | 2021-09-15 | 56 |  | 0d |  |
| 58 |  | Design Changes And Testing Plan | 24h | 2021-09-03 | 2021-09-08 | 51 |  | 2d |  |
| 59 |  | SP Updates | 12h | 2021-09-15 | 2021-09-16 | 55 |  | 0d |  |
| 60 |  | UI Updates | 18h | 2021-09-17 | 2021-09-21 | 59 |  | 0d |  |
| 61 |  | Business Logic Implementation | 24h | 2021-09-09 | 2021-09-14 | 58 |  | 2d |  |
| 62 |  | Detailed Functional Tests Writing | 24h | 2021-09-16 | 2021-09-21 | 57 |  | 0d |  |
| 63 |  | Build Release | 6h? | 2021-09-22 | 2021-09-22 | 60, 61, 62 |  | 22d |  |
| 64 | 1.2.1.27.2 | **AP Invoice Model testing** | 12d | 2021-09-15 | 2021-09-30 |  |  | 0d |  |
| 65 |  | Requirement Analysis | 18h | 2021-09-15 | 2021-09-17 | 61 |  | 2d |  |
| 66 |  | Analysis on Design Change | 12h | 2021-09-22 | 2021-09-23 | 60 |  | 0d |  |
| 67 |  | Requirement Understanding | 12h | 2021-09-22 | 2021-09-23 | 62 |  | 0d |  |
| 68 |  | UI Changes | 30h | 2021-09-24 | 2021-09-30 | 66 |  | 0d |  |
| 69 |  | Business Logic Implementation | 30h | 2021-09-20 | 2021-09-24 | 65 |  | 2d |  |
| 70 |  | Test Case Creation | 30h | 2021-09-24 | 2021-09-30 | 67 |  | 0d |  |

| ID | WBS | Task | Duration | Start | Finish | Predecessors | Total float |
| --- | --- | --- | --- | --- | --- | --- | --- |
| 71 |  | Build Release | 6h? | 2021-10-01 | 2021-10-01 | 64 | 15d |
| 72 |  | Bug Fixing of Cash Info | 18h | 2021-10-01 | 2021-10-05 | 68 | 0d |
| 73 |  | Bug Fixing Model Testing | 24h | 2021-09-27 | 2021-09-30 | 69 | 2d |
| 74 |  | Test Execution | 24h | 2021-10-01 | 2021-10-06 | 70 | 0d |
| 75 |  | Build Release (Final for Ver 2.1.0) | 6h? | 2021-10-07 | 2021-10-07 | 72, 74 | 11d |
| 76 | 1.2.2 | **Version 2.2.0** | 45d? | 2021-08-23 | 2021-10-22 |  | 0d |
| 77 | 1.2.2.1 | **Data Analysis** | 10d | 2021-08-23 | 2021-09-03 |  | 1d |
| 78 |  | Gathering Data from DSS | 18h | 2021-08-23 | 2021-08-25 | 44 | 1d |
| 79 |  | Data Preparation | 18h | 2021-08-26 | 2021-08-30 | 78 | 1d |
| 80 |  | Exploratory Data Analysis - Data Visualization | 24h | 2021-08-31 | 2021-09-03 | 79 | 1d |
| 81 | 1.2.2.2 | **R&D on ML Algos** | 9d | 2021-09-06 | 2021-09-16 | 77 | 1d |
| 82 |  | Decission making on ICR - based on current R&D and Data Analysis in hand | 12h | 2021-09-06 | 2021-09-07 |  | 1d |
| 83 | 1.2.2.2.2 | **R&D on Existing ML Models to consider for our usage** | 7d | 2021-09-08 | 2021-09-16 | 82 | 1d |
| 84 |  | Finding most popular considerable ML Models | 12h | 2021-09-08 | 2021-09-09 |  | 1d |
| 85 |  | R&D on each seelcted Models (4 Models * 4 hrs each) | 18h | 2021-09-10 | 2021-09-14 | 84 | 1d |
| 86 |  | Decission making on Models for further development | 12h | 2021-09-15 | 2021-09-16 | 85 | 1d |
| 87 |  | Model Architecture Finalization & Creation | 30h | 2021-09-17 | 2021-09-23 | 81 | 1d |
| 88 |  | Model Training | 30h | 2021-09-24 | 2021-09-30 | 87 | 1d |
| 89 |  | Model Testing & Retraining | 30h | 2021-10-01 | 2021-10-07 | 88 | 1d |
| 90 |  | Requirement Understanding | 18h | 2021-10-07 | 2021-10-11 | 74 | 0d |
| 91 |  | Analysis on APA Integration with ML Model Service | 24h | 2021-10-01 | 2021-10-06 | 73 | 2d |
| 92 |  | ML results utilization & Integration Logic Implementation | 18h | 2021-10-06 | 2021-10-08 | 72 | 0d |
| 93 |  | Business Logic Implementation | 30h | 2021-10-07 | 2021-10-13 | 91 | 2d |
| 94 |  | Model Deployment | 24h | 2021-10-08 | 2021-10-13 | 89 | 1d |
| 95 |  | Test Case Creation | 30h | 2021-10-12 | 2021-10-18 | 90 | 0d |
| 96 |  | UI Changes | 30h | 2021-10-11 | 2021-10-15 | 92 | 0d |
| 97 |  | First Build Release | 6h? | 2021-10-18 | 2021-10-18 | 93, 96 | 4d |
| 98 |  | Test Execution | 24h | 2021-10-19 | 2021-10-22 | 95 | 0d |
| 99 |  | Bug Fixing at APA side | 24h | 2021-10-18 | 2021-10-21 | 96 | 0d |
| 100 |  | Discussions on Bugs and ML Results | 24h | 2021-10-14 | 2021-10-19 | 93 | 2d |
| 101 |  | Bug Fixing on ML Model and Retraining | 30h | 2021-10-14 | 2021-10-20 | 94 | 1d |
| 102 |  | Build Release | 6h? | 2021-10-22 | 2021-10-22 | 99, 100, 101 | 0d |

## Version 2 (saved 2021-08-20, file APA-Phase3ProjectPlan-6thDraft.mpp)

Note of the change: Merge branch 'main' of https://github.com/tsfszd/docs

Last finish 2021-10-22 → 2021-11-11 (+20d). Complete tasks 14 → 17.

Added:

| ID | Task | Duration | Start | Finish | Predecessors | Resources |
| --- | --- | --- | --- | --- | --- | --- |
| 9 | Load and Stress testing of ScannerFunction | 18h | 2021-08-11 | 2021-08-13 | 7 | Muhammad Naeem |
| 10 | Result Analysis of Load and Stress testing of scanner function | 12h | 2021-08-16 | 2021-08-17 | 29, 9 | Faisal Ahmed Farooqui |
| 29 | Analysis on Data Generation Strategies | 60h | 2021-08-02 A | 2021-08-13 | 26, 28 | Faisal Ahmed Farooqui; Shoaib Alauddin |
| 30 | Simulation of Data Generation for dession making | 12h | 2021-08-16 | 2021-08-17 | 29 | Shoaib Alauddin |
| 31 | Data Preparation and Data Analysis | 36h | 2021-08-18 | 2021-08-25 | 30 | Shoaib Alauddin |

Changed:

| ID | Task | Start | Finish | Duration | Complete | Total float | Predecessors |
| --- | --- | --- | --- | --- | --- | --- | --- |
| 1 | **Development Sprints** |  | 2021-10-22 → 2021-11-11 (+20d) | 76d? → 88d? | 16% → 19% |  |  |
| 2 | **V2 Related Activities** |  | 2021-08-04 → 2021-08-17 (+13d) | 19d → 28d | 91% → 84% | 0d → 2d |  |
| 7 | Creation of Media, Production and System Setup Load Tests& Report Creation | 2021-08-03 A | 2021-08-04 → 2021-08-10 A (+6d) | 12h → 36h | 0% → 100% | 0d → none |  |
| 11 | **Development of Version V3 (New Feature Branch)** |  | 2021-10-22 → 2021-11-11 (+20d) | 76d? → 88d? | 10% → 12% |  |  |
| 12 | **Version 2.1.0** |  | 2021-10-07 → 2021-10-18 (+11d) | 65d? → 70d? | 14% → 16% | 11d → 18d |  |
| 13 | **Code Refactoring** |  |  |  | 47% → 63% | 0d → 8d |  |
| 18 | JavaScript component reorganization and restructuring |  | 2021-07-30 A |  | 64% → 100% | 0d → none |  |
| 20 | lambda functions for common routines | 2021-08-03 A | 2021-08-05 A |  | 0% → 100% | 0d → none |  |
| 32 | Requirement Understanding | 2021-08-05 → 2021-08-16 (+11d) | 2021-08-09 → 2021-08-18 (+9d) |  |  | 0d → 3d | 7 → 9 |
| 33 | ModelScanner Lambda Updates | 2021-08-02 → 2021-08-18 (+16d) | 2021-08-03 → 2021-08-19 (+16d) |  |  |  | 26 → 10 |
| 34 | DSS Integration Logic in APA | 2021-08-04 → 2021-08-20 (+16d) | 2021-08-09 → 2021-08-25 (+16d) |  |  | 2d → 4d |  |
| 35 | **Business Logic for Invoice Routing** |  | 2021-08-25 → 2021-08-31 (+6d) | 8d → 10d |  | 0d → 8d |  |
| 36 | SP creation |  | 2021-08-17 → 2021-08-19 (+2d) | 12h → 24h |  | 0d → 6d |  |
| 37 | Business Logic and Decission making for invoice routing | 2021-08-18 → 2021-08-20 (+2d) | 2021-08-23 → 2021-08-25 (+2d) |  |  | 0d → 6d |  |
| 38 | UI chnages (if any) - Dashboard for descripent invoices | 2021-08-24 → 2021-08-26 (+2d) | 2021-08-25 → 2021-08-31 (+6d) | 12h → 24h |  | 0d → 6d |  |
| 39 | R&D On ML Models and Existing researches on similar problems | 2021-08-03 → 2021-08-26 (+23d) | 2021-08-16 → 2021-09-06 (+21d) | 60h → 48h |  | 1d → 0d | 28 → 31 |
| 40 | Test Plan Creation | 2021-08-10 → 2021-08-19 (+9d) | 2021-08-13 → 2021-08-24 (+11d) |  |  | 0d → 3d |  |
| 41 | Test Case Creation | 2021-08-16 → 2021-08-25 (+9d) | 2021-08-17 → 2021-08-26 (+9d) |  |  | 0d → 3d |  |
| 42 | Detailed Test Case Writing | 2021-08-18 → 2021-08-27 (+9d) | 2021-08-20 → 2021-08-31 (+11d) |  |  | 0d → 3d |  |
| 43 | Discussions And Management Activities for Development & QA | 2021-08-10 → 2021-08-26 (+16d) | 2021-08-12 → 2021-08-30 (+18d) |  |  | 2d → 4d |  |
| 44 | Build Release | 2021-08-13 → 2021-08-31 (+18d) | 2021-08-18 → 2021-09-03 (+16d) |  |  | 2d → 4d |  |
| 45 | Smoke Test Execution | 2021-08-23 → 2021-09-01 (+9d) | 2021-08-24 → 2021-09-02 (+9d) |  |  | 0d → 3d |  |
| 46 | Sanity Test Execution | 2021-08-25 → 2021-09-03 (+9d) | 2021-08-27 → 2021-09-07 (+11d) |  |  | 0d → 3d |  |
| 47 | Functional Test Execution | 2021-08-30 → 2021-09-08 (+9d) | 2021-09-06 → 2021-09-15 (+9d) |  |  | 0d → 3d |  |
| 48 | Bug Fixing for Business Logic for Invoice Routing | 2021-08-26 → 2021-09-01 (+6d) | 2021-08-31 → 2021-09-06 (+6d) |  |  | 0d → 6d |  |
| 49 | Bug Fixing Data Search Service | 2021-08-17 → 2021-09-07 (+21d) | 2021-08-20 → 2021-09-10 (+21d) |  |  | 1d → 0d |  |
| 50 | Bug Fixing Related Discussions And Management Activities | 2021-08-19 → 2021-09-06 (+18d) | 2021-08-24 → 2021-09-09 (+16d) |  |  | 2d → 4d |  |
| 51 | Results and Data Analysis of DSS for ML Models | 2021-08-25 → 2021-09-10 (+16d) | 2021-08-30 → 2021-09-15 (+16d) |  |  | 2d → 4d |  |
| 52 | Development Finalization | 2021-09-01 → 2021-09-07 (+6d) | 2021-09-06 → 2021-09-10 (+4d) |  |  | 0d → 6d |  |
| 53 | Build Release | 2021-09-07 → 2021-09-13 (+6d) | 2021-09-07 → 2021-09-13 (+6d) |  |  | 33d → 39d |  |
| 54 | **New Features on Core APA Version 2.1.0** | 2021-08-31 → 2021-09-13 (+13d) | 2021-10-07 → 2021-10-18 (+11d) | 28d? → 26d? |  | 2d → 7d |  |
| 55 | **AP Cash Information Integration** | 2021-08-31 → 2021-09-13 (+13d) | 2021-09-22 → 2021-10-01 (+9d) | 17d? → 15d? |  | 2d → 7d |  |
| 56 | Requirement Analysis | 2021-08-31 → 2021-09-16 (+16d) | 2021-09-02 → 2021-09-20 (+18d) |  |  | 2d → 4d |  |
| 57 | Analysis on Design related Change | 2021-09-07 → 2021-09-13 (+6d) | 2021-09-08 → 2021-09-14 (+6d) |  |  | 0d → 6d |  |
| 58 | Requirement Understanding | 2021-09-07 → 2021-09-16 (+9d) | 2021-09-08 → 2021-09-17 (+9d) |  |  | 0d → 3d |  |
| 59 | ERD Updates | 2021-09-09 → 2021-09-15 (+6d) | 2021-09-10 → 2021-09-16 (+6d) |  |  | 0d → 6d |  |
| 60 | Changes in Data Sync Functionality | 2021-09-13 → 2021-09-17 (+4d) | 2021-09-14 → 2021-09-20 (+6d) |  |  | 0d → 6d |  |
| 61 | Test Plan Creation | 2021-09-09 → 2021-09-20 (+11d) | 2021-09-10 → 2021-09-21 (+11d) |  |  | 0d → 3d |  |
| 62 | Test Case Creation | 2021-09-13 → 2021-09-22 (+9d) | 2021-09-15 → 2021-09-24 (+9d) |  |  | 0d → 3d |  |
| 63 | Design Changes And Testing Plan | 2021-09-03 → 2021-09-21 (+18d) | 2021-09-08 → 2021-09-24 (+16d) |  |  | 2d → 4d |  |
| 64 | SP Updates | 2021-09-15 → 2021-09-21 (+6d) | 2021-09-16 → 2021-09-22 (+6d) |  |  | 0d → 6d |  |
| 65 | UI Updates | 2021-09-17 → 2021-09-23 (+6d) | 2021-09-21 → 2021-09-27 (+6d) |  |  | 0d → 6d |  |
| 66 | Business Logic Implementation | 2021-09-09 → 2021-09-27 (+18d) | 2021-09-14 → 2021-09-30 (+16d) |  |  | 2d → 4d |  |
| 67 | Detailed Functional Tests Writing | 2021-09-16 → 2021-09-27 (+11d) | 2021-09-21 → 2021-09-30 (+9d) |  |  | 0d → 3d |  |
| 68 | Build Release | 2021-09-22 → 2021-10-01 (+9d) | 2021-09-22 → 2021-10-01 (+9d) |  |  | 22d → 25d |  |
| 69 | **AP Invoice Model testing** | 2021-09-15 → 2021-09-28 (+13d) | 2021-09-30 → 2021-10-12 (+12d) | 12d → 11d |  | 0d → 6d |  |
| 70 | Requirement Analysis | 2021-09-15 → 2021-10-01 (+16d) | 2021-09-17 → 2021-10-05 (+18d) |  |  | 2d → 4d |  |
| 71 | Analysis on Design Change | 2021-09-22 → 2021-09-28 (+6d) | 2021-09-23 → 2021-09-29 (+6d) |  |  | 0d → 6d |  |
| 72 | Requirement Understanding | 2021-09-22 → 2021-10-01 (+9d) | 2021-09-23 → 2021-10-04 (+11d) |  |  | 0d → 3d |  |
| 73 | UI Changes | 2021-09-24 → 2021-09-30 (+6d) | 2021-09-30 → 2021-10-06 (+6d) |  |  | 0d → 6d |  |
| 74 | Business Logic Implementation | 2021-09-20 → 2021-10-06 (+16d) | 2021-09-24 → 2021-10-12 (+18d) |  |  | 2d → 4d |  |
| 75 | Test Case Creation | 2021-09-24 → 2021-10-05 (+11d) | 2021-09-30 → 2021-10-11 (+11d) |  |  | 0d → 3d |  |
| 76 | Build Release | 2021-10-01 → 2021-10-13 (+12d) | 2021-10-01 → 2021-10-13 (+12d) |  |  | 15d → 17d |  |
| 77 | Bug Fixing of Cash Info | 2021-10-01 → 2021-10-07 (+6d) | 2021-10-05 → 2021-10-11 (+6d) |  |  | 0d → 6d |  |
| 78 | Bug Fixing Model Testing | 2021-09-27 → 2021-10-13 (+16d) | 2021-09-30 → 2021-10-18 (+18d) |  |  | 2d → 4d |  |
| 79 | Test Execution | 2021-10-01 → 2021-10-12 (+11d) | 2021-10-06 → 2021-10-15 (+9d) |  |  | 0d → 3d |  |
| 80 | Build Release (Final for Ver 2.1.0) | 2021-10-07 → 2021-10-18 (+11d) | 2021-10-07 → 2021-10-18 (+11d) |  |  | 11d → 14d |  |
| 81 | **Version 2.2.0** | 2021-08-23 → 2021-09-13 (+21d) | 2021-10-22 → 2021-11-11 (+20d) | 45d? → 44d? |  |  |  |
| 82 | **Data Analysis** | 2021-08-23 → 2021-09-13 (+21d) | 2021-09-03 → 2021-09-24 (+21d) |  |  | 1d → 0d |  |
| 83 | Gathering Data from DSS | 2021-08-23 → 2021-09-13 (+21d) | 2021-08-25 → 2021-09-15 (+21d) |  |  | 1d → 0d |  |
| 84 | Data Preparation | 2021-08-26 → 2021-09-16 (+21d) | 2021-08-30 → 2021-09-20 (+21d) |  |  | 1d → 0d |  |
| 85 | Exploratory Data Analysis - Data Visualization | 2021-08-31 → 2021-09-21 (+21d) | 2021-09-03 → 2021-09-24 (+21d) |  |  | 1d → 0d |  |
| 86 | **R&D on ML Algos** | 2021-09-06 → 2021-09-27 (+21d) | 2021-09-16 → 2021-10-07 (+21d) |  |  | 1d → 0d |  |
| 87 | Decission making on ICR - based on current R&D and Data Analysis in hand | 2021-09-06 → 2021-09-27 (+21d) | 2021-09-07 → 2021-09-28 (+21d) |  |  | 1d → 0d |  |
| 88 | **R&D on Existing ML Models to consider for our usage** | 2021-09-08 → 2021-09-29 (+21d) | 2021-09-16 → 2021-10-07 (+21d) |  |  | 1d → 0d |  |
| 89 | Finding most popular considerable ML Models | 2021-09-08 → 2021-09-29 (+21d) | 2021-09-09 → 2021-09-30 (+21d) |  |  | 1d → 0d |  |
| 90 | R&D on each seelcted Models (4 Models * 4 hrs each) | 2021-09-10 → 2021-10-01 (+21d) | 2021-09-14 → 2021-10-05 (+21d) |  |  | 1d → 0d |  |
| 91 | Decission making on Models for further development | 2021-09-15 → 2021-10-06 (+21d) | 2021-09-16 → 2021-10-07 (+21d) |  |  | 1d → 0d |  |
| 92 | Model Architecture Finalization & Creation | 2021-09-17 → 2021-10-08 (+21d) | 2021-09-23 → 2021-10-14 (+21d) |  |  | 1d → 0d |  |
| 93 | Model Training | 2021-09-24 → 2021-10-15 (+21d) | 2021-09-30 → 2021-10-21 (+21d) |  |  | 1d → 0d |  |

| ID | Task | Start | Finish | Total float | Other |
| --- | --- | --- | --- | --- | --- |
| 94 | Model Testing & Retraining | 2021-10-01 → 2021-10-22 (+21d) | 2021-10-07 → 2021-10-28 (+21d) | 1d → 0d |  |
| 95 | Requirement Understanding | 2021-10-07 → 2021-10-18 (+11d) | 2021-10-11 → 2021-10-20 (+9d) | 0d → 3d |  |
| 96 | Analysis on APA Integration with ML Model Service | 2021-10-01 → 2021-10-19 (+18d) | 2021-10-06 → 2021-10-22 (+16d) | 2d → 4d |  |
| 97 | ML results utilization & Integration Logic Implementation | 2021-10-06 → 2021-10-12 (+6d) | 2021-10-08 → 2021-10-14 (+6d) | 0d → 6d |  |
| 98 | Business Logic Implementation | 2021-10-07 → 2021-10-25 (+18d) | 2021-10-13 → 2021-10-29 (+16d) | 2d → 4d |  |
| 99 | Model Deployment | 2021-10-08 → 2021-10-29 (+21d) | 2021-10-13 → 2021-11-03 (+21d) | 1d → 0d |  |
| 100 | Test Case Creation | 2021-10-12 → 2021-10-21 (+9d) | 2021-10-18 → 2021-10-27 (+9d) | 0d → 3d |  |
| 101 | UI Changes | 2021-10-11 → 2021-10-15 (+4d) | 2021-10-15 → 2021-10-21 (+6d) | 0d → 6d |  |
| 102 | First Build Release | 2021-10-18 → 2021-11-01 (+14d) | 2021-10-18 → 2021-11-01 (+14d) |  |  |
| 103 | Test Execution | 2021-10-19 → 2021-10-28 (+9d) | 2021-10-22 → 2021-11-02 (+11d) | 0d → 3d |  |
| 104 | Bug Fixing at APA side | 2021-10-18 → 2021-10-22 (+4d) | 2021-10-21 → 2021-10-27 (+6d) | 0d → 6d |  |
| 105 | Discussions on Bugs and ML Results | 2021-10-14 → 2021-11-01 (+18d) | 2021-10-19 → 2021-11-04 (+16d) | 2d → 4d |  |
| 106 | Bug Fixing on ML Model and Retraining | 2021-10-14 → 2021-11-04 (+21d) | 2021-10-20 → 2021-11-10 (+21d) | 1d → 0d |  |
| 107 | Build Release | 2021-10-22 → 2021-11-11 (+20d) | 2021-10-22 → 2021-11-11 (+20d) |  | constraint none → finish no earlier than 2021-11-05 |

## Version 3 (saved 2021-08-23, file APA-Phase3ProjectPlan-7thDraft.mpp)

Note of the change: Merge branch 'main' of https://github.com/tsfszd/docs

Last finish 2021-11-11 → 2021-11-15 (+4d). Complete tasks 17 → 22.

Changed:

| ID | Task | Start | Finish | Duration | Complete | Total float |
| --- | --- | --- | --- | --- | --- | --- |
| 1 | **Development Sprints** |  | 2021-11-11 → 2021-11-15 (+4d) | 88d? → 90d? | 19% → 24% |  |
| 2 | **V2 Related Activities** |  | 2021-08-17 A |  | 84% → 100% | 2d → none |
| 9 | Load and Stress testing of ScannerFunction | 2021-08-11 A | 2021-08-13 A |  | 0% → 100% | 2d → none |
| 10 | Result Analysis of Load and Stress testing of scanner function | 2021-08-16 A | 2021-08-17 A |  | 0% → 100% | 2d → none |
| 11 | **Development of Version V3 (New Feature Branch)** |  | 2021-11-11 → 2021-11-15 (+4d) | 88d? → 90d? | 12% → 16% |  |
| 12 | **Version 2.1.0** |  | 2021-10-18 → 2021-10-20 (+2d) | 70d? → 72d? | 16% → 22% |  |
| 29 | Analysis on Data Generation Strategies |  | 2021-08-13 A |  | 40% → 100% | 0d → none |
| 30 | Simulation of Data Generation for dession making | 2021-08-16 A | 2021-08-17 A |  | 0% → 100% | 0d → none |
| 31 | Data Preparation and Data Analysis | 2021-08-18 → 2021-08-20 (+2d) | 2021-08-25 → 2021-08-27 (+2d) |  |  |  |
| 32 | Requirement Understanding | 2021-08-16 A | 2021-08-18 → 2021-08-20 A (+2d) |  | 0% → 100% | 3d → none |
| 33 | ModelScanner Lambda Updates | 2021-08-18 → 2021-08-20 (+2d) | 2021-08-19 → 2021-08-23 (+4d) |  |  | 2d → 4d |
| 34 | DSS Integration Logic in APA | 2021-08-20 → 2021-08-24 (+4d) | 2021-08-25 → 2021-08-27 (+2d) |  |  |  |
| 35 | **Business Logic for Invoice Routing** |  | 2021-08-31 → 2021-09-02 (+2d) | 10d → 12d |  | 8d → 10d |
| 36 | SP creation |  | 2021-08-19 → 2021-08-23 (+4d) |  |  | 6d → 10d |
| 37 | Business Logic and Decission making for invoice routing | 2021-08-20 → 2021-08-24 (+4d) | 2021-08-25 → 2021-08-27 (+2d) |  |  | 6d → 10d |
| 38 | UI chnages (if any) - Dashboard for descripent invoices | 2021-08-26 → 2021-08-30 (+4d) | 2021-08-31 → 2021-09-02 (+2d) |  |  | 6d → 10d |
| 39 | R&D On ML Models and Existing researches on similar problems | 2021-08-26 → 2021-08-30 (+4d) | 2021-09-06 → 2021-09-08 (+2d) |  |  |  |
| 40 | Test Plan Creation | 2021-08-19 → 2021-08-23 (+4d) | 2021-08-24 → 2021-08-26 (+2d) |  |  | 3d → 7d |
| 41 | Test Case Creation | 2021-08-25 → 2021-08-27 (+2d) | 2021-08-26 → 2021-08-30 (+4d) |  |  | 3d → 7d |
| 42 | Detailed Test Case Writing | 2021-08-27 → 2021-08-31 (+4d) | 2021-08-31 → 2021-09-02 (+2d) |  |  | 3d → 7d |
| 43 | Discussions And Management Activities for Development & QA | 2021-08-26 → 2021-08-30 (+4d) | 2021-08-30 → 2021-09-01 (+2d) |  |  |  |
| 44 | Build Release | 2021-08-31 → 2021-09-02 (+2d) | 2021-09-03 → 2021-09-07 (+4d) |  |  |  |
| 45 | Smoke Test Execution | 2021-09-01 → 2021-09-03 (+2d) | 2021-09-02 → 2021-09-06 (+4d) |  |  | 3d → 7d |
| 46 | Sanity Test Execution | 2021-09-03 → 2021-09-07 (+4d) | 2021-09-07 → 2021-09-09 (+2d) |  |  | 3d → 7d |
| 47 | Functional Test Execution | 2021-09-08 → 2021-09-10 (+2d) | 2021-09-15 → 2021-09-17 (+2d) |  |  | 3d → 7d |
| 48 | Bug Fixing for Business Logic for Invoice Routing | 2021-09-01 → 2021-09-03 (+2d) | 2021-09-06 → 2021-09-08 (+2d) |  |  | 6d → 10d |
| 49 | Bug Fixing Data Search Service | 2021-09-07 → 2021-09-09 (+2d) | 2021-09-10 → 2021-09-14 (+4d) |  |  |  |
| 50 | Bug Fixing Related Discussions And Management Activities | 2021-09-06 → 2021-09-08 (+2d) | 2021-09-09 → 2021-09-13 (+4d) |  |  |  |
| 51 | Results and Data Analysis of DSS for ML Models | 2021-09-10 → 2021-09-14 (+4d) | 2021-09-15 → 2021-09-17 (+2d) |  |  |  |
| 52 | Development Finalization | 2021-09-07 → 2021-09-09 (+2d) | 2021-09-10 → 2021-09-14 (+4d) |  |  | 6d → 10d |
| 53 | Build Release | 2021-09-13 → 2021-09-15 (+2d) | 2021-09-13 → 2021-09-15 (+2d) |  |  | 39d → 43d |
| 54 | **New Features on Core APA Version 2.1.0** | 2021-09-13 → 2021-09-15 (+2d) | 2021-10-18 → 2021-10-20 (+2d) |  |  |  |
| 55 | **AP Cash Information Integration** | 2021-09-13 → 2021-09-15 (+2d) | 2021-10-01 → 2021-10-05 (+4d) |  |  |  |
| 56 | Requirement Analysis | 2021-09-16 → 2021-09-20 (+4d) | 2021-09-20 → 2021-09-22 (+2d) |  |  |  |
| 57 | Analysis on Design related Change | 2021-09-13 → 2021-09-15 (+2d) | 2021-09-14 → 2021-09-16 (+2d) |  |  | 6d → 10d |
| 58 | Requirement Understanding | 2021-09-16 → 2021-09-20 (+4d) | 2021-09-17 → 2021-09-21 (+4d) |  |  | 3d → 7d |
| 59 | ERD Updates | 2021-09-15 → 2021-09-17 (+2d) | 2021-09-16 → 2021-09-20 (+4d) |  |  | 6d → 10d |
| 60 | Changes in Data Sync Functionality | 2021-09-17 → 2021-09-21 (+4d) | 2021-09-20 → 2021-09-22 (+2d) |  |  | 6d → 10d |
| 61 | Test Plan Creation | 2021-09-20 → 2021-09-22 (+2d) | 2021-09-21 → 2021-09-23 (+2d) |  |  | 3d → 7d |
| 62 | Test Case Creation | 2021-09-22 → 2021-09-24 (+2d) | 2021-09-24 → 2021-09-28 (+4d) |  |  | 3d → 7d |
| 63 | Design Changes And Testing Plan | 2021-09-21 → 2021-09-23 (+2d) | 2021-09-24 → 2021-09-28 (+4d) |  |  |  |
| 64 | SP Updates | 2021-09-21 → 2021-09-23 (+2d) | 2021-09-22 → 2021-09-24 (+2d) |  |  | 6d → 10d |
| 65 | UI Updates | 2021-09-23 → 2021-09-27 (+4d) | 2021-09-27 → 2021-09-29 (+2d) |  |  | 6d → 10d |
| 66 | Business Logic Implementation | 2021-09-27 → 2021-09-29 (+2d) | 2021-09-30 → 2021-10-04 (+4d) |  |  |  |
| 67 | Detailed Functional Tests Writing | 2021-09-27 → 2021-09-29 (+2d) | 2021-09-30 → 2021-10-04 (+4d) |  |  | 3d → 7d |
| 68 | Build Release | 2021-10-01 → 2021-10-05 (+4d) | 2021-10-01 → 2021-10-05 (+4d) |  |  | 25d → 29d |
| 69 | **AP Invoice Model testing** | 2021-09-28 → 2021-09-30 (+2d) | 2021-10-12 → 2021-10-14 (+2d) |  |  |  |
| 70 | Requirement Analysis | 2021-10-01 → 2021-10-05 (+4d) | 2021-10-05 → 2021-10-07 (+2d) |  |  |  |
| 71 | Analysis on Design Change | 2021-09-28 → 2021-09-30 (+2d) | 2021-09-29 → 2021-10-01 (+2d) |  |  | 6d → 10d |
| 72 | Requirement Understanding | 2021-10-01 → 2021-10-05 (+4d) | 2021-10-04 → 2021-10-06 (+2d) |  |  | 3d → 7d |
| 73 | UI Changes | 2021-09-30 → 2021-10-04 (+4d) | 2021-10-06 → 2021-10-08 (+2d) |  |  | 6d → 10d |
| 74 | Business Logic Implementation | 2021-10-06 → 2021-10-08 (+2d) | 2021-10-12 → 2021-10-14 (+2d) |  |  |  |
| 75 | Test Case Creation | 2021-10-05 → 2021-10-07 (+2d) | 2021-10-11 → 2021-10-13 (+2d) |  |  | 3d → 7d |
| 76 | Build Release | 2021-10-13 → 2021-10-15 (+2d) | 2021-10-13 → 2021-10-15 (+2d) |  |  | 17d → 21d |
| 77 | Bug Fixing of Cash Info | 2021-10-07 → 2021-10-11 (+4d) | 2021-10-11 → 2021-10-13 (+2d) |  |  | 6d → 10d |
| 78 | Bug Fixing Model Testing | 2021-10-13 → 2021-10-15 (+2d) | 2021-10-18 → 2021-10-20 (+2d) |  |  |  |
| 79 | Test Execution | 2021-10-12 → 2021-10-14 (+2d) | 2021-10-15 → 2021-10-19 (+4d) |  |  | 3d → 7d |
| 80 | Build Release (Final for Ver 2.1.0) | 2021-10-18 → 2021-10-20 (+2d) | 2021-10-18 → 2021-10-20 (+2d) |  |  | 14d → 18d |
| 81 | **Version 2.2.0** | 2021-09-13 → 2021-09-15 (+2d) | 2021-11-11 → 2021-11-15 (+4d) |  |  |  |
| 82 | **Data Analysis** | 2021-09-13 → 2021-09-15 (+2d) | 2021-09-24 → 2021-09-28 (+4d) |  |  |  |
| 83 | Gathering Data from DSS | 2021-09-13 → 2021-09-15 (+2d) | 2021-09-15 → 2021-09-17 (+2d) |  |  |  |
| 84 | Data Preparation | 2021-09-16 → 2021-09-20 (+4d) | 2021-09-20 → 2021-09-22 (+2d) |  |  |  |
| 85 | Exploratory Data Analysis - Data Visualization | 2021-09-21 → 2021-09-23 (+2d) | 2021-09-24 → 2021-09-28 (+4d) |  |  |  |
| 86 | **R&D on ML Algos** | 2021-09-27 → 2021-09-29 (+2d) | 2021-10-07 → 2021-10-11 (+4d) |  |  |  |
| 87 | Decission making on ICR - based on current R&D and Data Analysis in hand | 2021-09-27 → 2021-09-29 (+2d) | 2021-09-28 → 2021-09-30 (+2d) |  |  |  |
| 88 | **R&D on Existing ML Models to consider for our usage** | 2021-09-29 → 2021-10-01 (+2d) | 2021-10-07 → 2021-10-11 (+4d) |  |  |  |
| 89 | Finding most popular considerable ML Models | 2021-09-29 → 2021-10-01 (+2d) | 2021-09-30 → 2021-10-04 (+4d) |  |  |  |
| 90 | R&D on each seelcted Models (4 Models * 4 hrs each) | 2021-10-01 → 2021-10-05 (+4d) | 2021-10-05 → 2021-10-07 (+2d) |  |  |  |
| 91 | Decission making on Models for further development | 2021-10-06 → 2021-10-08 (+2d) | 2021-10-07 → 2021-10-11 (+4d) |  |  |  |
| 92 | Model Architecture Finalization & Creation | 2021-10-08 → 2021-10-12 (+4d) | 2021-10-14 → 2021-10-18 (+4d) |  |  |  |

| ID | Task | Start | Finish | Total float |
| --- | --- | --- | --- | --- |
| 93 | Model Training | 2021-10-15 → 2021-10-19 (+4d) | 2021-10-21 → 2021-10-25 (+4d) |  |
| 94 | Model Testing & Retraining | 2021-10-22 → 2021-10-26 (+4d) | 2021-10-28 → 2021-11-01 (+4d) |  |
| 95 | Requirement Understanding | 2021-10-18 → 2021-10-20 (+2d) | 2021-10-20 → 2021-10-22 (+2d) | 3d → 7d |
| 96 | Analysis on APA Integration with ML Model Service | 2021-10-19 → 2021-10-21 (+2d) | 2021-10-22 → 2021-10-26 (+4d) |  |
| 97 | ML results utilization & Integration Logic Implementation | 2021-10-12 → 2021-10-14 (+2d) | 2021-10-14 → 2021-10-18 (+4d) | 6d → 10d |
| 98 | Business Logic Implementation | 2021-10-25 → 2021-10-27 (+2d) | 2021-10-29 → 2021-11-02 (+4d) |  |
| 99 | Model Deployment | 2021-10-29 → 2021-11-02 (+4d) | 2021-11-03 → 2021-11-05 (+2d) |  |
| 100 | Test Case Creation | 2021-10-21 → 2021-10-25 (+4d) | 2021-10-27 → 2021-10-29 (+2d) | 3d → 7d |
| 101 | UI Changes | 2021-10-15 → 2021-10-19 (+4d) | 2021-10-21 → 2021-10-25 (+4d) | 6d → 10d |
| 102 | First Build Release | 2021-11-01 → 2021-11-03 (+2d) | 2021-11-01 → 2021-11-03 (+2d) | 4d → 8d |
| 103 | Test Execution | 2021-10-28 → 2021-11-01 (+4d) | 2021-11-02 → 2021-11-04 (+2d) | 3d → 7d |
| 104 | Bug Fixing at APA side | 2021-10-22 → 2021-10-26 (+4d) | 2021-10-27 → 2021-10-29 (+2d) | 6d → 10d |
| 105 | Discussions on Bugs and ML Results | 2021-11-01 → 2021-11-03 (+2d) | 2021-11-04 → 2021-11-08 (+4d) |  |
| 106 | Bug Fixing on ML Model and Retraining | 2021-11-04 → 2021-11-08 (+4d) | 2021-11-10 → 2021-11-12 (+2d) |  |
| 107 | Build Release | 2021-11-11 → 2021-11-15 (+4d) | 2021-11-11 → 2021-11-15 (+4d) |  |

## Version 4 (saved 2021-09-14, file APA-Phase3ProjectPlan-7thBaseline.mpp)

Note of the change: Merge branch 'main' of https://github.com/tsfszd/docs

Last finish stays 2021-11-15. Complete tasks 22 → 33.

Changed:

| ID | Task | Start | Finish | Complete | Total float | Other |
| --- | --- | --- | --- | --- | --- | --- |
| 1 | **Development Sprints** |  |  | 24% → 36% |  | baseline start none → 2021-07-05; baseline finish none → 2021-11-11 |
| 2 | **V2 Related Activities** |  |  |  |  | baseline start none → 2021-07-05; baseline finish none → 2021-08-17 |
| 3 | Testing V2 |  |  |  |  | baseline start none → 2021-07-08; baseline finish none → 2021-07-09 |
| 4 | Distributed Load Testing R&D |  |  |  |  | baseline start none → 2021-07-12; baseline finish none → 2021-07-19 |
| 5 | Bug Fixing V2 |  |  |  |  | baseline start none → 2021-07-05; baseline finish none → 2021-07-07 |
| 6 | Load Testing |  |  |  |  | baseline start none → 2021-07-26; baseline finish none → 2021-08-02 |
| 7 | Creation of Media, Production and System Setup Load Tests& Report Creation |  |  |  |  | baseline start none → 2021-08-03; baseline finish none → 2021-08-10 |
| 8 | R&D on DLT Infrastructure and Implementation |  |  |  |  | baseline start none → 2021-07-12; baseline finish none → 2021-07-14 |
| 9 | Load and Stress testing of ScannerFunction |  |  |  |  | baseline start none → 2021-08-11; baseline finish none → 2021-08-13 |
| 10 | Result Analysis of Load and Stress testing of scanner function |  |  |  |  | baseline start none → 2021-08-16; baseline finish none → 2021-08-17 |
| 11 | **Development of Version V3 (New Feature Branch)** |  |  | 16% → 29% |  | baseline start none → 2021-07-05; baseline finish none → 2021-11-11 |
| 12 | **Version 2.1.0** |  |  | 22% → 41% |  | baseline start none → 2021-07-05; baseline finish none → 2021-10-18 |
| 13 | **Code Refactoring** |  |  |  | 10d → 64d | baseline start none → 2021-07-12; baseline finish none → 2021-08-13 |
| 14 | Lookups |  |  |  |  | baseline start none → 2021-07-12; baseline finish none → 2021-07-13 |
| 15 | Enumeration to be moved to Common |  |  |  |  | baseline start none → 2021-07-13; baseline finish none → 2021-07-14 |
| 16 | DTOs to be removed for enumerations type tables |  |  |  |  | baseline start none → 2021-07-14; baseline finish none → 2021-07-15 |
| 17 | API calls to be refactored in Javascript |  |  |  |  | baseline start none → 2021-07-15; baseline finish none → 2021-07-19 |
| 18 | JavaScript component reorganization and restructuring |  |  |  |  | baseline start none → 2021-07-26; baseline finish none → 2021-07-30 |
| 19 | Polymorphism to be implemented for file saving mechanism |  |  |  |  | baseline start none → 2021-08-02; baseline finish none → 2021-08-03 |
| 20 | lambda functions for common routines |  |  |  |  | baseline start none → 2021-08-03; baseline finish none → 2021-08-05 |
| 21 | login related refactoring |  |  |  |  | baseline start none → 2021-08-06; baseline finish none → 2021-08-10 |
| 22 | Distributed Transaction Management (R&D Completed - feature not supported for .net) |  |  |  |  | was named Distributed Transaction Management; baseline start none → 2021-08-10; baseline finish none → 2021-08-13 |
| 23 | Deployment Data Search Service (DSS) |  |  |  |  | baseline start none → 2021-07-05; baseline finish none → 2021-07-07 |
| 24 | Performance Improvement of DSS |  |  |  |  | baseline start none → 2021-07-08; baseline finish none → 2021-07-12 |
| 25 | DSS Requirement Analysis for ML Data Requirement |  |  |  |  | baseline start none → 2021-07-14; baseline finish none → 2021-07-26 |
| 26 | DLT Infrastructure Deployment |  |  |  |  | baseline start none → 2021-07-27; baseline finish none → 2021-07-30 |
| 27 | Integration with APA |  |  |  |  | baseline start none → 2021-07-13; baseline finish none → 2021-07-16 |
| 28 | ERD and data storage design for ML |  |  |  | 4d → 75d | baseline start none → 2021-07-19; baseline finish none → 2021-07-29 |
| 29 | Analysis on Data Generation Strategies |  |  |  |  | baseline start none → 2021-08-02; baseline finish none → 2021-08-13 |
| 30 | Simulation of Data Generation for decission making |  |  |  |  | was named Simulation of Data Generation for dession making; baseline start none → 2021-08-16; baseline finish none → 2021-08-17 |
| 31 | Data Preparation, DSS Updation according to new Data Generation Strategies | 2021-08-20 A | 2021-08-27 A | 0% → 100% | 0d → none | was named Data Preparation and Data Analysis; baseline start none → 2021-08-18; baseline finish none → 2021-08-25 |
| 32 | Requirement Understanding |  |  |  |  | baseline start none → 2021-08-16; baseline finish none → 2021-08-18 |
| 33 | ModelScanner Lambda Updates | 2021-08-20 A | 2021-08-23 A | 0% → 100% | 4d → none | baseline start none → 2021-08-18; baseline finish none → 2021-08-19 |
| 34 | DSS Integration Logic in APA | 2021-08-24 A | 2021-08-27 A | 0% → 100% | 4d → none | baseline start none → 2021-08-20; baseline finish none → 2021-08-25 |
| 35 | **Business Logic for Invoice Routing** | 2021-08-16 A | 2021-09-02 A | 0% → 100% | 10d → none | baseline start none → 2021-08-16; baseline finish none → 2021-08-31 |
| 36 | SP creation | 2021-08-16 A | 2021-08-23 A | 0% → 100% | 10d → none | baseline start none → 2021-08-16; baseline finish none → 2021-08-19 |
| 37 | Business Logic and Decission making for invoice routing | 2021-08-24 A | 2021-08-27 A | 0% → 100% | 10d → none | baseline start none → 2021-08-20; baseline finish none → 2021-08-25 |
| 38 | UI chnages (if any) - Dashboard for descripent invoices | 2021-08-30 A | 2021-09-02 A | 0% → 100% | 10d → none | baseline start none → 2021-08-26; baseline finish none → 2021-08-31 |
| 39 | R&D On ML Models and Existing researches on similar problems |  |  |  |  | baseline start none → 2021-08-26; baseline finish none → 2021-09-06 |
| 40 | Test Plan Creation | 2021-08-23 A | 2021-08-26 A | 0% → 100% | 7d → none | baseline start none → 2021-08-19; baseline finish none → 2021-08-24 |
| 41 | Test Case Creation | 2021-08-27 A | 2021-08-30 A | 0% → 100% | 7d → none | baseline start none → 2021-08-25; baseline finish none → 2021-08-26 |
| 42 | Detailed Test Case Writing | 2021-08-31 A | 2021-09-02 A | 0% → 100% | 7d → none | baseline start none → 2021-08-27; baseline finish none → 2021-08-31 |
| 43 | Discussions And Management Activities for Development & QA | 2021-08-30 A | 2021-09-01 A | 0% → 100% | 4d → none | baseline start none → 2021-08-26; baseline finish none → 2021-08-30 |
| 44 | Build Release | 2021-09-02 A | 2021-09-07 A | 0% → 100% | 4d → none | baseline start none → 2021-08-31; baseline finish none → 2021-09-03 |
| 45 | Smoke Test Execution |  |  |  |  | baseline start none → 2021-09-01; baseline finish none → 2021-09-02 |
| 46 | Sanity Test Execution |  |  |  |  | baseline start none → 2021-09-03; baseline finish none → 2021-09-07 |
| 47 | Functional Test Execution |  |  |  |  | baseline start none → 2021-09-08; baseline finish none → 2021-09-15 |
| 48 | Bug Fixing for Business Logic for Invoice Routing |  |  |  |  | baseline start none → 2021-09-01; baseline finish none → 2021-09-06 |
| 49 | Bug Fixing Data Search Service |  |  |  |  | baseline start none → 2021-09-07; baseline finish none → 2021-09-10 |
| 50 | Bug Fixing Related Discussions And Management Activities |  |  |  |  | baseline start none → 2021-09-06; baseline finish none → 2021-09-09 |
| 51 | Results and Data Analysis of DSS for ML Models |  |  |  |  | baseline start none → 2021-09-10; baseline finish none → 2021-09-15 |
| 52 | Development Finalization |  |  |  |  | baseline start none → 2021-09-07; baseline finish none → 2021-09-10 |
| 53 | Build Release |  |  |  |  | baseline start none → 2021-09-13; baseline finish none → 2021-09-13 |
| 54 | **New Features on Core APA Version 2.1.0** |  |  |  |  | baseline start none → 2021-09-13; baseline finish none → 2021-10-18 |
| 55 | **AP Cash Information Integration** |  |  |  |  | baseline start none → 2021-09-13; baseline finish none → 2021-10-01 |
| 56 | Requirement Analysis |  |  |  |  | baseline start none → 2021-09-16; baseline finish none → 2021-09-20 |
| 57 | Analysis on Design related Change |  |  |  |  | baseline start none → 2021-09-13; baseline finish none → 2021-09-14 |
| 58 | Requirement Understanding |  |  |  |  | baseline start none → 2021-09-16; baseline finish none → 2021-09-17 |
| 59 | ERD Updates |  |  |  |  | baseline start none → 2021-09-15; baseline finish none → 2021-09-16 |
| 60 | Changes in Data Sync Functionality |  |  |  |  | baseline start none → 2021-09-17; baseline finish none → 2021-09-20 |
| 61 | Test Plan Creation |  |  |  |  | baseline start none → 2021-09-20; baseline finish none → 2021-09-21 |
| 62 | Test Case Creation |  |  |  |  | baseline start none → 2021-09-22; baseline finish none → 2021-09-24 |
| 63 | Design Changes And Testing Plan |  |  |  |  | baseline start none → 2021-09-21; baseline finish none → 2021-09-24 |
| 64 | SP Updates |  |  |  |  | baseline start none → 2021-09-21; baseline finish none → 2021-09-22 |
| 65 | UI Updates |  |  |  |  | baseline start none → 2021-09-23; baseline finish none → 2021-09-27 |
| 66 | Business Logic Implementation |  |  |  |  | baseline start none → 2021-09-27; baseline finish none → 2021-09-30 |
| 67 | Detailed Functional Tests Writing |  |  |  |  | baseline start none → 2021-09-27; baseline finish none → 2021-09-30 |
| 68 | Build Release |  |  |  |  | baseline start none → 2021-10-01; baseline finish none → 2021-10-01 |
| 69 | **AP Invoice Model testing** |  |  |  |  | baseline start none → 2021-09-28; baseline finish none → 2021-10-12 |
| 70 | Requirement Analysis |  |  |  |  | baseline start none → 2021-10-01; baseline finish none → 2021-10-05 |

| ID | Task | Other |
| --- | --- | --- |
| 71 | Analysis on Design Change | baseline start none → 2021-09-28; baseline finish none → 2021-09-29 |
| 72 | Requirement Understanding | baseline start none → 2021-10-01; baseline finish none → 2021-10-04 |
| 73 | UI Changes | baseline start none → 2021-09-30; baseline finish none → 2021-10-06 |
| 74 | Business Logic Implementation | baseline start none → 2021-10-06; baseline finish none → 2021-10-12 |
| 75 | Test Case Creation | baseline start none → 2021-10-05; baseline finish none → 2021-10-11 |
| 76 | Build Release | baseline start none → 2021-10-13; baseline finish none → 2021-10-13 |
| 77 | Bug Fixing of Cash Info | baseline start none → 2021-10-07; baseline finish none → 2021-10-11 |
| 78 | Bug Fixing Model Testing | baseline start none → 2021-10-13; baseline finish none → 2021-10-18 |
| 79 | Test Execution | baseline start none → 2021-10-12; baseline finish none → 2021-10-15 |
| 80 | Build Release (Final for Ver 2.1.0) | baseline start none → 2021-10-18; baseline finish none → 2021-10-18 |
| 81 | **Version 2.2.0** | baseline start none → 2021-09-13; baseline finish none → 2021-11-11 |
| 82 | **Data Analysis** | baseline start none → 2021-09-13; baseline finish none → 2021-09-24 |
| 83 | Gathering Data from DSS | baseline start none → 2021-09-13; baseline finish none → 2021-09-15 |
| 84 | Data Preparation | baseline start none → 2021-09-16; baseline finish none → 2021-09-20 |
| 85 | Exploratory Data Analysis - Data Visualization | baseline start none → 2021-09-21; baseline finish none → 2021-09-24 |
| 86 | **R&D on ML Algos** | baseline start none → 2021-09-27; baseline finish none → 2021-10-07 |
| 87 | Decission making on ICR - based on current R&D and Data Analysis in hand | baseline start none → 2021-09-27; baseline finish none → 2021-09-28 |
| 88 | **R&D on Existing ML Models to consider for our usage** | baseline start none → 2021-09-29; baseline finish none → 2021-10-07 |
| 89 | Finding most popular considerable ML Models | baseline start none → 2021-09-29; baseline finish none → 2021-09-30 |
| 90 | R&D on each seelcted Models (4 Models * 4 hrs each) | baseline start none → 2021-10-01; baseline finish none → 2021-10-05 |
| 91 | Decission making on Models for further development | baseline start none → 2021-10-06; baseline finish none → 2021-10-07 |
| 92 | Model Architecture Finalization & Creation | baseline start none → 2021-10-08; baseline finish none → 2021-10-14 |
| 93 | Model Training | baseline start none → 2021-10-15; baseline finish none → 2021-10-21 |
| 94 | Model Testing & Retraining | baseline start none → 2021-10-22; baseline finish none → 2021-10-28 |
| 95 | Requirement Understanding | baseline start none → 2021-10-18; baseline finish none → 2021-10-20 |
| 96 | Analysis on APA Integration with ML Model Service | baseline start none → 2021-10-19; baseline finish none → 2021-10-22 |
| 97 | ML results utilization & Integration Logic Implementation | baseline start none → 2021-10-12; baseline finish none → 2021-10-14 |
| 98 | Business Logic Implementation | baseline start none → 2021-10-25; baseline finish none → 2021-10-29 |
| 99 | Model Deployment | baseline start none → 2021-10-29; baseline finish none → 2021-11-03 |
| 100 | Test Case Creation | baseline start none → 2021-10-21; baseline finish none → 2021-10-27 |
| 101 | UI Changes | baseline start none → 2021-10-15; baseline finish none → 2021-10-21 |
| 102 | First Build Release | baseline start none → 2021-11-01; baseline finish none → 2021-11-01 |
| 103 | Test Execution | baseline start none → 2021-10-28; baseline finish none → 2021-11-02 |
| 104 | Bug Fixing at APA side | baseline start none → 2021-10-22; baseline finish none → 2021-10-27 |
| 105 | Discussions on Bugs and ML Results | baseline start none → 2021-11-01; baseline finish none → 2021-11-04 |
| 106 | Bug Fixing on ML Model and Retraining | baseline start none → 2021-11-04; baseline finish none → 2021-11-10 |
| 107 | Build Release | baseline start none → 2021-11-11; baseline finish none → 2021-11-11 |

## Version 5 (saved 2021-09-15, file APA-Phase3ProjectPlan-8th.mpp)

Note of the change: Merge branch 'main' of https://github.com/tsfszd/docs

Last finish stays 2021-11-15.

Added:

| ID | Task | Duration | Start | Finish | Predecessors | Resources |
| --- | --- | --- | --- | --- | --- | --- |
| 53 | Dashboard, Invoice Reposting, Email to Admin for Suggestion, Employee Selection Popup | 42h | 2021-09-09 | 2021-09-17 | 52 | Zeeshan Akhtar |
| 54 | TestCase updation on updated requirements (Task 53) | 12h | 2021-09-20 | 2021-09-21 | 53 | Muhammad Naeem |
| 56 | Testing | 30h | 2021-09-22 | 2021-09-28 | 54 | Muhammad Naeem |
| 57 | Bug fixing | 30h | 2021-09-20 | 2021-09-24 | 53 | Zeeshan Akhtar |
| 58 | Build Release | 6h? | 2021-09-27 | 2021-09-27 | 57, 55 |  |

Changed:

| ID | Task | Start | Finish | Duration | Complete | Total float | Predecessors | Other |
| --- | --- | --- | --- | --- | --- | --- | --- | --- |
| 1 | **Development Sprints** |  |  |  | 36% → 35% |  |  |  |
| 11 | **Development of Version V3 (New Feature Branch)** |  |  |  | 29% → 28% |  |  |  |
| 12 | **Version 2.1.0** |  | 2021-10-20 → 2021-10-29 (+9d) | 72d? → 79d? | 41% → 38% | 18d → 11d |  |  |
| 38 | UI chnages (if any) - Dashboard for discrepant invoices |  |  |  |  |  |  | was named UI chnages (if any) - Dashboard for descripent invoices |
| 52 | Development Finalization | 2021-09-09 → 2021-09-08 (-1d) | 2021-09-14 → 2021-09-08 (-6d) | 24h → 0h |  | 10d → 0d |  |  |
| 55 | Build Release | 2021-09-15 → 2021-09-20 (+5d) | 2021-09-15 → 2021-09-20 (+5d) |  |  | 43d → 39d | 52 → 53, 51 | resources none → Faisal Ahmed Farooqui |
| 59 | **New Features on Core APA Version 2.2.0** | 2021-09-15 → 2021-09-20 (+5d) | 2021-10-20 → 2021-10-29 (+9d) | 26d? → 30d? |  | 7d → 4d |  | was named New Features on Core APA Version 2.1.0 |
| 60 | **AP Cash Information Integration** | 2021-09-15 → 2021-09-20 (+5d) | 2021-10-05 → 2021-10-14 (+9d) | 15d? → 19d? |  | 7d → 4d |  |  |
| 62 | Analysis on Design related Change | 2021-09-15 → 2021-09-27 (+12d) | 2021-09-16 → 2021-09-28 (+12d) |  |  | 10d → 2d | 52 → 57 |  |
| 63 | Requirement Understanding | 2021-09-20 → 2021-09-29 (+9d) | 2021-09-21 → 2021-09-30 (+9d) |  |  | 7d → 0d | 47 → 56 |  |
| 64 | ERD Updates | 2021-09-17 → 2021-09-29 (+12d) | 2021-09-20 → 2021-09-30 (+10d) |  |  | 10d → 2d |  |  |
| 65 | Changes in Data Sync Functionality | 2021-09-21 → 2021-10-01 (+10d) | 2021-09-22 → 2021-10-04 (+12d) |  |  | 10d → 2d |  |  |
| 66 | Test Plan Creation | 2021-09-22 → 2021-10-01 (+9d) | 2021-09-23 → 2021-10-04 (+11d) |  |  | 7d → 0d |  |  |
| 67 | Test Case Creation | 2021-09-24 → 2021-10-05 (+11d) | 2021-09-28 → 2021-10-07 (+9d) |  |  | 7d → 0d |  |  |
| 69 | SP Updates | 2021-09-23 → 2021-10-05 (+12d) | 2021-09-24 → 2021-10-06 (+12d) |  |  | 10d → 2d |  |  |
| 70 | UI Updates | 2021-09-27 → 2021-10-07 (+10d) | 2021-09-29 → 2021-10-11 (+12d) |  |  | 10d → 2d |  |  |
| 72 | Detailed Functional Tests Writing | 2021-09-29 → 2021-10-08 (+9d) | 2021-10-04 → 2021-10-13 (+9d) |  |  | 7d → 0d |  |  |
| 73 | Build Release | 2021-10-05 → 2021-10-14 (+9d) | 2021-10-05 → 2021-10-14 (+9d) |  |  | 29d → 22d |  |  |
| 74 | **AP Invoice Model testing** | 2021-09-30 → 2021-10-05 (+5d) | 2021-10-14 → 2021-10-22 (+8d) | 11d → 14d |  | 6d → 0d |  |  |
| 76 | Analysis on Design Change | 2021-09-30 → 2021-10-12 (+12d) | 2021-10-01 → 2021-10-13 (+12d) |  |  | 10d → 2d |  |  |
| 77 | Requirement Understanding | 2021-10-05 → 2021-10-14 (+9d) | 2021-10-06 → 2021-10-15 (+9d) |  |  | 7d → 0d |  |  |
| 78 | UI Changes | 2021-10-04 → 2021-10-14 (+10d) | 2021-10-08 → 2021-10-20 (+12d) |  |  | 10d → 2d |  |  |
| 80 | Test Case Creation | 2021-10-07 → 2021-10-18 (+11d) | 2021-10-13 → 2021-10-22 (+9d) |  |  | 7d → 0d |  |  |
| 81 | Build Release | 2021-10-15 → 2021-10-25 (+10d) | 2021-10-15 → 2021-10-25 (+10d) |  |  | 21d → 15d |  |  |
| 82 | Bug Fixing of Cash Info | 2021-10-11 → 2021-10-21 (+10d) | 2021-10-13 → 2021-10-25 (+12d) |  |  | 10d → 2d |  |  |
| 84 | Test Execution | 2021-10-14 → 2021-10-25 (+11d) | 2021-10-19 → 2021-10-28 (+9d) |  |  | 7d → 0d |  |  |
| 85 | Build Release (Final for Ver 2.1.0) | 2021-10-20 → 2021-10-29 (+9d) | 2021-10-20 → 2021-10-29 (+9d) |  |  | 18d → 11d |  |  |
| 86 | **Version 3.0.0** |  |  |  |  |  |  | was named Version 2.2.0 |
| 100 | Requirement Understanding | 2021-10-20 → 2021-10-29 (+9d) | 2021-10-22 → 2021-11-02 (+11d) |  |  | 7d → 0d |  |  |
| 102 | ML results utilization & Integration Logic Implementation | 2021-10-14 → 2021-10-26 (+12d) | 2021-10-18 → 2021-10-28 (+10d) |  |  | 10d → 2d |  |  |
| 105 | Test Case Creation | 2021-10-25 → 2021-11-03 (+9d) | 2021-10-29 → 2021-11-09 (+11d) |  |  | 7d → 0d |  |  |
| 106 | UI Changes | 2021-10-19 → 2021-10-29 (+10d) | 2021-10-25 → 2021-11-04 (+10d) |  |  | 10d → 2d |  |  |
| 107 | First Build Release | 2021-11-03 → 2021-11-05 (+2d) | 2021-11-03 → 2021-11-05 (+2d) |  |  | 8d → 6d |  |  |
| 108 | Test Execution | 2021-11-01 → 2021-11-10 (+9d) | 2021-11-04 → 2021-11-15 (+11d) |  |  | 7d → 0d |  |  |
| 109 | Bug Fixing at APA side | 2021-10-26 → 2021-11-05 (+10d) | 2021-10-29 → 2021-11-10 (+12d) |  |  | 10d → 2d |  |  |

## Version 6 (saved 2021-09-17, file APA-Phase3ProjectPlan-7thBaseline - TasksAdded.mpp)

Note of the change: Merge branch 'main' of https://github.com/tsfszd/docs

Last finish stays 2021-11-15.

Changed:

| ID | Task | Start | Complete |
| --- | --- | --- | --- |
| 1 | **Development Sprints** |  | 35% → 36% |
| 11 | **Development of Version V3 (New Feature Branch)** |  | 28% → 29% |
| 12 | **Version 2.1.0** |  | 38% → 40% |
| 45 | Smoke Test Execution | 2021-09-03 A | 0% → 20% |
| 49 | Bug Fixing Data Search Service | 2021-09-09 A | 0% → 20% |
| 53 | Dashboard, Invoice Reposting, Email to Admin for Suggestion, Employee Selection Popup | 2021-09-09 A | 0% → 40% |
