# AP Automation Phase 4

How a schedule from MS Project changed from version to version. A marks actual dates.

## Version 1 (saved 2022-03-10, file APA-Phase4ProjectPlan-1stDraft.mpp)

Note of the change: Reorganize Folder Structure

| ID | WBS | Task | Duration | Start | Finish | Predecessors | Total float |
| --- | --- | --- | --- | --- | --- | --- | --- |
| 1 | 1 | **Version 3.0.2** | 27.67d | 2022-02-01 | 2022-03-14 |  | 8.33d |
| 2 |  | Load Test Execution on Version 3.0.1 | 24h | 2022-02-01 | 2022-02-04 |  | 27d |
| 3 |  | Application Side Logging Implementation to capture User Activity | 24h | 2022-02-01 | 2022-02-04 |  | 31.33d |
| 4 |  | Change Requests V3 | 82h | 2022-02-07 | 2022-02-24 | 3 | 13.33d |
| 5 |  | Bug Fixings V3 | 112h | 2022-02-01 | 2022-02-25 |  | 10.33d |
| 6 |  | Test Execution | 82h | 2022-02-07 | 2022-02-24 | 2 | 11.33d |
| 7 |  | Test Automation Cycle 1 | 30h | 2022-02-24 | 2022-03-03 | 6 | 11.33d |
| 8 |  | Test Automation Cycle 2 | 30h | 2022-03-03 | 2022-03-14 | 7 | 11.33d |
| 9 | 2 | **Version 4.0.1** | 40.67d? | 2022-02-01 | 2022-03-31 |  | 0d |
| 10 |  | Training on AutoML based Frameworks | 24h | 2022-02-01 | 2022-02-04 |  | 0d |
| 11 |  | Results comparisions with different ML-Models (SVM, Different AutoML Frameworks) | 12h | 2022-02-07 | 2022-02-08 | 10 | 0d |
| 12 |  | Model Architecture Finalization & Creation | 12h | 2022-02-09 | 2022-02-10 | 11 | 0d |
| 13 |  | Model Training | 30h | 2022-02-11 | 2022-02-17 | 12 | 0d |
| 14 |  | Infrastructure Creation for ML Integration with APA | 18h | 2022-02-18 | 2022-02-22 | 13 | 0d |
| 15 |  | Model Package Creation | 60h | 2022-02-23 | 2022-03-10 | 14 | 0d |
| 16 |  | Model Deployment | 36h | 2022-03-11 | 2022-03-18 | 15 | 0d |
| 17 |  | Model Deployment Help | 36h | 2022-02-24 | 2022-03-04 | 4 | 8.33d |
| 18 |  | Business Logic Implementation for Invoice Creation based on ML-Model outcome | 24h | 2022-03-04 | 2022-03-14 | 17 | 8.33d |
| 19 |  | Model Testing & Retraining | 24h | 2022-03-21 | 2022-03-24 | 16 | 0d |
| 20 |  | Test Case Creation | 30h | 2022-03-14 | 2022-03-21 | 8 | 11.33d |
| 21 |  | First Build Release | 6h? | 2022-03-14 | 2022-03-15 | 18 | 8.33d |
| 22 |  | Test Execution | 24h | 2022-03-21 | 2022-03-25 | 20 | 11.33d |
| 23 |  | Bug Fixing in BL of ML-Model output utilization side | 24h | 2022-03-15 | 2022-03-21 | 21 | 8.33d |
| 24 |  | Bug Fixing on ML Model and Retraining | 24h | 2022-03-25 | 2022-03-30 | 19 | 0d |
| 25 |  | Build Release | 6h? | 2022-03-21 | 2022-03-22 | 23 | 8.33d |
| 26 |  | Test Execution | 24h | 2022-03-25 | 2022-03-31 | 22 | 11.33d |
| 27 | 3 | **Version 4.0.2** | 33.33d? | 2022-02-25 | 2022-04-15 |  | 0d |
| 28 |  | Files removal from S3 when operation is cancelled | 24h | 2022-02-25 | 2022-03-03 | 5 | 14.33d |
| 29 |  | Stamping Configuration: Front/Back Cover Pages, Existing Page with Page Selection | 18h | 2022-03-03 | 2022-03-10 | 28 | 14.33d |
| 30 |  | DB Side Logging | 24h | 2022-03-10 | 2022-03-16 | 29 | 10.33d |
| 31 | 3.4 | **Code Refactoring** | 12d | 2022-03-16 | 2022-04-01 |  | 10.33d |
| 32 |  | Replacement of Set statement | 18h | 2022-03-16 | 2022-03-21 | 30 | 10.33d |
| 33 |  | Fixing of Javascript dependencies | 18h | 2022-03-21 | 2022-03-24 | 32 | 10.33d |
| 34 |  | Hyperlink Link Fixing to utilize "React Route" for client side navigation | 12h | 2022-03-24 | 2022-03-28 | 33 | 10.33d |
| 35 |  | Creation of separate JS file to API Calls | 24h | 2022-03-28 | 2022-04-01 | 34 | 10.33d |
| 36 |  | Redux implementation for better Data handling/caching on client side | 18h | 2022-03-22 | 2022-03-25 | 25 | 8.33d |
| 37 |  | Login - Utilization of Security Token in place of plain user data | 18h | 2022-03-25 | 2022-03-30 | 36 | 8.33d |
| 38 |  | SSO Fixing for AWS | 18h | 2022-03-30 | 2022-04-04 | 37 | 8.33d |
| 39 |  | Analysis on Optimization of Data Search Service | 24h | 2022-03-31 | 2022-04-05 | 24 | 0d |
| 40 |  | Implementation of Data Search Service Optimization | 24h | 2022-04-06 | 2022-04-11 | 39 | 0d |
| 41 |  | Build Release | 6h? | 2022-04-12 | 2022-04-12 | 40, 38 | 3d |
| 42 |  | Identification of gaps in ML-Model implementations | 24h | 2022-04-12 | 2022-04-15 | 40 | 0d |

## Version 2 (saved 2022-03-11, file APA-Phase4ProjectPlan-2ndDraft.mpp)

Note of the change: Merge branch 'main' of https://github.com/tsfszd/docs

Last finish stays 2022-04-15. Complete tasks 0 → 13.

Changed:

| ID | Task | Start | Finish | Duration | Complete | Total float | Predecessors | Other |
| --- | --- | --- | --- | --- | --- | --- | --- | --- |
| 1 | **Version 3.0.2** | 2022-02-01 A |  |  | 0% → 85% | 8.33d → 11.33d |  |  |
| 2 | Load Test Execution on Version 3.0.1 | 2022-02-01 A | 2022-02-04 A |  | 0% → 100% | 27d → none |  |  |
| 3 | Application Side Logging Implementation to capture User Activity | 2022-02-01 A | 2022-02-04 A |  | 0% → 100% | 31.33d → none |  |  |
| 4 | Change Requests V3 | 2022-02-07 A | 2022-02-24 → 2022-02-28 A (+4d) | 82h → 92h | 0% → 100% | 13.33d → none |  |  |
| 5 | Bug Fixings V3 | 2022-02-01 A | 2022-02-25 A |  | 0% → 100% | 10.33d → none |  |  |
| 6 | Test Execution | 2022-02-07 A | 2022-02-24 A |  | 0% → 100% | 11.33d → none |  |  |
| 9 | **Version 4.0.1** | 2022-02-01 A | 2022-03-31 → 2022-04-07 (+7d) | 40.67d? → 45.33d? | 0% → 38% | 0d → 6.67d |  |  |
| 10 | Training on AutoML based Frameworks | 2022-02-01 A | 2022-02-04 A |  | 0% → 100% | 0d → none |  |  |
| 11 | Results comparisions with different ML-Models (SVM, Different AutoML Frameworks) | 2022-02-07 A | 2022-02-08 A |  | 0% → 100% | 0d → none |  |  |
| 12 | Initial Model Architecture Finalization & Creation | 2022-02-09 A | 2022-02-10 A |  | 0% → 100% | 0d → none |  | was named Model Architecture Finalization & Creation |
| 13 | Model Training | 2022-02-11 A | 2022-02-17 A |  | 0% → 100% | 0d → none |  |  |
| 14 | Infrastructure Creation for ML Integration with APA | 2022-02-18 A | 2022-02-22 A |  | 0% → 100% | 0d → none |  |  |
| 15 | Model Package Creation | 2022-02-23 A | 2022-03-10 A |  | 0% → 100% | 0d → none |  |  |
| 17 | Model Deployment Help | 2022-02-24 → 2022-03-10 (+14d) | 2022-03-04 → 2022-03-18 (+14d) |  |  | 8.33d → 4.67d | 4 → 38 |  |
| 18 | Business Logic Implementation for Invoice Creation based on ML-Model outcome | 2022-03-04 → 2022-03-18 (+14d) | 2022-03-14 → 2022-03-24 (+10d) |  |  | 8.33d → 4.67d |  |  |
| 21 | First Build Release | 2022-03-14 → 2022-03-24 (+10d) | 2022-03-15 → 2022-03-25 (+10d) |  |  | 8.33d → 4.67d |  |  |
| 22 | Test Execution | 2022-03-21 → 2022-03-25 (+4d) | 2022-03-25 → 2022-03-31 (+6d) |  |  | 11.33d → 7.67d | 20 → 20, 21 |  |
| 23 | Bug Fixing in BL of ML-Model output utilization side | 2022-03-15 → 2022-03-25 (+10d) | 2022-03-21 → 2022-03-31 (+10d) |  |  | 8.33d → 4.67d |  |  |
| 25 | Build Release | 2022-03-21 → 2022-03-31 (+10d) | 2022-03-22 → 2022-04-01 (+10d) |  |  | 8.33d → 4.67d |  |  |
| 26 | Test Execution | 2022-03-25 → 2022-04-01 (+7d) | 2022-03-31 → 2022-04-07 (+7d) |  |  | 11.33d → 6.67d | 22 → 22, 25 |  |
| 27 | **Version 4.0.2** | 2022-02-25 A |  |  | 0% → 15% |  |  |  |
| 28 | Stamping Configuration: Front/Back Cover Pages, Existing Page with Page Selection | 2022-03-03 → 2022-02-25 A (-6d) | 2022-03-10 → 2022-03-02 A (-8d) |  | 0% → 100% | 14.33d → none | 29 → 5 |  |
| 29 | Files removal from S3 when operation is cancelled | 2022-02-25 → 2022-03-02 A (+5d) | 2022-03-03 → 2022-03-10 A (+7d) |  | 0% → 100% | 14.33d → none | 5 → 28 |  |
| 30 | DB Side Logging |  |  |  |  | 10.33d → 10.67d | 28 → 29 |  |
| 31 | **Code Refactoring** |  | 2022-04-01 → 2022-04-11 (+10d) | 12d → 17.67d |  | 10.33d → 4.67d |  |  |
| 32 | Replacement of Set statement |  |  | 18h → 14h |  | 10.33d → 10.67d |  | resources Zeeshan Akhtar → Zeeshan Akhtar [50%] |
| 33 | Fixing of Javascript dependencies |  |  |  |  | 10.33d → 10.67d |  | resources Zeeshan Akhtar → Zeeshan Akhtar [50%] |
| 34 | Hyperlink Link Fixing to utilize "React Route" for client side navigation |  |  |  |  | 10.33d → 10.67d |  | resources Zeeshan Akhtar → Zeeshan Akhtar [50%] |
| 35 | Creation of separate JS file to API Calls |  |  |  |  | 10.33d → 10.67d |  | resources Zeeshan Akhtar → Zeeshan Akhtar [50%] |
| 36 | Redux implementation for better Data handling/caching on client side | 2022-03-22 → 2022-04-01 (+10d) | 2022-03-25 → 2022-04-06 (+12d) |  |  | 8.33d → 4.67d |  |  |
| 37 | Login - Utilization of Security Token in place of plain user data | 2022-03-25 → 2022-04-06 (+12d) | 2022-03-30 → 2022-04-11 (+12d) |  |  | 8.33d → 4.67d |  |  |
| 38 | SSO Fixing for AWS | 2022-03-30 → 2022-02-28 (-30d) | 2022-04-04 → 2022-03-10 (-25d) | 18h → 36h |  | 8.33d → 4.67d | 37 → 4 |  |

## Version 3 (saved 2022-03-25, file APA-Phase4ProjectPlan-3rdDraft.mpp)

Note of the change: Reorganize Folder Structure

Last finish 2022-04-15 → 2022-05-12 (+27d). Complete tasks 13 → 16.

Added:

| ID | Task | Duration | Start | Finish | Predecessors | Constraint | Resources |
| --- | --- | --- | --- | --- | --- | --- | --- |
| 9 | Zeeshan's Nexelus Work | 240h | 2022-03-14 | 2022-05-12 |  | start no earlier than 2022-03-14 | Zeeshan Akhtar [50%] |
| 26 | ML-Result storage for ML retraining and corrections | 24h | 2022-04-01 | 2022-04-07 | 24 |  | Faisal Ahmed Farooqui |
| 28 | ML-Results utilization for Model correction and retraining | 36h | 2022-04-01 | 2022-04-08 | 25 |  | Shoaib Alauddin |
| 46 | R&D on MLOps (CI-CD pipeline for ML) | 24h | 2022-04-27 | 2022-05-02 | 45 |  | Shoaib Alauddin |
| 47 | Implementation of MLOps | 24h | 2022-05-03 | 2022-05-06 | 46 |  | Faisal Ahmed Farooqui |
| 48 | Test case creation | 24h | 2022-04-14 | 2022-04-20 | 29 |  | Muhammad Naeem |
| 49 | Test Automation Cycle 3 | 60h | 2022-02-01 | 2022-04-07 |  |  | Muhammad Naeem |
| 50 | Test execution | 24h | 2022-04-22 | 2022-04-27 | 44, 49 |  | Muhammad Naeem |

Changed:

| ID | Task | Start | Finish | Duration | Complete | Total float | Predecessors |
| --- | --- | --- | --- | --- | --- | --- | --- |
| 1 | **Version 3.0.2** |  | 2022-03-14 → 2022-05-12 (+59d) | 27.67d → 70d | 85% → 53% | 11.33d → 0d |  |
| 10 | **Version 4.0.1** |  | 2022-04-07 → 2022-04-14 (+7d) | 45.33d? → 49.33d? | 38% → 53% | 6.67d → 16.67d |  |
| 17 | Model Deployment | 2022-03-11 A | 2022-03-18 A |  | 0% → 100% | 0d → none |  |
| 18 | Model Deployment Help | 2022-03-10 A | 2022-03-18 A |  | 0% → 100% | 4.67d → none |  |
| 19 | Business Logic Implementation for Invoice Creation based on ML-Model outcome | 2022-03-18 A | 2022-03-24 → 2022-03-25 (+1d) |  | 0% → 50% | 4.67d → 16.67d |  |
| 20 | Model Testing & Retraining | 2022-03-21 A | 2022-03-24 → 2022-03-25 (+1d) |  | 0% → 50% | 0d → 4d |  |
| 22 | First Build Release | 2022-03-24 → 2022-03-25 (+1d) | 2022-03-25 → 2022-03-28 (+3d) |  |  | 4.67d → 16.67d |  |
| 23 | Test Execution | 2022-03-25 → 2022-03-28 (+3d) | 2022-03-31 → 2022-04-01 (+1d) |  |  | 7.67d → 21.67d |  |
| 24 | Bug Fixing in BL of ML-Model output utilization side | 2022-03-25 → 2022-03-28 (+3d) | 2022-03-31 → 2022-04-01 (+1d) |  |  | 4.67d → 16.67d |  |
| 25 | Bug Fixing on ML Model and Retraining | 2022-03-25 → 2022-03-28 (+3d) | 2022-03-30 → 2022-03-31 (+1d) |  |  | 0d → 4d |  |
| 27 | Build Release | 2022-03-31 → 2022-04-07 (+7d) | 2022-04-01 → 2022-04-08 (+7d) |  |  | 4.67d → 16.67d | 24 → 26 |
| 29 | Test Execution | 2022-04-01 → 2022-04-08 (+7d) | 2022-04-07 → 2022-04-14 (+7d) |  |  | 6.67d → 16.67d |  |
| 30 | **Version 4.0.2** | 2022-02-25 A → 2022-02-01 A (-24d) | 2022-04-15 → 2022-05-06 (+21d) | 33.33d? → 66d? | 15% → 16% | 0d → 4d |  |
| 33 | DB Side Logging | 2022-03-10 A | 2022-03-16 → 2022-03-17 A (+1d) | 24h → 30h | 0% → 100% | 10.67d → none |  |
| 34 | **Code Refactoring** | 2022-03-16 → 2022-03-17 (+1d) | 2022-04-11 → 2022-04-18 (+7d) | 17.67d → 20.67d |  | 4.67d → 18.67d |  |
| 35 | Replacement of Set statement | 2022-03-16 → 2022-03-17 (+1d) | 2022-03-21 → 2022-03-22 (+1d) |  |  | 10.67d → 27.67d |  |
| 36 | Fixing of Javascript dependencies | 2022-03-21 → 2022-03-22 (+1d) | 2022-03-24 → 2022-03-28 (+4d) |  |  | 10.67d → 27.67d |  |
| 37 | Hyperlink Link Fixing to utilize "React Route" for client side navigation | 2022-03-24 → 2022-03-28 (+4d) | 2022-03-28 → 2022-04-04 (+7d) |  |  | 10.67d → 24.67d |  |
| 38 | Creation of separate JS file to API Calls | 2022-03-28 → 2022-04-04 (+7d) | 2022-04-01 → 2022-04-08 (+7d) |  |  | 10.67d → 24.67d |  |
| 39 | Redux implementation for better Data handling/caching on client side | 2022-04-01 → 2022-04-08 (+7d) | 2022-04-06 → 2022-04-13 (+7d) |  |  | 4.67d → 18.67d |  |
| 40 | Login - Utilization of Security Token in place of plain user data | 2022-04-06 → 2022-04-13 (+7d) | 2022-04-11 → 2022-04-18 (+7d) |  |  | 4.67d → 18.67d |  |
| 42 | Analysis on Optimization of Data Search Service | 2022-03-31 → 2022-04-11 (+11d) | 2022-04-05 → 2022-04-14 (+9d) |  |  | 0d → 4d | 25 → 28 |
| 43 | Implementation of Data Search Service Optimization | 2022-04-06 → 2022-04-15 (+9d) | 2022-04-11 → 2022-04-20 (+9d) |  |  | 0d → 4d |  |
| 44 | Build Release | 2022-04-12 → 2022-04-21 (+9d) | 2022-04-12 → 2022-04-21 (+9d) |  |  | 3d → 11d |  |
| 45 | Identification of gaps in ML-Model implementations | 2022-04-12 → 2022-04-21 (+9d) | 2022-04-15 → 2022-04-26 (+11d) |  |  | 0d → 4d |  |
