# Nexelus 12.8 R1_1

How a schedule from MS Project changed from version to version. A marks actual dates.

## Version 1 (saved 2021-01-26, file Nexelus 12.8 R1_1.mpp)

Note of the change: Reorganize Folder Structure

| ID | WBS | Task | Duration | Start | Finish | Predecessors | Complete | Total float |
| --- | --- | --- | --- | --- | --- | --- | --- | --- |
| 1 | 1 | **Nexelus 12.8** | 83.43d? | 2021-01-05 A | 2021-04-15 |  |  | 0d |
| 2 | 1.1 | **Build 1** | 50d? | 2021-01-05 A | 2021-03-05 |  |  | 33.43d |
| 3 | 1.1.1 | **Import / Export without MS Excel** | 16.29d | 2021-01-05 A | 2021-01-25 |  |  | 0d |
| 4 | 1.1.1.1 | **Development** | 12.86d | 2021-01-05 A | 2021-01-20 |  |  | 3.43d |
| 5 | 1.1.1.1.1 | **RM/PM.** | 4.29d | 2021-01-05 A | 2021-01-08 |  |  | 12d |
| 6 |  | Employee Schedule > Import | 0d | 2021-01-05 A | 2021-01-05 A |  | 100% |  |
| 7 |  | Employee Schedule > Export. | 0d | 2021-01-05 A | 2021-01-05 A | 6 | 100% |  |
| 8 |  | Task Management > Export | 1.71d | 2021-01-05 | 2021-01-06 | 7 |  | 13.71d |
| 9 |  | Calendar > Task List > Export | 0.86d | 2021-01-06 | 2021-01-07 | 8 |  | 13.71d |
| 10 |  | Custom Upload. | 0d | 2021-01-07 A | 2021-01-07 A | 9 | 100% |  |
| 11 |  | Custom Export | 0d | 2021-01-07 A | 2021-01-07 A | 10 | 100% |  |
| 12 |  | Reports > Template based reports. | 0.86d | 2021-01-07 | 2021-01-07 | 11 |  | 12d |
| 13 |  | Client Profile > Import Clients. | 0.86d | 2021-01-08 | 2021-01-08 | 12 |  | 12d |
| 14 | 1.1.1.1.2 | **Level2 Inquiry** | 0d | 2021-01-08 A | 2021-01-08 A | 5 | 100% |  |
| 15 |  | Status report. | 0d | 2021-01-08 A | 2021-01-08 A |  | 100% |  |
| 16 |  | Transaction export. | 0d | 2021-01-08 A | 2021-01-08 A | 15 | 100% |  |
| 17 | 1.1.1.1.3 | **Setup** | 0d | 2021-01-08 A | 2021-01-08 A | 14 | 100% |  |
| 18 |  | Creative Export | 0d | 2021-01-08 A | 2021-01-08 A |  | 100% |  |
| 19 |  | Account Maps Import/Export. | 0d | 2021-01-08 A | 2021-01-08 A | 18 | 100% |  |
| 20 | 1.1.1.1.4 | **Media RFP** | 4d | 2021-01-08 | 2021-01-14 |  |  | 0d |
| 21 |  | Placement Import | 1.71d | 2021-01-08 | 2021-01-12 | 19 |  | 0d |
| 22 |  | Placement Export | 2.29d | 2021-01-12 | 2021-01-14 | 21 |  | 0d |
| 23 | 1.1.1.1.5 | **Delivery Override** | 4.57d | 2021-01-14 | 2021-01-20 |  |  | 0d |
| 24 |  | Delivery override Import | 1.14d | 2021-01-14 | 2021-01-15 | 22 |  | 0d |
| 25 |  | Delivery override Export | 1.14d | 2021-01-15 | 2021-01-18 | 24 |  | 0d |
| 26 |  | Delivery override Import by Placement | 1.14d | 2021-01-18 | 2021-01-19 | 25 |  | 0d |
| 27 |  | Delivery override Export by Placement | 1.14d | 2021-01-19 | 2021-01-20 | 26 |  | 0d |
| 28 | 1.1.1.2 | **Task Review** | 3.43d | 2021-01-20 | 2021-01-25 | 27 |  | 0d |
| 29 |  | Testing and Code Review | 1.14d | 2021-01-20 | 2021-01-21 |  |  | 0d |
| 30 |  | Suggested changes and bug fixes | 2.29d | 2021-01-21 | 2021-01-25 | 29 |  | 0d |
| 31 | 1.1.2 | **Support Multi Tabbing** | 33.71d | 2021-01-25 | 2021-03-05 | 3 |  | 0d |
| 32 | 1.1.2.1 | **Development** | 29.14d | 2021-01-25 | 2021-03-01 |  |  | 0d |
| 33 |  | Timesheet-[Maintain, update and clear on page unload] | 2.57d | 2021-01-25 | 2021-01-27 |  |  | 0d |
| 34 |  | Expense report | 2.57d | 2021-01-27 | 2021-01-29 | 33 |  | 0d |
| 35 |  | Approval | 2.57d | 2021-01-29 | 2021-02-02 | 34 |  | 0d |
| 36 |  | PM/RM | 1.43d | 2021-02-03 | 2021-02-04 | 35 |  | 0d |
| 37 | 1.1.2.1.5 | **Media** | 10.29d | 2021-02-04 | 2021-02-17 |  |  | 0d |
| 38 |  | Campaign | 2.57d | 2021-02-04 | 2021-02-08 | 36 |  | 0d |
| 39 |  | Buying | 2.57d | 2021-02-08 | 2021-02-10 | 38 |  | 0d |
| 40 |  | MPM | 2.57d | 2021-02-10 | 2021-02-12 | 39 |  | 0d |
| 41 |  | Delivery Override | 2.57d | 2021-02-15 | 2021-02-17 | 40 |  | 0d |
| 42 |  | Billing [6+ Screens] | 7.14d | 2021-02-17 | 2021-02-25 | 37 |  | 0d |
| 43 |  | Media Reconciliation | 2.57d | 2021-02-25 | 2021-03-01 | 42 |  |  |
| 44 |  | Data Entry | 8.57d | 2021-01-27 | 2021-02-05 | 33 |  | 18d |
| 45 | 1.1.2.2 | **Code Review and Bug Fixing** | 4.57d | 2021-03-01 | 2021-03-05 |  |  | 0d |
| 46 |  | Code Review | 2.29d | 2021-03-01 | 2021-03-03 | 32 |  | 0d |
| 47 |  | Bug Fixing | 2.29d | 2021-03-03 | 2021-03-05 | 46 |  | 0d |
| 48 | 1.1.3 | **Enhancement in DCM errors and style coming from DCM** | 6.29d | 2021-01-05 | 2021-01-12 |  |  | 5.14d |
| 49 |  | dotNet | 5.71d | 2021-01-05 | 2021-01-11 |  |  | 5.14d |
| 50 |  | DB | 0.57d | 2021-01-12 | 2021-01-12 | 49 |  | 5.14d |
| 51 |  | Optimize Individual Placement Save | 4.29d | 2021-01-12 | 2021-01-18 | 50 |  | 5.14d |
| 52 |  | Display prompt if user enters delivery at package level when Rule is set to override at placement level | 0.57d | 2021-01-18 | 2021-01-18 | 51 |  | 5.14d |
| 53 | 1.1.6 | **Google Ads for budget order and delivery** | 31.43d | 2021-01-18 | 2021-02-25 | 52 |  | 5.14d |
| 54 |  | R&D | 3.43d | 2021-01-18 | 2021-01-21 |  |  | 5.14d |
| 55 | 1.1.6.2 | **IPC Changes** | 21.71d | 2021-01-21 | 2021-02-17 | 54 |  | 5.14d |
| 56 |  | Adwards Accounts | 2.29d | 2021-01-21 | 2021-01-25 |  |  | 5.14d |
| 57 |  | Billing Accounts | 2.29d | 2021-01-25 | 2021-01-27 | 56 |  | 5.14d |
| 58 |  | Secondary Billing ID | 2.29d | 2021-01-27 | 2021-01-29 | 57 |  | 5.14d |
| 59 |  | Campaings information | 2.29d | 2021-01-29 | 2021-02-02 | 58 |  | 5.14d |
| 60 |  | Delivery Reports | 4.57d | 2021-02-02 | 2021-02-08 | 59 |  | 5.14d |
| 61 |  | Budget Order Pull | 2.29d | 2021-02-08 | 2021-02-10 | 60 |  | 5.14d |
| 62 |  | Budget Order Creation | 5.71d | 2021-02-10 | 2021-02-17 | 61 |  | 5.14d |
| 63 |  | Unit Testing | 3.43d | 2021-02-17 | 2021-02-22 | 55 |  | 5.14d |
| 64 |  | DB Changes | 2.86d | 2021-02-22 | 2021-02-25 | 63 |  | 5.14d |
| 65 |  | External File storage (AWS and MS One Drive (Testing only)) | 5.14d | 2021-02-25 | 2021-03-03 | 64 |  | 5.14d |
| 66 | 1.1.8 | **Conversion of eConnect application to .Net** | 8.57d | 2021-01-05 A | 2021-01-14 |  |  | 74.86d |
| 67 |  | Initial Conversion | 0d | 2021-01-05 A | 2021-01-05 A |  | 100% |  |
| 68 |  | Integrate with Nexelus | 8.57d | 2021-01-05 | 2021-01-14 |  |  | 74.86d |
| 69 |  | Invoice Printing: save each PDF individually locally through the browser after they are generated | 1.14d | 2021-01-05 | 2021-01-05 |  |  | 82.29d |
| 70 |  | Translation on chrome for nexelus, system should not show this option | 0.57d | 2021-01-05 | 2021-01-05 |  |  | 82.86d |

| ID | WBS | Task | Duration | Start | Finish | Predecessors | Total float | Constraint |
| --- | --- | --- | --- | --- | --- | --- | --- | --- |
| 71 | 1.1.11 | **Wild card search for Media Plan on Prebill** | 1.14d? | 2021-01-05 | 2021-01-05 |  | 82.29d |  |
| 72 |  | Web | 0.57d? | 2021-01-05 | 2021-01-05 |  | 82.86d |  |
| 73 |  | DB | 1.14d? | 2021-01-05 | 2021-01-05 |  | 82.29d |  |
| 74 | 1.1.12 | **Wild card search for Media Plan on Delivery Override** | 1.14d? | 2021-01-05 | 2021-01-05 |  | 82.29d |  |
| 75 |  | Web | 0.57d? | 2021-01-05 | 2021-01-05 |  | 82.86d |  |
| 76 |  | DB | 1.14d? | 2021-01-05 | 2021-01-05 |  | 82.29d |  |
| 77 |  | Integration with DOCU SIGN | 1.14d | 2021-01-05 | 2021-01-05 |  | 82.29d |  |
| 78 |  | Transfer functionality for inter-company on owner side. | 1.14d | 2021-01-05 | 2021-01-05 |  | 82.29d |  |
| 79 |  | Possibility of filtering IO's based on month of serviceOrdisplay IO dates at IO header level. | 1.14d | 2021-01-05 | 2021-01-05 |  | 82.29d |  |
| 80 | 1.1.16 | **'Media Paid By Client' at Campaign Level - Implement Following** | 1.14d? | 2021-01-05 | 2021-01-05 |  | 82.29d |  |
| 81 |  | Undo ‘Media paid by vendor’ if a vendor is set at client profile level | 1.14d? | 2021-01-05 | 2021-01-05 |  | 82.29d |  |
| 82 |  | Mark a vendor as Paid by client on Media plan level. It always defaults from client profile | 1.14d | 2021-01-05 | 2021-01-05 |  | 82.29d |  |
| 83 |  | Delivery Override Search - Date From and To Check is not working properly | 0.29d? | 2021-01-05 | 2021-01-05 |  | 83.14d |  |
| 84 |  | Display full client name on Campaign and Media plan search screens. We do have space so we should expand the name. Also show tooltip if it exceeds the new increased length. | 0.57d? | 2021-01-05 | 2021-01-05 |  | 82.86d |  |
| 85 | 1.2 | **Build 2** | 21.14d? | 2021-01-05 | 2021-01-29 |  | 0d |  |
| 86 |  | Prototype | 14.29d | 2021-01-13 | 2021-01-29 |  | 62.29d | start no earlier than 2021-01-13 |
| 87 | 1.2.2 | **Development** | 11.43d? | 2021-01-05 | 2021-01-18 |  | 0d |  |
| 88 | 1.2.2.1 | **Dashoard** | 11.43d | 2021-01-05 | 2021-01-18 |  | 0d |  |
| 89 |  | Web | 11.43d | 2021-01-05 | 2021-01-18 |  |  |  |
| 90 |  | DB | 5.71d | 2021-01-05 | 2021-01-11 |  |  |  |
| 91 |  | Filter UI | 5.71d? | 2021-01-05 | 2021-01-11 |  | 77.71d |  |
| 92 | 1.2.2.3 | **Rules Implement on Main UI** | 11.43d | 2021-01-05 | 2021-01-18 |  | 0d |  |
| 93 |  | Rule 1 | 3.43d | 2021-01-05 | 2021-01-07 |  |  |  |
| 94 |  | Rule 2 | 8.57d | 2021-01-05 | 2021-01-14 |  |  |  |
| 95 |  | Rule 3 | 11.43d | 2021-01-05 | 2021-01-18 |  |  |  |
| 96 | 1.2.2.4 | **Optimization Wizard** | 5.71d? | 2021-01-05 | 2021-01-11 |  | 0d |  |
| 97 | 1.2.2.4.1 | **Media Plan Revision Summary with Ad-tech** | 5.71d | 2021-01-05 | 2021-01-11 |  | 0d |  |
| 98 |  | Web | 5.71d | 2021-01-05 | 2021-01-11 |  |  |  |
| 99 |  | DB | 2.29d | 2021-01-05 | 2021-01-06 |  |  |  |
| 100 | 1.2.2.4.2 | **Generate Schedule** | 1.14d? | 2021-01-05 | 2021-01-05 |  | 0d |  |
| 101 |  | Web | 1.14d? | 2021-01-05 | 2021-01-05 |  |  |  |
| 102 |  | DB | 1.14d? | 2021-01-05 | 2021-01-05 |  |  |  |
| 103 | 1.2.2.4.3 | **Approve Media Plans** | 1.14d? | 2021-01-05 | 2021-01-05 |  | 0d |  |
| 104 |  | Web | 1.14d? | 2021-01-05 | 2021-01-05 |  |  |  |
| 105 |  | DB | 1.14d? | 2021-01-05 | 2021-01-05 |  |  |  |
| 106 | 1.2.2.4.4 | **Revise Insertion Orders (IO)** | 1.14d? | 2021-01-05 | 2021-01-05 |  | 0d |  |
| 107 |  | Web | 1.14d? | 2021-01-05 | 2021-01-05 |  |  |  |
| 108 |  | DB | 1.14d? | 2021-01-05 | 2021-01-05 |  |  |  |
| 109 |  | Revise Budget Orders | 1.14d? | 2021-01-05 | 2021-01-05 |  |  |  |
| 110 | 1.3 | **QA - Iteration 1** | 52.29d | 2021-01-05 | 2021-03-09 |  | 31.14d |  |
| 111 | 1.3.1 | **Build 1** | 52.29d | 2021-01-05 | 2021-03-09 |  | 31.14d |  |
| 112 | 1.3.1.1 | **Import / Export without MS Excel** | 3.29d | 2021-01-25 | 2021-01-28 | 3 | 21d |  |
| 113 | 1.3.1.1.1 | **RM/PM.** | 2.43d | 2021-01-25 | 2021-01-27 |  | 21.86d |  |
| 114 |  | Employee Schedule > Import | 0.29d | 2021-01-25 | 2021-01-25 |  | 21.86d |  |
| 115 |  | Employee Schedule > Export. | 0.29d | 2021-01-25 | 2021-01-25 | 114 | 21.86d |  |
| 116 |  | Task Management > Export | 0.29d | 2021-01-25 | 2021-01-25 | 115 | 21.86d |  |
| 117 |  | Calendar > Task List > Export | 0.43d | 2021-01-26 | 2021-01-26 | 116 | 21.86d |  |
| 118 |  | Custom Upload. | 0.29d | 2021-01-26 | 2021-01-26 | 117 | 21.86d |  |
| 119 |  | Custom Export | 0.29d | 2021-01-26 | 2021-01-26 | 118 | 21.86d |  |
| 120 |  | Reports > Template based reports. | 0.29d | 2021-01-26 | 2021-01-27 | 119 | 21.86d |  |
| 121 |  | Client Profile > Import Clients. | 0.29d | 2021-01-27 | 2021-01-27 | 120 | 21.86d |  |
| 122 | 1.3.1.1.2 | **Level2 Inquiry** | 1d | 2021-01-25 | 2021-01-26 |  | 21d |  |
| 123 |  | Status report. | 0.43d | 2021-01-25 | 2021-01-25 |  | 21d |  |
| 124 |  | Transaction export. | 0.57d | 2021-01-25 | 2021-01-26 | 123 | 21d |  |
| 125 | 1.3.1.1.3 | **Setup** | 0.57d | 2021-01-26 | 2021-01-26 | 122 | 21d |  |
| 126 |  | Creative Export | 0.14d | 2021-01-26 | 2021-01-26 |  | 21d |  |
| 127 |  | Account Maps Import/Export. | 0.43d | 2021-01-26 | 2021-01-26 | 126 | 21d |  |
| 128 | 1.3.1.1.4 | **Media RFP** | 0d | 2021-01-26 | 2021-01-26 | 125 | 21d |  |
| 129 |  | Placement Import | 0d | 2021-01-26 | 2021-01-26 |  | 21d |  |
| 130 |  | Placement Export | 0d | 2021-01-26 | 2021-01-26 | 129 | 21d |  |
| 131 | 1.3.1.1.5 | **Delivery Override** | 1.71d | 2021-01-26 | 2021-01-28 |  | 21d |  |
| 132 |  | Delivery override Import | 0.57d | 2021-01-26 | 2021-01-27 | 128 | 21d |  |
| 133 |  | Delivery override Export | 0.29d | 2021-01-27 | 2021-01-27 | 132 | 21d |  |
| 134 |  | Delivery override Import by Placement | 0.57d | 2021-01-27 | 2021-01-27 | 133 | 21d |  |
| 135 |  | Delivery override Export by Placement | 0.29d | 2021-01-27 | 2021-01-28 | 134 | 21d |  |
| 136 | 1.3.1.2 | **Support Multi Tabbing** | 8.43d | 2021-01-28 | 2021-02-08 | 112 | 21d |  |
| 137 |  | Timesheet-[Maintain, update and clear on page unload] | 0.86d | 2021-01-28 | 2021-01-28 |  | 21d |  |
| 138 |  | Expense report | 0.57d | 2021-01-28 | 2021-01-29 | 137 | 21d |  |
| 139 |  | Approval | 1.43d | 2021-01-29 | 2021-02-01 | 138 | 21d |  |
| 140 |  | PM/RM | 0.71d | 2021-02-01 | 2021-02-02 | 139 | 21d |  |

| ID | WBS | Task | Duration | Start | Finish | Predecessors | Total float |
| --- | --- | --- | --- | --- | --- | --- | --- |
| 141 | 1.3.1.2.5 | **Media** | 3.14d | 2021-02-02 | 2021-02-04 | 140 | 21d |
| 142 |  | Campaign | 0.86d | 2021-02-02 | 2021-02-02 |  | 21d |
| 143 |  | Buying | 0.86d | 2021-02-03 | 2021-02-03 | 142 | 21d |
| 144 |  | MPM | 0.57d | 2021-02-03 | 2021-02-04 | 143 | 21d |
| 145 |  | Delivery Override | 0.86d | 2021-02-04 | 2021-02-04 | 144 | 21d |
| 146 |  | Billing [6+ Screens] | 1.71d | 2021-02-05 | 2021-02-08 | 141 | 21d |
| 147 |  | Media Reconciliation | 0d | 2021-01-28 | 2021-01-28 |  | 29.43d |
| 148 |  | Enhancement in DCM errors and style coming from DCM | 3.86d | 2021-02-08 | 2021-02-11 | 136 | 21d |
| 149 |  | Optimize Individual Placement Save | 1.43d | 2021-01-18 | 2021-01-19 | 51 | 42d |
| 150 |  | Display prompt if user enters delivery at package level when Rule is set to override at placement level | 0.29d | 2021-01-18 | 2021-01-18 | 52 | 43.29d |
| 151 |  | Google Ads for budget order and delivery | 0.57d | 2021-02-11 | 2021-02-12 | 148 | 22.43d |
| 152 |  | External File storage (AWS and MS One Drive (Testing only)) | 4.57d | 2021-03-03 | 2021-03-09 | 65 | 6.86d |
| 153 |  | Conversion of eConnect application to .Net | 2.29d | 2021-02-12 | 2021-02-16 | 151 | 23d |
| 154 |  | Integration with DOCU SIGN | 1.14d | 2021-01-05 | 2021-01-05 |  | 82.29d |
| 155 |  | Transfer functionality for inter-company on owner side. | 1.14d | 2021-01-05 | 2021-01-05 |  | 82.29d |
| 156 |  | Possibility of filtering IO's based on month of serviceOrdisplay IO dates at IO header level. | 1.14d | 2021-01-05 | 2021-01-05 |  | 82.29d |
| 157 |  | 'Media Paid By Client' at Campaign Level - Implement Following | 1.14d | 2021-01-05 | 2021-01-05 |  | 82.29d |
| 158 |  | Delivery Override Search - Date From and To Check is not working properly | 1.14d | 2021-01-05 | 2021-01-05 |  | 82.29d |
| 159 |  | Display full client name on Campaign and Media plan search screens. We do have space so we should expand the name. Also show tooltip if it exceeds the new increased length. | 1.14d | 2021-01-05 | 2021-01-05 |  | 82.29d |
| 160 |  | Wild card search for Media Plan on Prebill | 1.14d | 2021-01-05 | 2021-01-05 |  | 82.29d |
| 161 |  | Wild card search for Media Plan on Delivery Override | 1.14d | 2021-01-05 | 2021-01-05 |  | 82.29d |
| 162 | 1.4 | **Build 2** | 1.14d | 2021-01-05 | 2021-01-05 |  | 0d |
| 163 |  | Dashoard | 1d | 2021-01-05 | 2021-01-05 |  | 82.43d |
| 164 |  | Rules Implement on Main UI | 1.14d | 2021-01-05 | 2021-01-05 |  | 82.29d |
| 165 | 1.4.3 | **Optimization Wizard** | 1.14d | 2021-01-05 | 2021-01-05 |  | 0d |
| 166 |  | Media Plan Revision Summary with Ad-tech | 1d | 2021-01-05 | 2021-01-05 |  | 82.43d |
| 167 |  | Generate Schedule | 1.14d | 2021-01-05 | 2021-01-05 |  | 82.29d |
| 168 |  | Approve Media Plans | 1.14d | 2021-01-05 | 2021-01-05 |  | 82.29d |
| 169 |  | Revise Insertion Orders (IO) | 1.14d | 2021-01-05 | 2021-01-05 |  | 82.29d |
| 170 |  | Revise Budget Orders | 1.14d | 2021-01-05 | 2021-01-05 |  | 0d |
| 172 | 1.5 | **Bug Fixing - Iteration 1** | 25.86d | 2021-02-16 | 2021-03-18 |  | 0d |
| 173 |  | Import / Export without MS Excel | 3.43d | 2021-03-05 | 2021-03-10 | 112, 31 | 0d |
| 174 |  | Support Multi Tabbing | 5.71d | 2021-03-10 | 2021-03-17 | 136, 173 | 0d |
| 175 |  | Enhancement in DCM errors and style coming from DCM | 1.14d | 2021-03-03 | 2021-03-04 | 148, 65 | 5.14d |
| 176 |  | Optimize Individual Placement Save | 0.71d | 2021-03-04 | 2021-03-05 | 149, 175 | 5.14d |
| 177 |  | Display prompt if user enters delivery at package level when Rule is set to override at placement level | 0.14d | 2021-03-05 | 2021-03-05 | 150, 176 | 5.14d |
| 178 |  | Google Ads for budget order and delivery | 5.71d | 2021-03-05 | 2021-03-12 | 151, 177 | 5.14d |
| 179 |  | External File storage (AWS and MS One Drive (Testing only)) | 1.43d | 2021-03-17 | 2021-03-18 | 152, 174 | 0d |
| 180 |  | Conversion of eConnect application to .Net | 2.86d | 2021-02-16 | 2021-02-18 | 153 | 23d |
| 181 |  | Bug Verification and Second QA Iteration | 11.43d | 2021-03-19 | 2021-04-01 | 172 | 0d |
| 182 |  | Bug Fixing - Iteration 2 | 5.71d | 2021-04-02 | 2021-04-08 | 181 | 0d |
| 183 |  | Deployment and Verification on Release Environment | 5.71d | 2021-04-09 | 2021-04-15 | 182 | 0d |

## Version 2 (saved 2021-02-04, file Nexelus 12.8 R1_2.mpp)

Note of the change: Merge branch 'main' of https://github.com/tsfszd/docs

Last finish stays 2021-04-15. Complete tasks 9 → 24.

Added:

| ID | Task | Duration | Start | Finish | Resources |
| --- | --- | --- | --- | --- | --- |
| 38 | **Time and Expense** | 7.71d | 2021-01-22 | 2021-02-02 |  |
| 93 | Calculate and Display Summary | 5.71d | 2021-01-05 | 2021-01-11 | Imran Q |
| 94 | Create new Media Plan Revision | 3.43d | 2021-01-05 | 2021-01-07 | Farhan |
| 95 | Create/Update revised placements | 5.71d | 2021-01-05 | 2021-01-11 | Farhan |
| 105 | **Budget Orders** | 2.29d? | 2021-01-05 | 2021-01-06 |  |
| 106 | **Display BO Listing** | 2.29d | 2021-01-05 | 2021-01-06 |  |
| 109 | **Revise Budget Orders** | 1.14d? | 2021-01-05 | 2021-01-05 |  |
| 112 | **Facebook Campaign** | 1.14d? | 2021-01-05 | 2021-01-05 |  |
| 115 | **Yahoo Campaign** | 1.14d? | 2021-01-05 | 2021-01-05 |  |
| 116 | Web | 1.14d? | 2021-01-05 | 2021-01-05 |  |
| 117 | DB | 1.14d? | 2021-01-05 | 2021-01-05 |  |
| 118 | **Microsoft Ads** | 1.14d? | 2021-01-05 | 2021-01-05 |  |
| 119 | Web | 1.14d? | 2021-01-05 | 2021-01-05 |  |
| 120 | DB | 1.14d? | 2021-01-05 | 2021-01-05 |  |
| 121 | **TradeDesk Campaign** | 1.14d? | 2021-01-05 | 2021-01-05 |  |
| 122 | Web | 1.14d? | 2021-01-05 | 2021-01-05 |  |
| 123 | DB | 1.14d? | 2021-01-05 | 2021-01-05 |  |
| 124 | **DV360 Campaign** | 1.14d? | 2021-01-05 | 2021-01-05 |  |
| 125 | Web | 1.14d? | 2021-01-05 | 2021-01-05 |  |
| 126 | DB | 1.14d? | 2021-01-05 | 2021-01-05 |  |
| 127 | **Sync to DCM** | 1.14d? | 2021-01-05 | 2021-01-05 |  |
| 128 | Web | 1.14d? | 2021-01-05 | 2021-01-05 |  |
| 129 | DB | 1.14d? | 2021-01-05 | 2021-01-05 |  |
| 130 | Summary Page | 1.14d? | 2021-01-05 | 2021-01-05 |  |
| 192 | **Display BO Listing** | 1.14d | 2021-01-05 | 2021-01-05 |  |
| 193 | DB | 1.14d | 2021-01-05 | 2021-01-05 | Farhan |
| 194 | Web | 1.14d | 2021-01-05 | 2021-01-05 | Imran Q |
| 195 | **Revise Budget Orders** | 1.14d? | 2021-01-05 | 2021-01-05 |  |
| 196 | Web | 1.14d? | 2021-01-05 | 2021-01-05 |  |
| 197 | DB | 1.14d? | 2021-01-05 | 2021-01-05 |  |
| 198 | **Facebook Campaign** | 1.14d? | 2021-01-05 | 2021-01-05 |  |
| 199 | Web | 1.14d? | 2021-01-05 | 2021-01-05 |  |
| 200 | DB | 1.14d? | 2021-01-05 | 2021-01-05 |  |
| 201 | **Yahoo Campaign** | 1.14d? | 2021-01-05 | 2021-01-05 |  |
| 202 | Web | 1.14d? | 2021-01-05 | 2021-01-05 |  |
| 203 | DB | 1.14d? | 2021-01-05 | 2021-01-05 |  |
| 204 | **Microsoft Ads** | 1.14d? | 2021-01-05 | 2021-01-05 |  |
| 205 | Web | 1.14d? | 2021-01-05 | 2021-01-05 |  |
| 206 | DB | 1.14d? | 2021-01-05 | 2021-01-05 |  |
| 207 | **TradeDesk Campaign** | 1.14d? | 2021-01-05 | 2021-01-05 |  |
| 208 | Web | 1.14d? | 2021-01-05 | 2021-01-05 |  |
| 209 | DB | 1.14d? | 2021-01-05 | 2021-01-05 |  |
| 210 | **DV360 Campaign** | 1.14d? | 2021-01-05 | 2021-01-05 |  |
| 211 | Web | 1.14d? | 2021-01-05 | 2021-01-05 |  |
| 212 | DB | 1.14d? | 2021-01-05 | 2021-01-05 |  |
| 225 | **Additional Tasks** | 1.71d? | 2021-01-05 A | 2021-01-06 |  |
| 227 | Web | 0.57d? | 2021-01-05 A | 2021-01-05 A | Shoaib |
| 228 | DB | 1.14d? | 2021-01-05 A | 2021-01-05 A | Farhan |
| 230 | Web | 0.29d? | 2021-01-05 A | 2021-01-05 A | Shoaib |
| 231 | DB | 1.71d? | 2021-01-05 A | 2021-01-06 A | Farhan |
| 232 | **API Sunset** | 1.14d? | 2021-01-05 | 2021-01-05 | Imran Q |
| 233 | DCM - Expires Feb 28 | 1.14d? | 2021-01-05 | 2021-01-05 |  |
| 234 | Google Ads(IPC Version is 4.0 Beta): (Sunset: June 2021) | 1.14d | 2021-01-05 | 2021-01-05 |  |
| 235 | Ability to transfer IC charges on owner side | 1.14d | 2021-01-05 | 2021-01-05 |  |
| 236 | On posted trx, 1. Provide a check box to select all trx on a page. 2. And/or date filters | 1.14d? | 2021-01-05 | 2021-01-05 |  |
| 237 | MPM - UI becomes unresponsive on negative value against positive plan | 1.14d? | 2021-01-05 | 2021-01-05 | Imran Q [50%] |

Removed: 109 Revise Budget Orders

Changed:

| ID | Task | Start | Finish | Duration | Complete | Total float | Other |
| --- | --- | --- | --- | --- | --- | --- | --- |
| 1 | **Nexelus 12.8** |  |  |  | 0% → 14% |  |  |
| 2 | **Build 1** |  |  |  | 0% → 25% |  |  |
| 3 | **Import / Export without MS Excel** |  | 2021-01-25 → 2021-01-22 (-3d) | 16.29d → 15.71d | 0% → 82% | 0d → 0.57d |  |
| 4 | **Development** |  | 2021-01-20 A |  | 0% → 100% | 3.43d → none |  |
| 5 | **RM/PM.** |  | 2021-01-08 A |  | 0% → 100% | 12d → none |  |
| 8 | Task Management > Export | 2021-01-05 A | 2021-01-06 A |  | 0% → 100% | 13.71d → none |  |
| 9 | Calendar > Task List > Export | 2021-01-06 A | 2021-01-07 A |  | 0% → 100% | 13.71d → none |  |
| 12 | Reports > Template based reports. | 2021-01-07 A | 2021-01-07 A |  | 0% → 100% | 12d → none |  |
| 13 | Client Profile > Import Clients. | 2021-01-08 A | 2021-01-08 A |  | 0% → 100% | 12d → none |  |
| 20 | **Media RFP** | 2021-01-08 A | 2021-01-14 A |  | 0% → 100% | 0d → none |  |
| 21 | Placement Import | 2021-01-08 A | 2021-01-12 A |  | 0% → 100% | 0d → none |  |
| 22 | Placement Export | 2021-01-12 A | 2021-01-14 A |  | 0% → 100% | 0d → none |  |
| 23 | **Delivery Override** | 2021-01-14 A | 2021-01-20 A |  | 0% → 100% | 0d → none |  |
| 24 | Delivery override Import | 2021-01-14 A | 2021-01-15 A |  | 0% → 100% | 0d → none |  |
| 25 | Delivery override Export | 2021-01-15 A | 2021-01-18 A |  | 0% → 100% | 0d → none |  |
| 26 | Delivery override Import by Placement | 2021-01-18 A | 2021-01-19 A |  | 0% → 100% | 0d → none |  |
| 27 | Delivery override Export by Placement | 2021-01-19 A | 2021-01-20 A |  | 0% → 100% | 0d → none |  |
| 28 | **Task Review** |  | 2021-01-25 → 2021-01-22 (-3d) | 3.43d → 2.86d |  | 0d → 0.57d |  |
| 29 | Testing and Code Review |  | 2021-01-21 → 2021-01-20 (-1d) | 1.14d → 0.57d |  | 0d → 0.57d | resources Tauseef → Tauseef; Imran Q |
| 30 | Suggested changes and bug fixes | 2021-01-21 → 2021-01-20 (-1d) | 2021-01-25 → 2021-01-22 (-3d) |  |  | 0d → 0.57d |  |
| 31 | **Support Multi Tabbing** | 2021-01-25 → 2021-01-22 (-3d) |  | 33.71d → 34.29d |  |  |  |
| 32 | **Development** | 2021-01-25 → 2021-01-22 (-3d) |  | 29.14d → 29.71d |  |  |  |
| 33 | **Media** | 2021-02-04 → 2021-02-03 (-1d) | 2021-02-17 → 2021-02-16 (-1d) |  |  | 0d → 0.57d |  |
| 34 | Campaign | 2021-02-04 → 2021-02-03 (-1d) | 2021-02-08 → 2021-02-05 (-3d) |  |  | 0d → 0.57d | resources Shoaib → Farooq |
| 35 | Buying |  |  |  |  | 0d → 0.57d | resources Shoaib → Farooq |
| 36 | MPM |  |  |  |  | 0d → 0.57d | resources Shoaib → Farooq |
| 37 | Delivery Override | 2021-02-15 → 2021-02-12 (-3d) | 2021-02-17 → 2021-02-16 (-1d) |  |  | 0d → 0.57d | resources Shoaib → Farooq |
| 39 | Timesheet-[Maintain, update and clear on page unload] | 2021-01-25 → 2021-01-22 (-3d) | 2021-01-27 → 2021-01-26 (-1d) |  |  | 0d → 0.57d | resources Shoaib → Farooq |
| 40 | Expense report |  |  |  |  | 0d → 0.57d | resources Shoaib → Farooq |
| 41 | Approval |  |  |  |  | 0d → 0.57d | resources Shoaib → Farooq |
| 42 | PM/RM | 2021-02-03 → 2021-02-02 (-1d) | 2021-02-04 → 2021-02-03 (-1d) |  |  | 0d → 0.57d | resources Shoaib → Farooq |
| 43 | Billing [6+ Screens] | 2021-02-17 → 2021-02-16 (-1d) | 2021-02-25 → 2021-02-24 (-1d) |  |  | 0d → 0.57d | resources Shoaib → Farooq |
| 44 | Media Reconciliation |  |  |  |  |  | resources Shoaib → Farooq |
| 49 | Display prompt if user enters delivery at package level when Rule is set to override at placement level | 2021-01-18 → 2021-01-14 (-4d) | 2021-01-18 → 2021-01-15 (-3d) |  |  | 5.14d → 42.57d | resources Imran Q → Shoaib |
| 54 | dotNet |  |  |  |  | 5.14d → 42.57d | resources Imran Q → Shoaib |
| 56 | Translation on chrome for nexelus, system should not show this option |  |  |  |  |  | resources Shoaib → Imran Q |
| 57 | Optimize Individual Placement Save |  | 2021-01-18 → 2021-01-14 (-4d) | 4.29d → 2.57d |  | 5.14d → 42.57d | resources Imran Q → Imran Q; Shoaib |
| 58 | **Google Ads for budget order and delivery** | 2021-01-18 → 2021-01-15 (-3d) | 2021-02-25 → 2021-02-23 (-2d) |  |  | 5.14d → 42.57d |  |
| 59 | R&D | 2021-01-18 → 2021-01-15 (-3d) | 2021-01-21 → 2021-01-20 (-1d) |  |  | 5.14d → 42.57d |  |
| 60 | **IPC Changes** | 2021-01-21 → 2021-01-20 (-1d) | 2021-02-17 → 2021-02-16 (-1d) |  |  | 5.14d → 42.57d |  |
| 61 | Adwards Accounts | 2021-01-21 → 2021-01-20 (-1d) | 2021-01-25 → 2021-01-22 (-3d) |  |  | 5.14d → 42.57d |  |
| 62 | Billing Accounts | 2021-01-25 → 2021-01-22 (-3d) | 2021-01-27 → 2021-01-26 (-1d) |  |  | 5.14d → 42.57d |  |
| 63 | Secondary Billing ID | 2021-01-27 → 2021-01-26 (-1d) | 2021-01-29 → 2021-01-28 (-1d) |  |  | 5.14d → 42.57d |  |
| 64 | Campaings information | 2021-01-29 → 2021-01-28 (-1d) | 2021-02-02 → 2021-02-01 (-1d) |  |  | 5.14d → 42.57d |  |
| 65 | Delivery Reports | 2021-02-02 → 2021-02-01 (-1d) | 2021-02-08 → 2021-02-05 (-3d) |  |  | 5.14d → 42.57d |  |
| 66 | Budget Order Pull | 2021-02-08 → 2021-02-05 (-3d) | 2021-02-10 → 2021-02-09 (-1d) |  |  | 5.14d → 42.57d |  |
| 67 | Budget Order Creation | 2021-02-10 → 2021-02-09 (-1d) | 2021-02-17 → 2021-02-16 (-1d) |  |  | 5.14d → 42.57d |  |
| 68 | Unit Testing | 2021-02-17 → 2021-02-16 (-1d) | 2021-02-22 → 2021-02-19 (-3d) |  |  | 5.14d → 42.57d |  |
| 69 | DB Changes | 2021-02-22 → 2021-02-19 (-3d) | 2021-02-25 → 2021-02-23 (-2d) |  |  | 5.14d → 42.57d |  |
| 70 | External File storage (AWS and MS One Drive (Testing only)) | 2021-02-25 → 2021-02-23 A (-2d) | 2021-03-03 → 2021-03-02 A (-1d) |  | 0% → 100% | 5.14d → none |  |
| 77 | **Conversion of eConnect application to .Net** |  | 2021-01-14 → 2021-01-25 (+11d) | 8.57d → 17.14d | 0% → 80% | 74.86d → 66.29d |  |
| 79 | Integrate with Nexelus | 2021-01-05 A | 2021-01-14 → 2021-01-25 (+11d) | 8.57d → 17.14d | 0% → 80% | 74.86d → 66.29d |  |
| 80 | **Build 2** | 2021-01-05 A | 2021-01-29 → 2021-02-05 (+7d) | 21.14d? → 27d? | 0% → 15% | 0d → 56.43d |  |
| 81 | Prototype | 2021-01-13 → 2021-01-15 A (+2d) | 2021-01-29 → 2021-02-05 (+7d) | 14.29d → 17.86d | 0% → 90% | 62.29d → 56.43d | constraint start no earlier than 2021-01-13 → start no earlier than 2021-01-15 |
| 83 | **Dashoard** |  | 2021-01-18 → 2021-01-13 (-5d) | 11.43d → 7.14d |  | 0d → 76.29d |  |
| 84 | Web |  | 2021-01-18 → 2021-01-13 (-5d) | 11.43d → 7.14d |  | none → 76.29d |  |
| 85 | DB |  | 2021-01-11 → 2021-01-07 (-4d) | 5.71d → 3.43d |  | none → 80d |  |
| 86 | Rule UI |  |  | 5.71d? → 5.14d? |  | 77.71d → 78.29d | was named Filter UI |
| 87 | **Rules Implement on Main UI** |  | 2021-01-18 → 2021-01-13 (-5d) | 11.43d → 7.14d |  | 0d → 76.29d |  |
| 88 | Rule 1 - Distribute in same site |  |  |  |  | none → 80d | was named Rule 1 |
| 89 | Rule 2 - Distribute in same Plan |  | 2021-01-14 → 2021-01-08 (-6d) | 8.57d → 4.57d |  | none → 78.86d | was named Rule 2 |
| 90 | Rule 3 - Distribute to other plans |  | 2021-01-18 → 2021-01-13 (-5d) | 11.43d → 7.14d |  | none → 76.29d | was named Rule 3 |
| 91 | **Optimization Wizard** |  | 2021-01-11 → 2021-01-18 (+7d) | 5.71d? → 11.43d? |  |  |  |
| 96 | **Generate Schedule** |  | 2021-01-05 → 2021-01-18 (+13d) | 1.14d? → 11.43d? |  | 0d → 72d |  |
| 97 | Web |  | 2021-01-05 → 2021-01-08 (+3d) | 1.14d? → 4.57d? |  | none → 78.86d | resources none → Imran Q |
| 98 | DB |  | 2021-01-05 → 2021-01-18 (+13d) | 1.14d? → 11.43d? |  | none → 72d | resources none → Arif K |
| 107 | DB |  | 2021-01-05 → 2021-01-06 (+1d) | 1.14d? → 2.29d |  | 82.29d → 81.14d |  |
| 108 | Web |  |  | 0.57d? → 1.14d |  | 82.86d → 82.29d | resources Shoaib → Imran Q |
| 110 | Web |  |  | 0.57d? → 1.14d? |  | 82.86d → 82.29d | resources Shoaib → none |
| 111 | DB |  |  |  |  |  | resources Farhan → none |

| ID | Task | Start | Finish | Duration | Complete | Total float | Other |
| --- | --- | --- | --- | --- | --- | --- | --- |
| 113 | Web |  | 2021-01-11 → 2021-01-05 (-6d) | 5.71d → 1.14d? |  |  | resources Imran Q → none |
| 114 | DB |  | 2021-01-06 → 2021-01-05 (-1d) | 2.29d → 1.14d? |  |  | resources Farhan → none |
| 131 | **QA - Iteration 1** |  | 2021-03-09 → 2021-03-08 (-1d) | 52.29d → 50.57d? |  | 31.14d → 0d |  |
| 132 | **Build 1** |  | 2021-03-09 → 2021-03-08 (-1d) | 52.29d → 50.57d |  | 31.14d → 32.86d |  |
| 133 | **Import / Export without MS Excel** | 2021-01-25 → 2021-01-22 (-3d) | 2021-01-28 → 2021-01-27 (-1d) |  |  | 21d → 21.57d |  |
| 134 | **RM/PM.** | 2021-01-25 → 2021-01-22 (-3d) | 2021-01-27 → 2021-01-26 (-1d) |  |  | 21.86d → 22.43d |  |
| 135 | Employee Schedule > Import | 2021-01-25 → 2021-01-22 (-3d) | 2021-01-25 → 2021-01-22 (-3d) |  |  | 21.86d → 22.43d |  |
| 138 | Calendar > Task List > Export | 2021-01-26 → 2021-01-25 (-1d) | 2021-01-26 → 2021-01-25 (-1d) |  |  | 21.86d → 22.43d |  |
| 139 | Custom Upload. | 2021-01-26 → 2021-01-25 (-1d) |  |  |  | 21.86d → 22.43d |  |
| 141 | Reports > Template based reports. |  | 2021-01-27 → 2021-01-26 (-1d) |  |  | 21.86d → 22.43d |  |
| 142 | Client Profile > Import Clients. | 2021-01-27 → 2021-01-26 (-1d) | 2021-01-27 → 2021-01-26 (-1d) |  |  | 21.86d → 22.43d |  |
| 143 | **Level2 Inquiry** | 2021-01-25 → 2021-01-22 (-3d) | 2021-01-26 → 2021-01-25 (-1d) |  |  | 21d → 21.57d |  |
| 144 | Status report. | 2021-01-25 → 2021-01-22 (-3d) |  |  |  | 21d → 21.57d |  |
| 145 | Transaction export. |  | 2021-01-26 → 2021-01-25 (-1d) |  |  | 21d → 21.57d |  |
| 146 | **Setup** | 2021-01-26 → 2021-01-25 (-1d) |  |  |  | 21d → 21.57d |  |
| 147 | Creative Export | 2021-01-26 → 2021-01-25 (-1d) | 2021-01-26 → 2021-01-25 (-1d) |  |  | 21d → 21.57d |  |
| 148 | Account Maps Import/Export. | 2021-01-26 → 2021-01-25 (-1d) |  |  |  | 21d → 21.57d |  |
| 152 | **Delivery Override** |  | 2021-01-28 → 2021-01-27 (-1d) |  |  | 21d → 21.57d |  |
| 153 | Delivery override Import |  | 2021-01-27 → 2021-01-26 (-1d) |  |  | 21d → 21.57d |  |
| 154 | Delivery override Export | 2021-01-27 → 2021-01-26 (-1d) | 2021-01-27 → 2021-01-26 (-1d) |  |  | 21d → 21.57d |  |
| 155 | Delivery override Import by Placement | 2021-01-27 → 2021-01-26 (-1d) |  |  |  | 21d → 21.57d |  |
| 156 | Delivery override Export by Placement |  | 2021-01-28 → 2021-01-27 (-1d) |  |  | 21d → 21.57d |  |
| 157 | **Support Multi Tabbing** | 2021-01-28 → 2021-01-27 (-1d) | 2021-02-08 → 2021-02-05 (-3d) |  |  | 21d → 21.57d |  |
| 158 | Timesheet-[Maintain, update and clear on page unload] | 2021-01-28 → 2021-01-27 (-1d) |  |  |  | 21d → 21.57d |  |
| 159 | Expense report |  | 2021-01-29 → 2021-01-28 (-1d) |  |  | 21d → 21.57d |  |
| 160 | Approval | 2021-01-29 → 2021-01-28 (-1d) |  |  |  | 21d → 21.57d |  |
| 161 | PM/RM |  | 2021-02-02 → 2021-02-01 (-1d) |  |  | 21d → 21.57d |  |
| 162 | **Media** | 2021-02-02 → 2021-02-01 (-1d) |  |  |  | 21d → 21.57d |  |
| 163 | Campaign | 2021-02-02 → 2021-02-01 (-1d) |  |  |  | 21d → 21.57d |  |
| 164 | Buying | 2021-02-03 → 2021-02-02 (-1d) |  |  |  | 21d → 21.57d |  |
| 165 | MPM |  | 2021-02-04 → 2021-02-03 (-1d) |  |  | 21d → 21.57d |  |
| 166 | Delivery Override | 2021-02-04 → 2021-02-03 (-1d) |  |  |  | 21d → 21.57d |  |
| 167 | Billing [6+ Screens] | 2021-02-05 → 2021-02-04 (-1d) | 2021-02-08 → 2021-02-05 (-3d) |  |  | 21d → 21.57d |  |
| 168 | Media Reconciliation | 2021-01-28 → 2021-01-27 (-1d) | 2021-01-28 → 2021-01-27 (-1d) |  |  | 29.43d → 30d |  |
| 170 | Optimize Individual Placement Save | 2021-01-18 → 2021-01-14 (-4d) | 2021-01-19 → 2021-01-15 (-4d) |  |  | 42d → 43.71d |  |
| 171 | Display prompt if user enters delivery at package level when Rule is set to override at placement level | 2021-01-18 → 2021-01-15 (-3d) | 2021-01-18 → 2021-01-15 (-3d) |  |  | 43.29d → 45d |  |
| 172 | Google Ads for budget order and delivery |  | 2021-02-12 → 2021-02-11 (-1d) |  |  | 22.43d → 23d |  |
| 173 | External File storage (AWS and MS One Drive (Testing only)) | 2021-03-03 → 2021-03-02 (-1d) | 2021-03-09 → 2021-03-08 (-1d) |  |  | 6.86d → 8.57d |  |
| 174 | Conversion of eConnect application to .Net | 2021-02-12 → 2021-02-11 (-1d) | 2021-02-16 → 2021-02-15 (-1d) |  |  | 23d → 23.57d |  |
| 183 | **Build 2** |  |  | 1.14d → 1.14d? |  |  |  |
| 186 | **Optimization Wizard** |  |  | 1.14d → 1.14d? |  |  |  |
| 191 | **Budget Orders** |  |  | 1.14d → 1.14d? |  | 0d → 82.29d | was named Revise Budget Orders |
| 213 | **Bug Fixing - Iteration 1** | 2021-02-16 → 2021-02-15 (-1d) |  | 25.86d → 26.43d |  |  |  |
| 216 | Enhancement in DCM errors and style coming from DCM | 2021-03-03 → 2021-03-02 (-1d) | 2021-03-04 → 2021-03-03 (-1d) |  |  | 5.14d → 6.86d |  |
| 217 | Optimize Individual Placement Save | 2021-03-04 → 2021-03-03 (-1d) | 2021-03-05 → 2021-03-03 (-2d) |  |  | 5.14d → 6.86d |  |
| 218 | Display prompt if user enters delivery at package level when Rule is set to override at placement level | 2021-03-05 → 2021-03-03 (-2d) | 2021-03-05 → 2021-03-03 (-2d) |  |  | 5.14d → 6.86d |  |
| 219 | Google Ads for budget order and delivery | 2021-03-05 → 2021-03-04 (-1d) | 2021-03-12 → 2021-03-10 (-2d) |  |  | 5.14d → 6.86d |  |
| 221 | Conversion of eConnect application to .Net | 2021-02-16 → 2021-02-15 (-1d) |  |  |  | 23d → 23.57d |  |
| 226 | **Wild card search for Media Plan on Prebill** | 2021-01-05 A | 2021-01-05 A |  | 0% → 100% | 82.29d → none |  |
| 229 | **Wild card search for Media Plan on Delivery Override** | 2021-01-05 A | 2021-01-05 → 2021-01-06 A (+1d) | 1.14d? → 1.71d? | 0% → 100% | 82.29d → none |  |
